# Proyecto Migración People Net

Schedule from MS Project, 2012-02-03 to 2015-02-23, A marks actual dates.
BGBA

## Calendars

- Estándar: Mon-Fri 09:00-13:00, 15:00-19:00; Sat-Sun off. Exceptions (off unless hours are given): 2012-02-20 to 2012-02-21 (Feriado), 2012-04-02 (Feriado), 2012-04-05 to 2012-04-06 (Semana Santa), 2012-04-30 to 2012-05-01 (Feriado), 2012-05-25 (Feriado), 2012-06-20 to 2012-06-21 (Feriado), 2012-07-09 (Feriado), 2012-08-20 (Feriado), 2012-10-08 (Feriado), 2012-11-26 (Feriado), 2012-12-24 to 2012-12-25 (Feriado), 2012-12-30 to 2012-12-31 (Feriado), 2013-01-31 (Feriado), 2013-02-11 to 2013-02-12 (Carnaval), 2013-02-20 (Feriado), 2013-03-28 to 2013-04-02 (Semana Santa), 2013-05-01 (Dia del trabajador), 2013-06-20 to 2013-06-21 (Dia de la Bandera), 2013-07-09 (Independencia), 2013-08-19 (Dia de San Martin), 2013-10-14 (Dia de la Raza), 2013-11-06 (Feriado Bancario), 2013-11-25 (Dia de la Soberania), 2013-12-24 to 2013-12-25 (Navidad), 2013-12-31 to 2014-01-01 (Feriado), 2014-03-03 to 2014-03-04 (Feriado), 2014-03-24 (Feriado), 2014-04-02 (Feriado), 2014-04-17 to 2014-04-18 (Semana Santa), 2014-05-01 to 2014-05-02 (Feriado), 2014-05-25 (Feriado), 2014-06-20 (Feriado), 2014-07-09 (Feriado), 2014-08-18 (Feriado), 2014-10-13 (Feriado), 2014-11-24 (Feriado), 2014-12-08 (Feriado), 2014-12-25 (Navidad).

## Schedule

| ID | WBS | Task | Type | Duration | Start | Finish | Predecessors | Complete | Remaining | Total slack | Constraint | Fin Ajustado | Responsable | Colaboradores | Reporte Semanal |
| --- | --- | --- | --- | --- | --- | --- | --- | --- | --- | --- | --- | --- | --- | --- | --- |
| 1 | 1 | **60634 - Fénix** |  | 745d? | 2012-02-03 A | 2015-02-23 |  | 60% | 298.06d? | 0d |  | 23/02/15 |  |  |  |
| 2 | 1.1 | **Organización del Proyecto** |  | 452d? | 2012-02-03 A | 2013-12-12 |  | 97% | 15.54d? | 293d |  | A definir |  |  |  |
| 3 | 1.1.1 | Hito: Lanzamiento del Proyecto | milestone | 0d | 2012-12-14 A | 2012-12-14 A |  | 100% |  |  |  | A definir | Néstor Vergano |  |  |
| 4 | 1.1.2 | Elaboración documento de Visión |  | 6d | 2012-12-14 A | 2012-12-21 A |  | 100% |  |  |  | A definir | Sol Rodríguez |  |  |
| 5 | 1.1.3 | Hito: Caracterización del Proyecto disponible | milestone | 0d | 2013-02-04 A | 2013-02-04 A |  | 100% |  |  | start no earlier than 2012-12-17 | A definir | Néstor Vergano | Adriana Espinar |  |
| 6 | 1.1.4 | Producto: Check List de Involucrados | milestone | 0d | 2013-02-04 A | 2013-02-04 A |  | 100% |  |  | start no earlier than 2012-12-17 | A definir | Néstor Vergano | Adriana Espinar |  |
| 7 | 1.1.5 | Producto: Matriz de Roles y Responsabilidades |  | 3d | 2013-02-04 A | 2013-02-06 A |  | 100% |  |  | finish no earlier than 2012-12-28 | A definir | Néstor Vergano | Adriana Espinar |  |
| 8 | 1.1.6 | Hito: Elaboración ADP Preliminar finalizado | milestone | 0d | 2013-02-08 A | 2013-02-08 A |  | 100% |  |  | finish no earlier than 2013-02-08 | A definir | Néstor Vergano |  |  |
| 9 | 1.1.7 | Hito: Planificación Preliminar Finalizada | milestone | 0d | 2013-03-05 A | 2013-03-05 A |  | 100% |  |  | start no earlier than 2013-03-05 | A definir |  |  |  |
| 10 | 1.1.8 | **Involucramiento Interfaces** |  | 2d | 2013-01-24 A | 2013-01-28 A |  | 100% |  |  |  | A definir |  |  |  |
| 11 | 1.1.8.1 | Hito: Interfaz con Greco confirmada | milestone | 0d | 2013-01-28 A | 2013-01-28 A |  | 100% |  |  |  | A definir | Marco Legamari | Néstor Vergano |  |
| 12 | 1.1.8.2 | Hito: Interfaz con Seguros confirmada | milestone | 0d | 2013-01-24 A | 2013-01-24 A |  | 100% |  |  |  | A definir | Jorge Tarifa | Néstor Vergano |  |
| 13 | 1.1.8.3 | Hito: Interfaz con Catalogo de Especias confirmada | milestone | 0d | 2013-01-24 A | 2013-01-24 A |  | 100% |  |  |  | A definir | Ariel Sanchez | Néstor Vergano |  |
| 14 | 1.1.8.4 | Hito: Interfaz con Prestamos SAP confirmada | milestone | 0d | 2013-01-24 A | 2013-01-24 A |  | 100% |  |  | start no earlier than 2013-01-24 | A definir | María F Micelli | Néstor Vergano |  |
| 15 | 1.1.9 | **Elaboración de ADSs** |  | 42d | 2013-03-07 A | 2013-05-13 A |  | 100% |  |  |  | A definir |  |  |  |
| 16 | 1.1.9.1 | Hito: ADS DW Recibido | milestone | 0d | 2013-03-07 A | 2013-03-07 A | 8FS+8d | 100% |  |  | start no earlier than 2013-03-15 | A definir | Miguel Giantinoto | Alejandro Peruset |  |
| 17 | 1.1.9.2 | Hito: ADS E-company recibido | milestone | 0d | 2013-03-07 A | 2013-03-07 A |  | 100% |  |  |  | A definir | Gabriel Patitucci |  |  |
| 18 | 1.1.9.3 | Hito: ADS TyT Recibido | milestone | 0d | 2013-05-08 A | 2013-05-08 A | 8FS+8d | 100% |  |  | start no earlier than 2013-05-08 | A definir | Pablo Furci |  |  |
| 19 | 1.1.9.4 | Hito: Arquitectura Integración Recibido | milestone | 0d | 2013-03-15 A | 2013-03-15 A | 8FS+8d | 100% |  |  | start no earlier than 2013-03-15 | A definir | Javier Paredes / Héctor Dinamarca |  |  |
| 20 | 1.1.9.5 | Hito: ADS Arquitectura de Datos Recibido | milestone | 0d | 2013-03-15 A | 2013-03-15 A | 8FS+8d | 100% |  |  | start no earlier than 2013-03-15 | A definir | Javier Paredes / Héctor Dinamarca |  |  |
| 21 | 1.1.9.6 | Hito: ADS PMO Recibido | milestone | 0d | 2013-05-13 A | 2013-05-13 A | 8FS+8d | 100% |  |  | start no earlier than 2013-05-13 | A definir | Edgardo Rodriguez | Alejandra Bergamaschi |  |
| 22 | 1.1.9.7 | Hito: ADS Homologación Recibido | milestone | 0d | 2013-03-15 A | 2013-03-15 A | 8FS+8d | 100% |  |  | start no earlier than 2013-03-15 | A definir | Juan Cordon | Daiana Almeida |  |
| 23 | 1.1.10 | Hito: ADSs finalizados | milestone | 0d | 2013-05-13 A | 2013-05-13 A | 15 | 100% |  |  |  | A definir |  |  |  |
| 24 | 1.1.11 | **Proveedor implementación** |  | 69.75d | 2012-12-14 A | 2013-04-05 A |  | 100% |  |  |  | A definir |  |  |  |
| 25 | 1.1.11.1 | Hito: Lanzamiento Proyecto con Proveedor | milestone | 0d | 2012-12-14 A | 2012-12-14 A |  | 100% |  |  |  | A definir | Néstor Vergano | Sandra Balaguero/Flavia Piatti |  |
| 26 | 1.1.11.2 | Producto: Plan de proyecto |  | 6.75d | 2013-03-22 A | 2013-04-05 A |  | 100% |  |  | finish no earlier than 2013-04-05 | A definir |  |  |  |
| 27 | 1.1.11.3 | Producto: Cronograma Proveedor |  | 9d | 2012-12-14 A | 2012-12-28 A |  | 100% |  |  |  | A definir | Flavia Piatti |  |  |
| 28 | 1.1.11.4 | Hito: Seguimiento acordado con el Proveedor | milestone | 0d | 2012-12-17 A | 2012-12-17 A |  | 100% |  |  |  | A definir | Néstor Vergano | Flavia Piatti |  |
| 29 | 1.1.11.5 | Hito: Puestos disponibles | milestone | 0d | 2013-02-18 A | 2013-02-18 A |  | 100% |  |  |  | A definir | Néstor Vergano | Flavia Piatti |  |
| 30 | 1.1.11.6 | Hito: Usuarios disponibles | milestone | 0d | 2013-01-08 A | 2013-01-08 A |  | 100% |  |  | start no earlier than 2013-03-08 | A definir | Néstor Vergano | Flavia Piatti |  |
| 31 | 1.1.11.7 | Hito: Planificación detallada finalizada | milestone | 0d | 2013-03-22 A | 2013-03-22 A |  | 100% |  |  | start no earlier than 2013-03-22 | A definir |  |  | ܁C |
| 32 | 1.1.12 | Kick Off del proyecto |  | 1d | 2013-04-16 A | 2013-04-16 A |  | 100% |  |  | start no earlier than 2013-04-16 | A definir | Néstor Vergano |  | ܁C |

Notes:
- 1: Text3: [28]UID=RN"`N^/,IBV$:`I&P8`BNO00[9]PUN=60634[7]TUID=38[12]PUID=5036028
- 2: Text3: [28]UID=RN/MU28GP1M$N8#`3@#Q?)'P[9]PUN=60634[6]TUID=1[12]PUID=5036028
- 3: Text3: [28]UID=RN+>,Y$6<.0T&'_RI$HWGP1P[9]PUN=60634[6]TUID=2[12]PUID=5036028
- 4: Text3: [28]UID=RN[;9TK#"8=D6/$F;^5W:5/@[9]PUN=60634[6]TUID=3[12]PUID=5036028
- 5: Text3: [28]UID=RNCL@XFQRPA$B93L$:;O[T@0[9]PUN=60634[6]TUID=4[12]PUID=5036028
- 6: Text3: [28]UID=RN'C+AFS53(TFD3L&D;S8_0P[9]PUN=60634[6]TUID=5[12]PUID=5036028
- 7: Text3: [28]UID=RN-_1CC#O\<4B/U[K,]I34MP[9]PUN=60634[6]TUID=6[12]PUID=5036028
- 8: Text3: [28]UID=RN.Z>4UM_A'$:8,58GNPREP0[9]PUN=60634[6]TUID=8[12]PUID=5036028
- 9: Text3: [28]UID=RN/SA94?=D#4VM45'E:H,*[@[9]PUN=60634[9]TUID=1165[12]PUID=5036028
- 10: Text3: [28]UID=RN6"9`HPE+-$&8"`E'I>G@LP[9]PUN=60634[8]TUID=970[12]PUID=5036028
- 11: Text3: [28]UID=RN;/5D=BEI2$B5#?&,)]?QU`[9]PUN=60634[8]TUID=971[12]PUID=5036028
- 12: Text3: [28]UID=RN$E",^VA%Y4R[Q=8GIL%CR`[9]PUN=60634[8]TUID=976[12]PUID=5036028
- 13: Text3: [28]UID=RNL]!),AT%BTB'?H2OT3VY-P[9]PUN=60634[8]TUID=975[12]PUID=5036028
- 14: Text3: [28]UID=RN7:6AS[>>FT:-UQL!$-0"&0[9]PUN=60634[8]TUID=974[12]PUID=5036028
- 15: Text3: [28]UID=RN)-1A;XR*&TZH'DAA&#%"]0[9]PUN=60634[7]TUID=11[12]PUID=5036028
- 16: Text3: [28]UID=RN2A_Q3S:;MDVPB:4*RVA4P@[9]PUN=60634[7]TUID=45[12]PUID=5036028
- 17: Text3: [28]UID=RN6Y%J.ANF(DF2A_'P\V,]Y@[9]PUN=60634[9]TUID=1981[12]PUID=5036028
- 18: Text3: [28]UID=RN*.BS<E<F-$6;+LZK"CD,60[9]PUN=60634[7]TUID=44[12]PUID=5036028
- 19: Text3: [28]UID=RNP[8)T/U`X$&24(YENI=*?`[9]PUN=60634[7]TUID=43[12]PUID=5036028
- 20: Text3: [28]UID=RN:"#X>7V<'$*B=#?XZHM7MP[9]PUN=60634[7]TUID=42[12]PUID=5036028
- 21: Text3: [28]UID=RNXH]JG44<ODN\#ND<=F/:_P[9]PUN=60634[7]TUID=41[12]PUID=5036028
- 22: Text3: [28]UID=RN17/F12[S/D^Q:4I1173JS0[9]PUN=60634[7]TUID=40[12]PUID=5036028
- 23: Text3: [28]UID=RN^6T?S'D)#$.5BU,907Z87`[9]PUN=60634[7]TUID=12[12]PUID=5036028
- 24: Text3: [28]UID=RN(-$8I3X9G4*8X2":'J"A#0[9]PUN=60634[7]TUID=13[12]PUID=5036028
- 25: Text3: [28]UID=RN%KU<'7.5L4648-_]BSWN10[9]PUN=60634[7]TUID=14[12]PUID=5036028
- 26: Text3: [28]UID=RN9D.M+/?,64*(X@)7>3%,D0[9]PUN=60634[7]TUID=15[12]PUID=5036028
- 27: Text3: [28]UID=RN?I4K[ZP)IT*1-$^8-Q//X@[9]PUN=60634[7]TUID=16[12]PUID=5036028
- 28: Text3: [28]UID=RN7Z#'[N+N64Z_7$MG4*J-/`[9]PUN=60634[7]TUID=17[12]PUID=5036028
- 29: Text3: [28]UID=RN!-O.E8K1_DJ0VVWB:.UG2P[9]PUN=60634[7]TUID=18[12]PUID=5036028
- 30: Text3: [28]UID=RN@1.KWY=?,DN=]>_`DACLC@[9]PUN=60634[7]TUID=21[12]PUID=5036028
- 31: Text3: [28]UID=RNY)F[535)%D^3I9!:WC(NU@[9]PUN=60634[7]TUID=47[12]PUID=5036028
- 32: Text3: [28]UID=RNA0A%Y:3<C46Y2`KFB^^RE`[9]PUN=60634[8]TUID=297[12]PUID=5036028

| ID | WBS | Task | Type | Duration | Start | Finish | Predecessors | Complete | Remaining | Total slack | Constraint | Fin Ajustado | Responsable | Colaboradores | Reporte Semanal |
| --- | --- | --- | --- | --- | --- | --- | --- | --- | --- | --- | --- | --- | --- | --- | --- |
| 33 | 1.1.13 | **Arquitectura** |  | 0d | 2013-01-08 A | 2013-01-08 A |  | 100% |  |  |  | A definir |  |  |  |
| 34 | 1.1.13.1 | Hito: Inicio de reunión de Definición de Arquitectura | milestone | 0d | 2013-01-08 A | 2013-01-08 A |  | 100% |  |  | start no earlier than 2013-01-08 | A definir | Gustavo Torreta |  |  |
| 35 | 1.1.14 | **Tecnología** |  | 452d? | 2012-02-03 A | 2013-12-12 |  | 96% | 18.54d? | 293d |  | A definir |  |  |  |
| 36 | 1.1.14.1 | Hito: Reunión de entendimiento entre partes realizado |  | 1d? | 2012-12-21 A | 2012-12-21 A |  | 100% |  |  | start no earlier than 2012-12-21 | A definir | Néstor Vergano |  |  |
| 37 | 1.1.14.2 | **Ambientes** |  | 355d? | 2012-02-03 A | 2013-07-24 |  | 98% | 6.23d? | 390d |  | A definir |  |  |  |
| 38 | 1.1.14.2.1 | Hito: Diagrama de topología finalizado | milestone | 0d | 2013-02-27 A | 2013-02-27 A |  | 100% |  |  | start no earlier than 2013-02-25 | A definir | Pablo Furci | Marcelo Camicha |  |
| 39 | 1.1.14.2.2 | Hito: Diagrama de Topología validado con el usuario y proveedor | milestone | 0d | 2013-03-06 A | 2013-03-06 A | 38FS+4d | 100% |  |  |  | A definir | Néstor Vergano, Carlos Peñaloza, Homero Sanchez | Pablo Furci |  |
| 40 | 1.1.14.2.3 | **Desarrollo** |  | 30d | 2013-01-04 A | 2013-02-19 A |  | 100% |  |  |  | A definir |  |  |  |
| 41 | 1.1.14.2.3.1 | Solicitud servidor Desarrollo |  | 1d | 2013-01-04 A | 2013-01-04 A |  | 100% |  |  | start no earlier than 2013-01-04 | A definir | Pablo Furci |  |  |
| 42 | 1.1.14.2.3.2 | Hito: Disponibilidad Servidor Desarrollo | milestone | 0d | 2013-01-17 A | 2013-01-17 A | 41FS+9d | 100% |  |  |  | A definir | Gustavo Kullak | Pablo Furci |  |
| 43 | 1.1.14.2.3.3 | Creación base de datos Desarrollo |  | 1d | 2013-01-18 A | 2013-01-18 A | 42 | 100% |  |  |  | A definir | Pablo Sciacca | Pablo Furci |  |
| 44 | 1.1.14.2.3.4 | Generación de Accesos de Usuarios |  | 1d | 2013-01-18 A | 2013-01-18 A | 42 | 100% |  |  |  | A definir | Marcelo Camicha | Pablo Furci |  |
| 45 | 1.1.14.2.3.5 | Instalación Software de Infraestructura |  | 1d | 2013-01-21 A | 2013-01-21 A | 44 | 100% |  |  | start no earlier than 2013-01-22 | A definir | Marcelo Camicha |  |  |
| 46 | 1.1.14.2.3.6 | Instalación de Meta4 PeopleNet en Desarrollo |  | 13d | 2013-01-22 A | 2013-02-08 A | 45 | 100% |  |  | finish no earlier than 2013-01-30 | A definir | Osvaldo Fernández | Marcelo Camicha |  |
| 47 | 1.1.14.2.3.7 | Generación de documentación de instalación de Meta4 |  | 3d | 2013-02-13 A | 2013-02-15 A | 46 | 100% |  |  |  | A definir | Osvaldo Fernández |  |  |
| 48 | 1.1.14.2.3.8 | Hito: Documentación de Instalación de aplicación Validada | milestone | 0d | 2013-02-19 A | 2013-02-19 A | 47FS+2d | 100% |  |  |  | A definir | Marcelo Camicha |  |  |
| 49 | 1.1.14.2.3.9 | Hito: Aplicación Meta4 PeopleNet instalado en ambiente desarrollo | milestone | 0d | 2013-02-08 A | 2013-02-08 A | 46 | 100% |  |  |  | A definir |  |  |  |
| 50 | 1.1.14.2.3.10 | Hito: ADB instalado | milestone | 0d | 2013-02-14 A | 2013-02-14 A |  | 100% |  |  | start no earlier than 2013-02-13 | A definir | Osvaldo Fernández |  |  |
| 51 | 1.1.14.2.3.11 | Producto: Documentación de Instalación de Aplicación Meta4 PeopleNet | milestone | 0d | 2013-02-19 A | 2013-02-19 A | 48 | 100% |  |  |  | A definir |  |  |  |
| 52 | 1.1.14.2.4 | Hito: Ambiente de desarrollo disponible | milestone | 0d | 2013-02-19 A | 2013-02-19 A | 40 | 100% |  |  |  | A definir |  |  |  |
| 53 | 1.1.14.2.5 | **Homologación** |  | 16d | 2013-02-21 A | 2013-03-14 A |  | 100% |  |  |  | A definir |  |  |  |
| 54 | 1.1.14.2.5.1 | Solicitud Servidor Homologación |  | 1d | 2013-02-21 A | 2013-02-21 A |  | 100% |  |  | start no earlier than 2013-02-21 | A definir | Marcelo Camicha | Pablo Furci | ܁6 |
| 55 | 1.1.14.2.5.2 | Hito: Disponibilidad Servidores Homologación | milestone | 0d | 2013-03-04 A | 2013-03-04 A | 54FS+7d | 100% |  |  |  | A definir | Gustavo Kullak | Pablo Furci | ܁6 |
| 56 | 1.1.14.2.5.3 | Creación base de datos Homologación |  | 1d | 2013-03-05 A | 2013-03-05 A | 55 | 100% |  |  |  | A definir | Pablo Sciacca | Pablo Furci |  |
| 57 | 1.1.14.2.5.4 | Hito: Entrega de administración de Servidor a Seguridad Informática | milestone | 0d | 2013-03-05 A | 2013-03-05 A | 56 | 100% |  |  |  | A definir | Gustavo Kullak | Pablo Furci |  |
| 58 | 1.1.14.2.5.5 | Instalación de Meta4 PeopleNet en Homologación |  | 3d | 2013-03-08 A | 2013-03-12 A | 57FS+2d | 100% |  |  |  | A definir | Alejandro Tarallo | Marcelo Camicha | ܁6 |
| 59 | 1.1.14.2.5.6 | Generación de Accesos de Usuarios |  | 2d | 2013-03-13 A | 2013-03-14 A | 58 | 100% |  |  |  | A definir | Pablo López Gutiérrez | Pablo Furci |  |
| 60 | 1.1.14.2.5.7 | Hito: Aplicación Meta4 PeopleNet instalado en Homologación | milestone | 0d | 2013-03-14 A | 2013-03-14 A | 59 | 100% |  |  |  | A definir |  |  |  |
| 61 | 1.1.14.2.6 | Hito: Ambiente de Homologación Disponible | milestone | 0d | 2013-03-14 A | 2013-03-14 A | 53 | 100% |  |  |  | A definir |  |  | ܁6 |

Notes:
- 33: Text3: [28]UID=RNAYC;!>T,CD6]I78+)1#R]`[9]PUN=60634[8]TUID=363[12]PUID=5036028
- 34: Text3: [28]UID=RN;50=W"5]W$>H[;N+^+)9S0[9]PUN=60634[8]TUID=364[12]PUID=5036028
- 35: Text3: [28]UID=RN6&9BWO";AT6P6+"H5"[L=0[9]PUN=60634[8]TUID=365[12]PUID=5036028
- 36: Text3: [28]UID=RN4+6[QOHN>T.Z?QH:$\!#'@[9]PUN=60634[8]TUID=366[12]PUID=5036028
- 37: Text3: [28]UID=RN\;]K<<O9M$V+#LD"*K2Y\0[9]PUN=60634[8]TUID=367[12]PUID=5036028
- 38: Text3: [28]UID=RNSQBEBS]K\TVKF/S[D3]Y4P[9]PUN=60634[8]TUID=980[12]PUID=5036028
- 39: Text3: [28]UID=RN#32<49`+QTR5SN%;DRW_+`[9]PUN=60634[9]TUID=1233[12]PUID=5036028
- 40: Text3: [28]UID=RNLP]PQ].W>$&-7I@P&-P[;0[9]PUN=60634[8]TUID=368[12]PUID=5036028
- 41: Text3: [28]UID=RN][\!8*?-%4ND>T/:CZ=0G0[9]PUN=60634[8]TUID=369[12]PUID=5036028
- 42: Text3: [28]UID=RNZDT#['S(T$>Z"<+D.9)J<P[9]PUN=60634[8]TUID=370[12]PUID=5036028
- 43: Text3: [28]UID=RN:G[#$F=5ATR9'"RH?F8"V`[9]PUN=60634[8]TUID=372[12]PUID=5036028
- 44: Text3: [28]UID=RNNZN@X-OY(4^<KDZ"R7,`T`[9]PUN=60634[8]TUID=690[12]PUID=5036028
- 45: Text3: [28]UID=RNU/`,BB]Z!420.GJ<8VBQ'P[9]PUN=60634[8]TUID=707[12]PUID=5036028
- 46: Text3: [28]UID=RNV$Q4T$W"R$:,,Y2X,8?IS0[9]PUN=60634[8]TUID=691[12]PUID=5036028
- 47: Text3: [28]UID=RN:&W76(S@-4&$V[XJI4>WJ`[9]PUN=60634[8]TUID=692[12]PUID=5036028
- 48: Text3: [28]UID=RN-.AA(#'-\DB\/Y7W(["HO`[9]PUN=60634[8]TUID=978[12]PUID=5036028
- 49: Text3: [28]UID=RN*!QF@G0C=DV;X4P%HEQ%^`[9]PUN=60634[8]TUID=376[12]PUID=5036028
- 50: Text3: [28]UID=RNB[3V5*0J^4N;:W`:-27('`[9]PUN=60634[9]TUID=1169[12]PUID=5036028
- 51: Text3: [28]UID=RNT+Z@UZ)TTDF^+M6&QP6G,0[9]PUN=60634[8]TUID=693[12]PUID=5036028
- 52: Text3: [28]UID=RN]TN6XM^/7$VJYJ*X260)]@[9]PUN=60634[8]TUID=689[12]PUID=5036028
- 53: Text3: [28]UID=RN>YB6"4I?/DZ?`03@6T+-R0[9]PUN=60634[8]TUID=378[12]PUID=5036028
- 54: Text3: [28]UID=RNL:`P_5TU'DR@#DM@(`QJ@P[9]PUN=60634[8]TUID=703[12]PUID=5036028
- 55: Text3: [28]UID=RNCXC"BEMG%D.CV4%,/?PW-0[9]PUN=60634[8]TUID=702[12]PUID=5036028
- 56: Text3: [28]UID=RN5+OB5WE6)TN#PL+:^>YGUP[9]PUN=60634[8]TUID=701[12]PUID=5036028
- 57: Text3: [28]UID=RN%KY`M8C,,$FIG'Z=MP6@2`[9]PUN=60634[8]TUID=706[12]PUID=5036028
- 58: Text3: [28]UID=RNQM+ER6-_KD64H8_9:X$%O0[9]PUN=60634[8]TUID=699[12]PUID=5036028
- 59: Text3: [28]UID=RN3-I:6LHG0TZ[PGFG@QKPH0[9]PUN=60634[9]TUID=1982[12]PUID=5036028
- 60: Text3: [28]UID=RNZ3C8G?LC5T*>^"!D.1SVQP[9]PUN=60634[8]TUID=697[12]PUID=5036028
- 61: Text3: [28]UID=RN4K"B"8#@>T:?9<[1C6T(\@[9]PUN=60634[8]TUID=695[12]PUID=5036028

| ID | WBS | Task | Type | Duration | Start | Finish | Predecessors | Complete | Total slack | Constraint | Fin Ajustado | Reporte Semanal |
| --- | --- | --- | --- | --- | --- | --- | --- | --- | --- | --- | --- | --- |
| 62 | 1.1.14.2.7 | **Producción** |  | 21d | 2013-03-15 A | 2013-04-18 A |  | 100% |  |  | A definir |  |
| 63 | 1.1.14.2.7.1 | Solicitud servidor Producción |  | 1d | 2013-03-15 A | 2013-03-15 A |  | 100% |  | start no earlier than 2013-03-15 | A definir | ܁7 |
| 64 | 1.1.14.2.7.2 | Hito: Disponibilidad Servidor Producción | milestone | 0d | 2013-04-08 A | 2013-04-08 A | 63FS+12d | 100% |  |  | A definir | ܁7 |
| 65 | 1.1.14.2.7.3 | Hito: Entrega de administración de Servidor a Seguridad Informática |  | 1d | 2013-04-09 A | 2013-04-09 A | 64 | 100% |  |  | A definir |  |
| 66 | 1.1.14.2.7.4 | Creación base de datos Producción |  | 8d | 2013-04-09 A | 2013-04-18 A | 65FF | 100% |  |  | A definir | ܁7 |
| 67 | 1.1.14.2.7.5 | Solicitud de usuarios aplicativos Producción |  | 1d | 2013-04-18 A | 2013-04-18 A | 66FF | 100% |  |  | A definir |  |
| 68 | 1.1.14.2.7.6 | Instalación de Meta4 PeopleNet en Producción |  | 3d | 2013-04-10 A | 2013-04-12 A | 67FS-1d | 100% |  |  | A definir | ܁7 |
| 69 | 1.1.14.2.7.7 | Hito: Aplicación instalado en ambiente Producción | milestone | 0d | 2013-04-12 A | 2013-04-12 A | 68 | 100% |  |  | A definir |  |
| 70 | 1.1.14.2.8 | Hito: Ambiente de Producción Disponible | milestone | 0d | 2013-04-18 A | 2013-04-18 A | 62 | 100% |  |  | A definir |  |
| 71 | 1.1.14.2.9 | Optimización de Base de datos productiva |  | 6d | 2013-04-19 A | 2013-04-26 A | 67 | 100% |  |  | A definir | ܁7 |
| 72 | 1.1.14.2.10 | **Autenticación integrada** |  | 67d | 2013-04-17 A | 2013-07-24 A |  | 100% |  |  | A definir |  |
| 73 | 1.1.14.2.10.1 | Hito: Verificación de Seguridad Integrada Finalizada | milestone | 0d | 2013-04-17 A | 2013-04-17 A |  | 100% |  | start no earlier than 2013-04-16 | A definir | ܁D |
| 74 | 1.1.14.2.10.2 | Implementación del SSO en Homologación |  | 56d | 2013-04-17 A | 2013-07-08 A | 73 | 100% |  |  | A definir | ܁D |
| 75 | 1.1.14.2.10.3 | Prueba del SSO en Homologación |  | 1d | 2013-07-10 A | 2013-07-10 A | 74 | 100% |  |  | A definir | ܁D |
| 76 | 1.1.14.2.10.4 | Hito: Implementación del SSO en Producción | milestone | 0d | 2013-07-15 A | 2013-07-15 A | 75 | 100% |  | start no earlier than 2013-07-15 | A definir | ܁D |
| 77 | 1.1.14.2.10.5 | Seguimiento de la Implementación de SSOO en Producción |  | 8d | 2013-07-15 A | 2013-07-24 A | 76 | 100% |  |  | A definir | ܁D |
| 78 | 1.1.14.2.11 | **Autorización AD** |  | 1d? | 2012-02-03 | 2012-02-03 |  |  | 744d |  | A definir |  |
| 79 | 1.1.14.2.11.1 | Configuración de Autorizacion de AD |  | 1d? | 2012-02-03 | 2012-02-03 |  |  | 744d |  | A definir |  |
| 80 | 1.1.14.2.11.2 | Pruebas de Autorización de AD |  | 1d? | 2012-02-03 | 2012-02-03 |  |  | 744d |  | A definir |  |
| 81 | 1.1.14.3 | **Pruebas de Stress** |  | 44d | 2013-02-19 A | 2013-04-26 A |  | 100% |  |  | A definir |  |
| 82 | 1.1.14.3.1 | Hito: Reunión de Involucramiento Finalizada | milestone | 0d | 2013-02-19 A | 2013-02-19 A |  | 100% |  | start no earlier than 2013-02-14 | A definir | ܁- |
| 83 | 1.1.14.3.2 | Definición de accesos a aplicación, roles y funcionalidad |  | 2d | 2013-03-15 A | 2013-03-18 A |  | 100% |  | start no earlier than 2013-03-15 | A definir | ܁- |
| 84 | 1.1.14.3.3 | Armado de Script |  | 8d | 2013-03-19 A | 2013-04-03 A | 83 | 100% |  | start no earlier than 2013-03-12 | A definir | ܁- |
| 85 | 1.1.14.3.4 | Prueba de concepto |  | 1d | 2013-04-04 A | 2013-04-04 A | 84 | 100% |  | start no earlier than 2013-03-12 | A definir |  |
| 86 | 1.1.14.3.5 | Hito: Conocimiento de funcionalidad de aplicación (casos de negocio) | milestone | 0d | 2013-03-15 A | 2013-03-15 A |  | 100% |  | start no earlier than 2013-03-15 | A definir |  |
| 87 | 1.1.14.3.6 | Hito: Conocimiento de cantidad de usuarios y tiempo de acceso por usuario | milestone | 0d | 2013-03-15 A | 2013-03-15 A |  | 100% |  | start no earlier than 2013-03-15 | A definir |  |
| 88 | 1.1.14.3.7 | Hito: Cuantos hits se ejecuta en un caso de negocio (concurrencia) | milestone | 0d | 2013-03-15 A | 2013-03-15 A |  | 100% |  | start no earlier than 2013-03-15 | A definir |  |
| 89 | 1.1.14.3.8 | Ejecución prueba de carga |  | 14d | 2013-04-04 A | 2013-04-26 A | 85, 71FF | 100% |  | start no earlier than 2013-04-04 | A definir | ܁- |
| 90 | 1.1.14.3.9 | Generación informe de prueba de carga |  | 6d | 2013-04-16 A | 2013-04-26 A | 71FF | 100% |  | start no earlier than 2013-04-16 | A definir | ܁- |
| 91 | 1.1.14.4 | Hito: Pruebas de Carga Finalizada | milestone | 0d | 2013-04-26 A | 2013-04-26 A | 81 | 100% |  |  | A definir |  |

Notes:
- 62: Text3: [28]UID=RNA=L,7[_4/DB`=9<7-Q$_U`[9]PUN=60634[8]TUID=388[12]PUID=5036028
- 63: Text3: [28]UID=RNS+&W!Y79JT*Q\D,N!I/^50[9]PUN=60634[8]TUID=389[12]PUID=5036028 / Responsable: Marcelo Camicha
- 64: Text3: [28]UID=RN505;[/D5NDZ:;DTV-9S950[9]PUN=60634[8]TUID=390[12]PUID=5036028 / Responsable: Gustavo Kullak
- 65: Text3: [28]UID=RN\YT\5MR?ID.];@WQ);Z'?`[9]PUN=60634[9]TUID=1984[12]PUID=5036028 / Responsable: TBD
- 66: Text3: [28]UID=RNZA8[AP-M9T26[A\^]),#&@[9]PUN=60634[8]TUID=392[12]PUID=5036028 / Responsable: Pablo Sciacca
- 67: Text3: [28]UID=RNL"\J<ZL<I$*PU(<#C?:+(0[9]PUN=60634[8]TUID=393[12]PUID=5036028 / Responsable: Néstor Vergano / Colaboradores: Carlos Peñaloza
- 68: Text3: [28]UID=RN9Q$GQ'J6_$FLF,=I=#5B^0[9]PUN=60634[9]TUID=1232[12]PUID=5036028 / Responsable: Adrian Romero / Colaboradores: Alejandro Tarallo
- 69: Text3: [28]UID=RNG^])"@M5D$N'&O_*7272V@[9]PUN=60634[8]TUID=396[12]PUID=5036028
- 70: Text3: [28]UID=RNH\Z)H1_7$$.&PM;R0<(UD`[9]PUN=60634[9]TUID=1159[12]PUID=5036028
- 71: Text3: [28]UID=RN"[P2;KL.XTVGJG.-V7;=D`[9]PUN=60634[9]TUID=2152[12]PUID=5036028 / Responsable: Pablo Sciacca
- 72: Text3: [28]UID=RN\N(A,YSICD:@L?P&+M<0%@[9]PUN=60634[9]TUID=2148[12]PUID=5036028
- 73: Text3: [28]UID=RN;A8E<0E%/4ZY"(M('^E=T`[9]PUN=60634[9]TUID=2149[12]PUID=5036028 / Responsable: Homero Sanchez, Matias Picon
- 74: Text3: [28]UID=RNVR2P@H`2<T"N'9.ZU1=PC@[9]PUN=60634[9]TUID=2153[12]PUID=5036028 / Responsable: Adrian Romero, Carlos Peñalosa, Matías Picon; Andres Maldonado / Colaboradores: Leonardo Bruno
- 75: Text3: [28]UID=RN"U<U2=((MDN:-1HVN8!QN@[9]PUN=60634[9]TUID=2291[12]PUID=5036028 / Responsable: Néstor Vergano / Colaboradores: Adrian Romero, Carlos Peñalosa, Matías Picon; Andres Maldonado
- 76: Text3: [28]UID=RN<@2ZPM;\.4JV0-:TU2(#(`[9]PUN=60634[9]TUID=2292[12]PUID=5036028 / Responsable: Adrian Romero, Carlos Peñalosa, Matías Picon; Andres Maldonado
- 77: Text3: [28]UID=RNSZ.(=3A("$FGC=L<*^)<80[9]PUN=60634[9]TUID=2293[12]PUID=5036028 / Responsable: Néstor Vergano / Colaboradores: Adrian Romero, Carlos Peñalosa, Matías Picon; Andres Maldonado
- 78: Text3: [28]UID=RN'+B>WW1:<T2'03O1:@C#<`[9]PUN=60634[9]TUID=2730[12]PUID=5036028 / Responsable: Oslvaldo Fernandez
- 79: Text3: [28]UID=RNM/DB8H%W$TZG?''SO`@,\`[9]PUN=60634[9]TUID=2732[12]PUID=5036028
- 80: Text3: [28]UID=RN/^?6^=,/@4FIM1]%S%!XT0[9]PUN=60634[9]TUID=2731[12]PUID=5036028
- 81: Text3: [28]UID=RN(6^,,P[_JD6#F.N36G(H!@[9]PUN=60634[8]TUID=400[12]PUID=5036028
- 82: Text3: [28]UID=RN=,U;:)K]O4N6Q<IW31P]V0[9]PUN=60634[9]TUID=1024[12]PUID=5036028 / Responsable: Carlos Domeniconi/Néstor Vergano
- 83: Text3: [28]UID=RNWK'J>;#P:4&FQK2:RNR>@P[9]PUN=60634[9]TUID=1332[12]PUID=5036028 / Responsable: Peñaloza Carlos
- 84: Text3: [28]UID=RN/?&5AD])LD&B+#%)M*;`4`[9]PUN=60634[8]TUID=404[12]PUID=5036028 / Responsable: Carlos Peñaloza/Néstor Vergano / Colaboradores: Carlos Domeniconi
- 85: Text3: [28]UID=RN+`)P?[9$_$6RW.$*BIJQ)0[9]PUN=60634[8]TUID=405[12]PUID=5036028 / Responsable: Carlos Domeniconi / Colaboradores: Carlos Peñaloza/Néstor Vergano
- 86: Text3: [28]UID=RN+\XI#`[2^DRQD&B:MTWD4P[9]PUN=60634[9]TUID=1229[12]PUID=5036028 / Responsable: Nestor Vergano
- 87: Text3: [28]UID=RN($MQZ-R,X4J:=H+K>=6HF`[9]PUN=60634[9]TUID=1230[12]PUID=5036028 / Responsable: Nestor Vergano
- 88: Text3: [28]UID=RN.]@FN(?!"D:/X&:I_-S]D`[9]PUN=60634[9]TUID=1231[12]PUID=5036028 / Responsable: Nestor Vergano
- 89: Text3: [28]UID=RN/*<3_<:C;D^WD7`>(HW/0P[9]PUN=60634[8]TUID=406[12]PUID=5036028 / Responsable: Carlos Peñaloza, Carlos Domeniconi
- 90: Text3: [28]UID=RNU48X@X0!4$2;"!8[8/>YA0[9]PUN=60634[8]TUID=407[12]PUID=5036028 / Responsable: Carlos Domeniconi
- 91: Text3: [28]UID=RN^M8);<W.*4F^A.+&4$SNX`[9]PUN=60634[9]TUID=2020[12]PUID=5036028

| ID | WBS | Task | Type | Duration | Start | Finish | Predecessors | Complete | Remaining | Total slack | Free slack | Constraint | Fin Ajustado | Responsable | Colaboradores | Reporte Semanal |
| --- | --- | --- | --- | --- | --- | --- | --- | --- | --- | --- | --- | --- | --- | --- | --- | --- |
| 92 | 1.1.14.5 | **PCS (Plan de Continuidad de Sistemas)** |  | 75d | 2013-02-14 A | 2013-06-07 |  | 99% | 0d | 421d |  |  | A definir |  |  |  |
| 93 | 1.1.14.5.1 | Hito: Reunión de Involucramiento | milestone | 0d | 2013-02-14 A | 2013-02-14 A |  | 100% |  |  |  | start no earlier than 2013-02-14 | A definir | Diego Borghello | Néstor Vergano | ܁3 |
| 94 | 1.1.14.5.2 | Hio: Recepción de Template de Plan de Continuidad | milestone | 0d | 2013-02-21 A | 2013-02-21 A |  | 100% |  |  |  | start no earlier than 2013-02-21 | A definir | Diego Borghello |  |  |
| 95 | 1.1.14.5.3 | Armado de Plan PCS |  | 30d | 2013-03-04 A | 2013-04-18 A | 38 | 100% |  |  |  | start no earlier than 2013-03-04 | A definir | Diego Borghello | Néstor Vergano | ܁3 |
| 96 | 1.1.14.5.4 | Hito: PCS validado con el usuario | milestone | 0d | 2013-04-23 A | 2013-04-23 A | 95FS+3d | 100% |  |  |  | start no earlier than 2013-04-23 | A definir | Néstor Vergano | Diego Borghello | ܁3 |
| 97 | 1.1.14.5.5 | Hito: Prueba Piloto de Continuidad de Sistemas finalizada | milestone | 0d | 2013-06-07 | 2013-06-07 |  |  |  | 421d |  | start no earlier than 2013-06-07 | A definir | Caludia Rossi | Néstor Vergano |  |
| 98 | 1.1.14.6 | **Comunicaciones** |  | 38d | 2013-03-08 A | 2013-05-07 A |  | 100% |  |  |  |  | A definir |  |  |  |
| 99 | 1.1.14.6.1 | Hito: Validación de necesidad de pruebas de comunicación | milestone | 0d | 2013-03-12 A | 2013-03-12 A |  | 100% |  |  |  | start no earlier than 2013-03-12 | A definir | Pablo Furci |  |  |
| 100 | 1.1.14.6.2 | Definición: Cantidad simultanea de accesos desde Sucursales | milestone | 0d | 2013-03-08 A | 2013-03-08 A |  | 100% |  |  |  | start no earlier than 2013-03-08 | A definir | Nestor Vergano |  |  |
| 101 | 1.1.14.6.3 | Definición: Peso estimado de la consulta | milestone | 0d | 2013-03-08 A | 2013-03-08 A |  | 100% |  |  |  | start no earlier than 2013-03-08 | A definir | Homero Sanchez |  |  |
| 102 | 1.1.14.6.4 | Prueba de acceso desde sucursales |  | 8d | 2013-04-25 A | 2013-05-07 A |  | 100% |  |  |  | start no earlier than 2013-04-25 | A definir | Nestor Vergano | Javier San Martin |  |
| 103 | 1.1.14.7 | **Monitoreo** |  | 40d | 2013-02-21 A | 2013-04-23 A |  | 100% |  |  |  |  | A definir |  |  |  |
| 104 | 1.1.14.7.1 | Hito: Reunión de Involucramiento | milestone | 0d | 2013-02-21 A | 2013-02-21 A |  | 100% |  |  |  | start no earlier than 2013-02-21 | A definir | Mónica Seghezzi |  | ܁4 |
| 105 | 1.1.14.7.2 | Hito: Información de infraestructura y servicio enviada | milestone | 0d | 2013-03-14 A | 2013-03-14 A | 61 | 100% |  |  |  |  | A definir | Néstor Vergano |  |  |
| 106 | 1.1.14.7.3 | Hito: Recepción de información de servicios Meta4 | milestone | 0d | 2013-03-25 A | 2013-03-25 A |  | 100% |  |  |  | start no earlier than 2013-03-25 | A definir | Homero Sanchez |  | ܁4 |
| 107 | 1.1.14.7.4 | Hito: Recepción de información detallada de servicios Meta4 | milestone | 0d | 2013-04-17 A | 2013-04-17 A |  | 100% |  |  |  | start no earlier than 2013-04-18 | A definir | Homero Sanchez |  | ܁4 |
| 108 | 1.1.14.7.5 | Construcción monitores |  | 3d | 2013-04-17 A | 2013-04-19 A | 107 | 100% |  |  |  | start no earlier than 2013-04-16 | A definir | Leonardo cohen |  | ܁4 |
| 109 | 1.1.14.7.6 | Implementación monitores |  | 2d | 2013-04-22 A | 2013-04-23 A | 108 | 100% |  |  |  |  | A definir | Leonardo cohen |  | ܁4 |
| 110 | 1.1.14.8 | Hito: Planificación Upgrade Técnico finalizada | milestone | 0d | 2013-09-09 A | 2013-09-09 A |  | 100% |  |  |  | start no earlier than 2013-09-09 | A definir | Néstor Vergano; Marcelo Camichia | Flavia Piatti | ܁C |
| 111 | 1.1.14.9 | **Upgrade Técnico** |  | 66d? | 2013-09-09 A | 2013-12-12 | 110 |  | 66d? | 293d | 0d |  | A definir |  |  |  |
| 112 | 1.1.14.9.1 | Hito: Validación del alcance del Service Pack | milestone | 0d | 2013-09-09 A | 2013-09-09 A |  | 100% |  |  |  | start no earlier than 2013-09-09 | A definir | Néstor Vergano | Marcelo Camichia; Carlos Peñalosa |  |
| 113 | 1.1.14.9.2 | Hito: Recepción propuesta técnica de Meta4 | milestone | 0d | 2013-09-25 A | 2013-09-25 A |  | 100% |  |  |  | start no earlier than 2013-09-25 | A definir | Néstor Vergano |  |  |
| 114 | 1.1.14.9.3 | **Aplicación de Service Pack** |  | 31d | 2013-10-21 A | 2013-12-04 A |  | 100% |  |  |  |  | A definir |  |  |  |
| 115 | 1.1.14.9.3.1 | Aplicación de SP en Ambiente de Integración finalzada | milestone | 0d | 2013-10-21 A | 2013-10-21 A |  | 100% |  |  |  | start no earlier than 2013-10-21 | A definir | Marcelo Camichia | Néstor Vergano; Flavia Piatti | ܁O |
| 116 | 1.1.14.9.3.2 | Regresión funcional de la aplicación en Integración finalizada | milestone | 0d | 2013-10-25 A | 2013-10-25 A | 115FS+5d | 100% |  |  |  |  | A definir | Néstor Vergano; Flavia Piatti | Marcelo Camichia | ܁O |
| 117 | 1.1.14.9.3.3 | Aplicación de SP en Ambiente de Homologación finalizada | milestone | 0d | 2013-11-01 A | 2013-11-01 A | 115FS+5d | 100% |  |  |  | start no earlier than 2013-11-01 | A definir | Marcelo Camichia | Néstor Vergano; Flavia Piatti | ܁O |
| 118 | 1.1.14.9.3.4 | Configuración de SSO en Homologación finalizada | milestone | 0d | 2013-11-11 A | 2013-11-11 A |  | 100% |  |  |  | start no earlier than 2013-11-11 | A definir | Andres Maldonado; Adrian Romero | Néstor Vergano; Flavia Piatti | ܁O |
| 119 | 1.1.14.9.3.5 | Regresión funcional de la aplicación en Homologación finalizada | milestone | 0d | 2013-11-28 A | 2013-11-28 A | 116FS+5d | 100% |  |  |  | start no earlier than 2013-11-28 | A definir | Néstor Vergano; Flavia Piatti | Marcelo Camichia | ܁O |
| 120 | 1.1.14.9.3.6 | Aplicación de SP en Ambiente de Producción finalizada | milestone | 0d | 2013-11-15 A | 2013-11-15 A | 117FS+5d | 100% |  |  |  | start no earlier than 2013-11-15 | A definir | Marcelo Camichia | Néstor Vergano; Flavia Piatti | ܁O |
| 121 | 1.1.14.9.3.7 | Configuración de SSO en Producción finalizada | milestone | 0d | 2013-11-15 A | 2013-11-15 A | 118FS+3d | 100% |  |  |  | start no earlier than 2013-11-15 | A definir | Andres Maldonado; Adrian Romero | Néstor Vergano; Flavia Piatti | ܁O |
| 122 | 1.1.14.9.3.8 | Prueba funcional de la aplicación en Producción finalizada | milestone | 0d | 2013-12-04 A | 2013-12-04 A | 119FS+5d | 100% |  |  |  | start no earlier than 2013-12-04 | A definir | Néstor Vergano; Flavia Piatti | Marcelo Camichia | ܁O |
| 123 | 1.1.14.9.3.9 | Aplicación de SP en Ambiente de Desarrollo finalizada | milestone | 0d | 2013-11-27 A | 2013-11-27 A | 120FS+5d | 100% |  |  |  | start no earlier than 2013-11-27 | A definir | Marcelo Camichia | Néstor Vergano; Flavia Piatti | ܁O |
| 124 | 1.1.14.9.3.10 | Regresión funcional de la aplicación en Desarrollo finalizada | milestone | 0d | 2013-11-28 A | 2013-11-28 A | 123 | 100% |  |  |  | start no earlier than 2013-11-28 | A definir | Néstor Vergano; Flavia Piatti | Marcelo Camichia | ܁O |
| 125 | 1.1.14.9.4 | Aplicación de Service Pack finalizado | milestone | 0d | 2013-12-04 A | 2013-12-04 A | 114 | 100% |  |  |  |  | A definir |  |  |  |
| 126 | 1.1.14.9.5 | Hito: Definición de casos de pruebas para Performaces |  | 1d? | 2013-12-05 | 2013-12-05 | 125 |  |  | 293d | 0d |  | A definir |  |  |  |
| 127 | 1.1.14.9.6 | Pruebas de performances |  | 5d | 2013-12-06 | 2013-12-12 | 126 |  |  | 293d |  |  | A definir |  |  |  |
| 128 | 1.1.14.10 | Hito: Upgrade Técnico finalizado | milestone | 0d | 2013-12-12 | 2013-12-12 | 111 |  |  | 293d |  |  | A definir |  |  |  |

Notes:
- 92: Text3: [28]UID=RNL)*T8K6KFDJVXA4N84`E:P[9]PUN=60634[8]TUID=998[12]PUID=5036028
- 93: Text3: [28]UID=RN*/\\]3J@NTBG6,0?'E1(Q`[9]PUN=60634[9]TUID=1227[12]PUID=5036028
- 94: Text3: [28]UID=RNYFV/H^=UY$V*LI'@K^\//0[9]PUN=60634[9]TUID=1228[12]PUID=5036028
- 95: Text3: [28]UID=RN^E8[Q3;]CTJ%([.*^MQ')P[9]PUN=60634[9]TUID=1001[12]PUID=5036028
- 96: Text3: [28]UID=RNO24HRQE0Y$29X*8+P667A@[9]PUN=60634[9]TUID=1002[12]PUID=5036028
- 97: Text3: [28]UID=RNZT'0D%Z6[$BB'E`'_UE[\0[9]PUN=60634[9]TUID=2150[12]PUID=5036028
- 98: Text3: [28]UID=RN:Q0`J`6V;4.=`-3<7H_%9P[9]PUN=60634[9]TUID=1005[12]PUID=5036028
- 99: Text3: [28]UID=RN7%Z_S0=&4T>F6ESG+[S)`@[9]PUN=60634[9]TUID=1985[12]PUID=5036028
- 100: Text3: [28]UID=RNZO7"*":A54&O<]6QQ3E3_0[9]PUN=60634[9]TUID=1006[12]PUID=5036028
- 101: Text3: [28]UID=RN&AW!+NHMFT64O$OE)4NMT0[9]PUN=60634[9]TUID=1007[12]PUID=5036028
- 102: Text3: [28]UID=RN<UJM],)=]$VRB-(P4Q=(2`[9]PUN=60634[9]TUID=1009[12]PUID=5036028
- 103: Text3: [28]UID=RN@_>UYZZ7<$BG':%=V(@OBP[9]PUN=60634[9]TUID=1010[12]PUID=5036028
- 104: Text3: [28]UID=RN631VDAP/`4..98R?P];``P[9]PUN=60634[9]TUID=1222[12]PUID=5036028
- 105: Text3: [28]UID=RNR`#2'A\JJ4FA%-1D@(`YLP[9]PUN=60634[9]TUID=1221[12]PUID=5036028
- 106: Text3: [28]UID=RNCA71TCZOOTF:(`2H*Z&_BP[9]PUN=60634[9]TUID=2129[12]PUID=5036028
- 107: Text3: [28]UID=RN+>G%[J%:]DJ=U&S4@Q#CM@[9]PUN=60634[9]TUID=2022[12]PUID=5036028
- 108: Text3: [28]UID=RNF1^8GX5OR$FA=E,Y+=8M@0[9]PUN=60634[9]TUID=1220[12]PUID=5036028
- 109: Text3: [28]UID=RNZO8;#C4['T"?U+SC!7'8=0[9]PUN=60634[9]TUID=1219[12]PUID=5036028
- 110: Text3: [28]UID=RNER9FY_7P&42X5K4U/448W0[9]PUN=60634[9]TUID=2615[12]PUID=5036028
- 111: Text3: [28]UID=RNMMB%F<L<H4:,M@?KTECLRP[9]PUN=60634[9]TUID=2365[12]PUID=5036028
- 112: Text3: [28]UID=RN>/0;GJ"60T""FP-Z9G>@6@[9]PUN=60634[9]TUID=2654[12]PUID=5036028
- 113: Text3: [28]UID=RNW">L]]C`LT6=8`.&^\>&OP[9]PUN=60634[9]TUID=2667[12]PUID=5036028
- 114: Text3: [28]UID=RN2A`MZT1X>T^9@!MN4X%DB@[9]PUN=60634[9]TUID=2375[12]PUID=5036028
- 115: Text3: [28]UID=RN_CG--H6+HD6Z7<V,!A`W70[9]PUN=60634[9]TUID=2702[12]PUID=5036028
- 116: Text3: [28]UID=RN$D,UHQUZGDJ?+O82/Z,G^@[9]PUN=60634[9]TUID=2701[12]PUID=5036028
- 117: Text3: [28]UID=RN$KX@;#";D4V2Q;RJ#)*)@0[9]PUN=60634[9]TUID=2706[12]PUID=5036028
- 118: Text3: [28]UID=RN,876MZZ#;D^)!-O$#XXN,P[9]PUN=60634[9]TUID=2727[12]PUID=5036028
- 119: Text3: [28]UID=RNU?F@^)]#$$&AGZ/?]`)0%`[9]PUN=60634[9]TUID=2705[12]PUID=5036028
- 120: Text3: [28]UID=RN.IR&IZ>3AT*WU0572*GJG0[9]PUN=60634[9]TUID=2704[12]PUID=5036028
- 121: Text3: [28]UID=RN;B->BIO82$R<B-A:(1FT<0[9]PUN=60634[9]TUID=2728[12]PUID=5036028
- 122: Text3: [28]UID=RN/S_TG6?NODR^(2-6)U2+]0[9]PUN=60634[9]TUID=2703[12]PUID=5036028
- 123: Text3: [28]UID=RNA-[^+Y<T<$^7QV#8I60X)0[9]PUN=60634[9]TUID=2700[12]PUID=5036028
- 124: Text3: [28]UID=RN9R1^OX9=TDZ%9EOT`Z6D9P[9]PUN=60634[9]TUID=2556[12]PUID=5036028
- 125: Text3: [28]UID=RN]T*#3_'Y9T:#@;R6CY.`)0[9]PUN=60634[9]TUID=2707[12]PUID=5036028
- 126: Text3: [28]UID=RNN?=DS^Z`UD24E)?ZT+)R#P[9]PUN=60634[9]TUID=2711[12]PUID=5036028
- 127: Text3: [28]UID=RN(!K$#CT+&$*P?((2"^JB;@[9]PUN=60634[9]TUID=2669[12]PUID=5036028
- 128: Text3: [28]UID=RN-PMT7$,H_4N;]34BES/DG`[9]PUN=60634[9]TUID=2367[12]PUID=5036028

| ID | WBS | Task | Type | Duration | Start | Finish | Predecessors | Complete | Remaining | Total slack | Free slack | Constraint | Fin Ajustado | Responsable | Colaboradores |
| --- | --- | --- | --- | --- | --- | --- | --- | --- | --- | --- | --- | --- | --- | --- | --- |
| 129 | 1.1.15 | **Capacitación Interna** |  | 10d | 2013-06-17 A | 2013-07-02 A |  | 100% |  |  |  |  | A definir |  |  |
| 130 | 1.1.15.1 | Capacitación para Administradores TyT |  | 2d | 2013-06-17 A | 2013-06-18 A |  | 100% |  |  |  | start no earlier than 2013-06-17 | A definir | Nestor Vergano |  |
| 131 | 1.1.15.2 | Capacitación para el Equipo de Desarrollo |  | 10d | 2013-06-17 A | 2013-07-02 A |  | 100% |  |  |  | start no earlier than 2013-06-17 | A definir | Nestor Vergano |  |
| 132 | 1.2 | **Etapa 1 - Evaluación de Objetivos** |  | 407d? | 2012-02-03 A | 2013-10-07 |  | 96% | 14.64d? | 254d | 0d |  | A definir |  |  |
| 133 | 1.2.1 | **Análisis y Diseño** |  | 60d | 2012-12-19 A | 2013-03-22 A |  | 100% |  |  |  |  | A definir |  |  |
| 134 | 1.2.1.1 | **Workshops de procesos funcionales** |  | 38d | 2012-12-19 A | 2013-02-18 A |  | 100% |  |  |  |  | A definir |  |  |
| 135 | 1.2.1.1.1 | Hilo: Listado de usuarios participantes finalizada | milestone | 0d | 2012-12-19 A | 2012-12-19 A |  | 100% |  |  |  | start no earlier than 2012-12-19 | A definir | Érica Reynoso |  |
| 136 | 1.2.1.1.2 | Workshop de Conocimientos y objetivos (Org. Y Adm de Personal) |  | 1d | 2013-01-21 A | 2013-01-21 A |  | 100% |  |  |  | start no earlier than 2013-01-21 | A definir | Flavia Piatti |  |
| 137 | 1.2.1.1.3 | Workshop de Evaluación de personal |  | 1d | 2013-01-23 A | 2013-01-23 A | 136 | 100% |  |  |  | start no earlier than 2013-01-23 | A definir | Flavia Piatti |  |
| 138 | 1.2.1.1.4 | Workshop de Definición de Perfiles de usuario |  | 1d | 2013-01-25 A | 2013-01-25 A | 137 | 100% |  |  |  | start no earlier than 2013-01-25 | A definir | Érica Reynoso |  |
| 139 | 1.2.1.1.5 | Análisis de requerimientos de evaluación y creación de ERS |  | 13d | 2013-01-28 A | 2013-02-18 A | 138, 137, 136 | 100% |  |  |  | start no earlier than 2013-01-21 | A definir | Flavia Piatti / Érica Reynoso |  |
| 140 | 1.2.1.2 | Hito: Workshops de procesos funcionales finalizado | milestone | 0d | 2013-01-25 A | 2013-01-25 A | 138, 137, 136 | 100% |  |  |  |  | A definir | Flavia Piatti / Néstor Vergano |  |
| 141 | 1.2.1.3 | Hito: Confección del ERS Evaluación de desempeño Finalizado | milestone | 0d | 2013-02-22 A | 2013-02-22 A | 139 | 100% |  |  |  | start no earlier than 2013-02-22 | A definir | Érica Reynoso | Carolina Bayer |
| 142 | 1.2.1.4 | Hito: Aceptación del usuario Evaluación de Desempeño del ERS | milestone | 0d | 2013-03-12 A | 2013-03-12 A | 141FS+2d | 100% |  |  |  | start no earlier than 2013-03-12 | A definir | Érica Reynoso/Valeria Venegas |  |
| 143 | 1.2.1.5 | Hito: ERS Seguridad Aceptado | milestone | 0d | 2013-03-22 A | 2013-03-22 A |  | 100% |  |  |  | start no earlier than 2013-03-22 | A definir | Néstor Vergano |  |
| 144 | 1.2.1.6 | **Interfaces de Entrada y Salida** |  | 26d | 2013-01-14 A | 2013-02-22 A |  | 100% |  |  |  |  | A definir |  |  |
| 145 | 1.2.1.6.1 | **Interface E-mind - PeopleNet** |  | 25d | 2013-01-15 A | 2013-02-22 A |  | 100% |  |  |  |  | A definir |  |  |
| 146 | 1.2.1.6.1.1 | Reunión de Entrada E-mind / PeopleNet | milestone | 0d | 2013-01-15 A | 2013-01-15 A |  | 100% |  |  |  | start no earlier than 2013-01-15 | A definir | Homero Sanchez, Pablo Sciacca | Carlos Peñaloza |
| 147 | 1.2.1.6.1.2 | Análisis de Interfaz de Entrada E-mind / PeopleNet |  | 8d | 2013-02-04 A | 2013-02-15 A |  | 100% |  |  |  | finish no earlier than 2013-02-15 | A definir | Homero Sanchez, Pablo Sciacca | Homero Sanchez |
| 148 | 1.2.1.6.1.3 | Ajustes al ERS de Interfaz de Entrada E-mind / PeopleNet |  | 4d | 2013-02-18 A | 2013-02-22 A | 147 | 100% |  |  |  |  | A definir |  |  |
| 149 | 1.2.1.6.1.4 | Hito: Confección del ERS de Interfaz de entrada Finalizado | milestone | 0d | 2013-02-22 A | 2013-02-22 A | 148 | 100% |  |  |  | start no earlier than 2013-02-22 | A definir | Homero Sanchez |  |
| 150 | 1.2.1.6.1.5 | Hito: Aceptación del ERS de interfaz E-mind - PeopleNet | milestone | 0d | 2013-02-22 A | 2013-02-22 A | 149 | 100% |  |  |  |  | A definir | Néstor Vergano | Carlos Peñaloza |
| 151 | 1.2.1.6.2 | **Interface DW** |  | 6d | 2013-01-14 A | 2013-01-21 A |  | 100% |  |  |  |  | A definir |  |  |
| 152 | 1.2.1.6.2.1 | Análisis de Interfaz de Entrada DW |  | 5d | 2013-01-14 A | 2013-01-18 A |  | 100% |  |  |  | start no earlier than 2013-01-14 | A definir | TBD | Miguel Giantinoto |
| 153 | 1.2.1.6.2.2 | Hito: Confección del ERS/AdS de Interfaz de entrada Finalizado | milestone | 0d | 2013-01-18 A | 2013-01-18 A | 152 | 100% |  |  |  |  | A definir | TBD | Miguel Giantinoto |
| 154 | 1.2.1.6.2.3 | Hito: Aceptación del ERS/AdS de interfaz | milestone | 0d | 2013-01-21 A | 2013-01-21 A | 153FS+1d | 100% |  |  |  |  | A definir | TBD | Miguel Giantinoto |
| 155 | 1.2.1.7 | Hito: Interfaces de Entrada y Salida Finalizadas | milestone | 0d | 2013-02-22 A | 2013-02-22 A | 144 | 100% |  |  |  |  | A definir |  |  |

Notes:
- 129: Text3: [28]UID=RN9Y7H-QZGD$ZFCH=N?QA7M`[9]PUN=60634[9]TUID=2322[12]PUID=5036028
- 130: Text3: [28]UID=RN_080=<)3[D"[W,T.!&?N'`[9]PUN=60634[9]TUID=2323[12]PUID=5036028
- 131: Text3: [28]UID=RN!AG?2V7._DNF4%EEA&?CT0[9]PUN=60634[9]TUID=2324[12]PUID=5036028
- 132: Text3: [28]UID=RNI-`PA[B/3D&04A`.Z@N#,`[9]PUN=60634[7]TUID=29[12]PUID=5036028
- 133: Text3: [28]UID=RN&&]X%7]IA42,2I#1="/V7@[9]PUN=60634[8]TUID=123[12]PUID=5036028
- 134: Text3: [28]UID=RN8>&$5+]<*$&;'<#F$C,%?@[9]PUN=60634[8]TUID=287[12]PUID=5036028
- 135: Text3: [28]UID=RN^2\QV"P7MD"E;,NG=@>2:@[9]PUN=60634[8]TUID=300[12]PUID=5036028
- 136: Text3: [28]UID=RN\P8YR,[@^DBA,2@>:4=&1`[9]PUN=60634[8]TUID=288[12]PUID=5036028
- 137: Text3: [28]UID=RNX5+`]^G&Z$NFA=ALV99JGP[9]PUN=60634[8]TUID=289[12]PUID=5036028
- 138: Text3: [28]UID=RN9)3M"%86XT"JH&D`V9U.8@[9]PUN=60634[8]TUID=333[12]PUID=5036028
- 139: Text3: [28]UID=RN6V8;P.HSV$.Y3"]W1.C#:P[9]PUN=60634[8]TUID=290[12]PUID=5036028
- 140: Text3: [28]UID=RNZA>S_!%@`$^8$O;V14IFL0[9]PUN=60634[8]TUID=291[12]PUID=5036028
- 141: Text3: [28]UID=RN`:5"GMG%PD6Z49.&T]`2K`[9]PUN=60634[8]TUID=293[12]PUID=5036028
- 142: Text3: [28]UID=RN#G[&T'E^K4F?O]UQWD=Y/@[9]PUN=60634[8]TUID=301[12]PUID=5036028
- 143: Text3: [28]UID=RN*24L*T`=WDV!*+3.915S=`[9]PUN=60634[9]TUID=2014[12]PUID=5036028
- 144: Text3: [28]UID=RN5@-MR<?.DT^[5@PD]M-O!P[9]PUN=60634[8]TUID=128[12]PUID=5036028
- 145: Text3: [28]UID=RN>1Y<W;:>\D^B9;M$X?\)!P[9]PUN=60634[8]TUID=311[12]PUID=5036028
- 146: Text3: [28]UID=RN"GU_#V:_X46"2S@;K(]U-P[9]PUN=60634[8]TUID=507[12]PUID=5036028
- 147: Text3: [28]UID=RN5#)ZONQ[O$*F%'ANJ#'22`[9]PUN=60634[8]TUID=305[12]PUID=5036028
- 148: Text3: [28]UID=RN4`XUXO^<2D>$LCM=SALGK`[9]PUN=60634[9]TUID=1196[12]PUID=5036028
- 149: Text3: [28]UID=RN=C-KZIUB"D&R]FV9,G&@5`[9]PUN=60634[8]TUID=304[12]PUID=5036028
- 150: Text3: [28]UID=RNUV(.\S!D6$629NS"?C709P[9]PUN=60634[8]TUID=303[12]PUID=5036028
- 151: Text3: [28]UID=RNH8`YMAY]G4.-#NVS:N<[1`[9]PUN=60634[8]TUID=310[12]PUID=5036028
- 152: Text3: [28]UID=RN`>LQ9DQPO$2:B/R/+LVTX`[9]PUN=60634[8]TUID=309[12]PUID=5036028
- 153: Text3: [28]UID=RNMQ$1K<BS%T61.Q;MC,?QA@[9]PUN=60634[8]TUID=308[12]PUID=5036028
- 154: Text3: [28]UID=RN=Z!>]=L[;$:;WNF6P_(/00[9]PUN=60634[8]TUID=307[12]PUID=5036028
- 155: Text3: [28]UID=RNX@%B-'*.34ZBQY"D;'[/!0[9]PUN=60634[8]TUID=417[12]PUID=5036028

| ID | WBS | Task | Type | Duration | Start | Finish | Predecessors | Complete | Constraint | Fin Ajustado | Responsable | Colaboradores | Reporte Semanal |
| --- | --- | --- | --- | --- | --- | --- | --- | --- | --- | --- | --- | --- | --- |
| 156 | 1.2.2 | **Fase 1: Fijación de Objetivos** |  | 59d | 2013-01-24 A | 2013-04-26 A |  | 100% |  | A definir |  |  |  |
| 157 | 1.2.2.1 | **Construcción** |  | 41d | 2013-02-13 A | 2013-04-17 A |  | 100% |  | A definir |  |  |  |
| 158 | 1.2.2.1.1 | **Adaptación del Modulo Evaluación** |  | 29d | 2013-02-13 A | 2013-03-26 A |  | 100% |  | A definir |  |  |  |
| 159 | 1.2.2.1.1.1 | Consideraciones genéricas (EVA43) |  | 3d | 2013-03-15 A | 2013-03-20 A |  | 100% | finish no earlier than 2013-03-20 | A definir | Nestor Vergano |  |  |
| 160 | 1.2.2.1.1.2 | Consideraciones genéricas (EVA44, EVA45, EVA46) |  | 12d | 2013-02-13 A | 2013-03-01 A |  | 100% | start no earlier than 2013-02-13 | A definir | Osvaldo Fernández/Cristian Cuesta | Carlos Peñaloza |  |
| 161 | 1.2.2.1.1.3 | Definición del Plan de Evaluación de Personal (EVA1) |  | 1d | 2013-02-27 A | 2013-02-27 A |  | 100% | start no earlier than 2013-02-27 | A definir | Osvaldo Fernández/Cristian Cuesta | Gabriela Bustos |  |
| 162 | 1.2.2.1.1.4 | Gestionar proceso de evaluación (EVA4) |  | 4d | 2013-02-28 A | 2013-03-05 A | 161 | 100% |  | A definir | Osvaldo Fernández/Cristian Cuesta | Gabriela Bustos |  |
| 163 | 1.2.2.1.1.5 | Definir criterios propios de evaluación (EVA7,EVA8) |  | 8d | 2013-03-06 A | 2013-03-15 A | 162 | 100% | start no earlier than 2013-03-01 | A definir | Osvaldo Fernández/Cristian Cuesta | Gabriela Bustos |  |
| 164 | 1.2.2.1.1.6 | Criterios de evaluación desde el ESS/MSS (EVA11,EVA12,EVA13,EVA14) |  | 3d | 2013-03-18 A | 2013-03-20 A | 163 | 100% |  | A definir | Osvaldo Fernández/Cristian Cuesta |  |  |
| 165 | 1.2.2.1.1.7 | Definición de conocimientos (CON1) |  | 1d | 2013-02-18 A | 2013-02-18 A |  | 100% | start no earlier than 2013-02-18 | A definir | Osvaldo Fernández/Cristian Cuesta | Gabriela Bustos |  |
| 166 | 1.2.2.1.1.8 | Puesto y Conocimientos+ (CON2, CON3) |  | 4d | 2013-02-19 A | 2013-02-25 A | 165 | 100% |  | A definir | Osvaldo Fernández/Cristian Cuesta | Gabriela Bustos |  |
| 167 | 1.2.2.1.1.9 | Nuevos Requerimientos Validaciones (EVA10, EVA55, EVA54, EVA56) |  | 3d | 2013-03-21 A | 2013-03-25 A | 164 | 100% |  | A definir | Osvaldo Fernández/Cristian Cuesta | Gabriela Bustos |  |
| 168 | 1.2.2.1.1.10 | Nuevos Requerimientos Estetico (EVA52, EVA59) |  | 1d | 2013-03-26 A | 2013-03-26 A | 167 | 100% |  | A definir | Osvaldo Fernández/Cristian Cuesta | Gabriela Bustos |  |
| 169 | 1.2.2.1.1.11 | Hito: Revisión de Avance con el usuario | milestone | 0d | 2013-03-15 A | 2013-03-15 A |  | 100% | start no earlier than 2013-03-15 | A definir | Gabriela Bustos |  | ܁. |
| 170 | 1.2.2.1.2 | Hito: Módulo de Evaluación adaptado | milestone | 0d | 2013-03-26 A | 2013-03-26 A | 158 | 100% |  | A definir | Osvaldo Fernández | Gabriela Bustos |  |
| 171 | 1.2.2.1.3 | Hito: Módulo de Evaluación parametrizado | milestone | 0d | 2013-03-26 A | 2013-03-26 A | 158 | 100% |  | A definir | Osvaldo Fernández | Gabriela Bustos |  |
| 172 | 1.2.2.1.4 | Nuevos Requerimientos (OBJ3) |  | 3d | 2013-03-25 A | 2013-03-27 A |  | 100% | start no earlier than 2013-03-25 | A definir | Osvaldo Fernández | Gabriela Bustos |  |
| 173 | 1.2.2.1.5 | **Construcción de Integración E-mind - PeopleNet** |  | 38d | 2013-02-18 A | 2013-04-17 A |  | 100% |  | A definir |  |  |  |
| 174 | 1.2.2.1.5.1 | Desarrollo de Integración E-Mind - PeopleNet |  | 15d | 2013-02-18 A | 2013-03-12 A | 150 | 100% |  | A definir | Homero Sanchez | Carlos Peñaloza |  |
| 175 | 1.2.2.1.5.2 | Hito: Armado de DTSX finalizados | milestone | 0d | 2013-03-20 A | 2013-03-20 A |  | 100% | start no earlier than 2013-03-20 | A definir | Homero Sanchez | Martin Picon |  |
| 176 | 1.2.2.1.5.3 | Copiar Unidad Organigrama/Posición a Unidad Organizativa |  | 4d | 2013-02-18 A | 2013-02-22 A |  | 100% | start no earlier than 2013-02-18 | A definir | Carlos Peñaloza |  |  |
| 177 | 1.2.2.1.5.4 | Validar Estructura de Unidad Organizativa |  | 15d | 2013-03-12 A | 2013-04-05 A | 176 | 100% | start no earlier than 2013-03-12 | A definir | Ignacio Alonso/Sebastián Herrera | Martin Picon |  |
| 178 | 1.2.2.1.5.5 | Ajustes de Estructura de Unidad Organizativa |  | 5d | 2013-04-08 A | 2013-04-12 A | 177 | 100% |  | A definir | Carlos Peñaloza |  |  |
| 179 | 1.2.2.1.5.6 | Validación y Actualización de Estructura de Unidad Organizativa |  | 3d | 2013-04-15 A | 2013-04-17 A | 178 | 100% |  | A definir | Ignacio Alonso |  |  |
| 180 | 1.2.2.1.5.7 | Hito: Estructura de unidad organizativa validada | milestone | 0d | 2013-04-17 A | 2013-04-17 A | 179 | 100% |  | A definir |  |  |  |
| 181 | 1.2.2.1.6 | Hito: Integración E-mind - PeopleNet Construida | milestone | 0d | 2013-04-17 A | 2013-04-17 A | 173 | 100% |  | A definir | Homero Sanchez | Carlos Peñaloza |  |

Notes:
- 156: Text3: [28]UID=RN$D56L"\6HT*H`XPYV683<P[9]PUN=60634[9]TUID=1093[12]PUID=5036028
- 157: Text3: [28]UID=RNH9P"GLK=*$BR6$RW,9A+U@[9]PUN=60634[9]TUID=1096[12]PUID=5036028
- 158: Text3: [28]UID=RNVWIU)IY=TTJ4Y%?E<.'%VP[9]PUN=60634[9]TUID=1097[12]PUID=5036028
- 159: Text3: [28]UID=RN_+G'L=$@,D2</!SNGRK^VP[9]PUN=60634[9]TUID=1988[12]PUID=5036028
- 160: Text3: [28]UID=RN/B"2B>-%1DV,QQ[;TS[X5@[9]PUN=60634[9]TUID=1187[12]PUID=5036028
- 161: Text3: [28]UID=RN:Y:E8"-A4T2$]>:X'-=!(@[9]PUN=60634[9]TUID=1210[12]PUID=5036028
- 162: Text3: [28]UID=RNN<-C4I]-1$VPFGRBYBYV^0[9]PUN=60634[9]TUID=1211[12]PUID=5036028
- 163: Text3: [28]UID=RN4+_Y5F)6KDN7)8626PHC6P[9]PUN=60634[9]TUID=1188[12]PUID=5036028
- 164: Text3: [28]UID=RNW`!L>UGD@D*U]L2>TLW$YP[9]PUN=60634[9]TUID=1212[12]PUID=5036028
- 165: Text3: [28]UID=RN8F,1*X'0^TB`9"2`FL"7F@[9]PUN=60634[9]TUID=1179[12]PUID=5036028
- 166: Text3: [28]UID=RN[N$=M+,=!$*&$;'S\ZP#&`[9]PUN=60634[9]TUID=1182[12]PUID=5036028
- 167: Text3: [28]UID=RN.[/(\+,(\T^HM,.,=TO.(@[9]PUN=60634[9]TUID=1989[12]PUID=5036028
- 168: Text3: [28]UID=RNV63%4<1].$^UHPT'7XN_WP[9]PUN=60634[9]TUID=1990[12]PUID=5036028
- 169: Text3: [28]UID=RNVT?I]3+C_$6*<!Z4'L$*80[9]PUN=60634[9]TUID=1237[12]PUID=5036028
- 170: Text3: [28]UID=RN)NIZ$]`NF$6I(H9#))%V$@[9]PUN=60634[9]TUID=1107[12]PUID=5036028
- 171: Text3: [28]UID=RN>ZBGP`EL1D*B"_://,46_`[9]PUN=60634[9]TUID=1108[12]PUID=5036028
- 172: Text3: [28]UID=RN/GQ(RVH0;4JKJ5Y2F\\P8P[9]PUN=60634[9]TUID=2131[12]PUID=5036028
- 173: Text3: [28]UID=RN3+V"R--_B$Z'7RY+`8$0>@[9]PUN=60634[9]TUID=1109[12]PUID=5036028
- 174: Text3: [28]UID=RN,U)OI2=<=$R1(<28Q8_SS`[9]PUN=60634[9]TUID=1110[12]PUID=5036028
- 175: Text3: [28]UID=RNC-W5M!UL%$^*ICFN351J]`[9]PUN=60634[9]TUID=2015[12]PUID=5036028
- 176: Text3: [28]UID=RN0^9;_]A;6$>8@I<'8ZDM'0[9]PUN=60634[9]TUID=1193[12]PUID=5036028
- 177: Text3: [28]UID=RNA^4R4VP1)4>':QPNJ-?$3`[9]PUN=60634[9]TUID=1194[12]PUID=5036028
- 178: Text3: [28]UID=RNFH[==<%#^$6L_W,J5=_5)`[9]PUN=60634[9]TUID=2132[12]PUID=5036028
- 179: Text3: [28]UID=RN[U=)FATWWD.!$#DY-P3EQ0[9]PUN=60634[9]TUID=2144[12]PUID=5036028
- 180: Text3: [28]UID=RN:`;IE3-HKTB6<'=FO$@!R`[9]PUN=60634[9]TUID=1195[12]PUID=5036028
- 181: Text3: [28]UID=RNK'+$4<]K\4BX9T98V-CG'P[9]PUN=60634[9]TUID=1111[12]PUID=5036028

| ID | WBS | Task | Type | Duration | Start | Finish | Predecessors | Complete | Constraint | Fin Ajustado | Responsable | Colaboradores | Reporte Semanal |
| --- | --- | --- | --- | --- | --- | --- | --- | --- | --- | --- | --- | --- | --- |
| 182 | 1.2.2.1.7 | **Construcción Integración DW** |  | 16d | 2013-03-01 A | 2013-03-22 A |  | 100% |  | A definir |  |  |  |
| 183 | 1.2.2.1.7.1 | Interfaz de Entrada |  | 16d | 2013-03-01 A | 2013-03-22 A |  | 100% | start no earlier than 2013-03-01 | A definir | Homero Sanchez |  |  |
| 184 | 1.2.2.1.7.2 | Interfaz de Salida |  | 16d | 2013-03-01 A | 2013-03-22 A |  | 100% |  | A definir | Homero Sanchez |  |  |
| 185 | 1.2.2.1.8 | Hito: Integración DW Construida | milestone | 0d | 2013-03-22 A | 2013-03-22 A | 182 | 100% |  | A definir | Homero Sanchez | Gabriela Bustos |  |
| 186 | 1.2.2.2 | Construcción Fase 1 - Fijación de Objetivos |  | 41d | 2013-02-13 A | 2013-04-17 A |  | 100% | start no earlier than 2013-02-13 | A definir |  |  | ܁. |
| 187 | 1.2.2.3 | Hito: Construcción etapa 1 Finalizada | milestone | 0d | 2013-03-26 A | 2013-03-26 A | 170 | 100% |  | A definir |  |  |  |
| 188 | 1.2.2.4 | Hito: Capacitación a Usuarios finalizada | milestone | 0d | 2013-04-17 A | 2013-04-17 A |  | 100% | start no earlier than 2013-04-17 | A definir | Gabriela Bustos |  |  |
| 189 | 1.2.2.5 | **Testing Funcional con el usuario** |  | 10d | 2013-03-27 A | 2013-04-15 A |  | 100% |  | A definir |  |  |  |
| 190 | 1.2.2.5.1 | Testing Fijación de Objetivos |  | 10d | 2013-03-27 A | 2013-04-15 A | 187 | 100% |  | A definir | Abigail Carmio / Guadalupe Castellano |  | ܁ |
| 191 | 1.2.2.5.2 | Ajustes Fijación de Objetivos |  | 3d | 2013-04-05 A | 2013-04-15 A | 190FF | 100% |  | A definir | Abigail Carmio / Guadalupe Castellano |  | ܁ |
| 192 | 1.2.2.5.3 | Hito: Aceptación de usuario asignados | milestone | 0d | 2013-04-15 A | 2013-04-15 A | 191 | 100% |  | A definir | Abigail Carmio / Guadalupe Castellano |  |  |
| 193 | 1.2.2.6 | Hito: Testing Funcional Fijación de Objetivos Finalizado | milestone | 0d | 2013-04-15 A | 2013-04-15 A | 189 | 100% |  | A definir |  |  |  |
| 194 | 1.2.2.7 | **Testing Arquitectura Tecnológica** |  | 0d | 2013-03-14 A | 2013-03-14 A |  | 100% |  | A definir |  |  |  |
| 195 | 1.2.2.7.1 | Hito: Planificación de pruebas Arquitectura tecnológicas finalizadas | milestone | 0d | 2013-03-14 A | 2013-03-14 A | 61 | 100% |  | A definir | Pablo López Gutiérrez/Javier Paredes/Héctor Dinamarca | Néstor Vergano |  |
| 196 | 1.2.2.8 | Hito: Testing infraestructura tecnológica Finalizado | milestone | 0d | 2013-03-14 A | 2013-03-14 A | 194 | 100% |  | A definir |  |  |  |
| 197 | 1.2.2.9 | **Homologación** |  | 52.5d | 2013-01-24 A | 2013-04-18 A |  | 100% |  | A definir |  |  |  |
| 198 | 1.2.2.9.1 | Hito: Capacitación QC a responsable de pruebas | milestone | 0d | 2013-02-21 A | 2013-02-21 A |  | 100% | start no earlier than 2013-02-21 | A definir | Diego Sanchez Rivera |  |  |
| 199 | 1.2.2.9.2 | Hito: Definición de Responsable de pruebas | milestone | 0d | 2013-01-24 A | 2013-01-24 A |  | 100% | start no earlier than 2013-01-24 | A definir | Néstor Vergano |  |  |
| 200 | 1.2.2.9.3 | Definición de Tracks de prueba - Fase 1 |  | 8d | 2013-02-27 A | 2013-03-08 A |  | 100% | start no earlier than 2013-02-27 | A definir | Sebastian Abad |  | ܁8 |
| 201 | 1.2.2.9.4 | Producto: Plan de Pruebas Fase 1 | milestone | 0d | 2013-03-08 A | 2013-03-08 A | 200 | 100% |  | A definir | Sebastian Abad |  |  |
| 202 | 1.2.2.9.5 | Hito: Casos de prueba definidos | milestone | 0d | 2013-03-08 A | 2013-03-08 A | 201 | 100% |  | A definir | Sebastian Abad |  |  |
| 203 | 1.2.2.9.6 | Vuelco de Datos |  | 2d | 2013-04-05 A | 2013-04-08 A | 91 | 100% |  | A definir | Néstor Vergano |  |  |
| 204 | 1.2.2.9.7 | Pruebas del módulo de Fijación de Objetivos |  | 5d | 2013-04-10 A | 2013-04-18 A | 193 | 100% |  | A definir | Alejandro Tarallo | Flavia Piatti / Néstor Vergano | ܁8 |
| 205 | 1.2.2.10 | Hito: Homologación Fijación de Objetivos Finalizada | milestone | 0d | 2013-04-18 A | 2013-04-18 A | 197 | 100% |  | A definir | Alejandro Tarallo | Flavia Piatti / Néstor Vergano |  |

Notes:
- 182: Text3: [28]UID=RN*!R#E!#.XTNA]XJ8R_88Z0[9]PUN=60634[9]TUID=1112[12]PUID=5036028
- 183: Text3: [28]UID=RN@N2*;\+7QT:M<1V>34.(00[9]PUN=60634[9]TUID=1197[12]PUID=5036028
- 184: Text3: [28]UID=RND&`QM_JH,D:O"=X#YJ79<P[9]PUN=60634[9]TUID=1198[12]PUID=5036028
- 185: Text3: [28]UID=RNZC*0R_9[J4B5&F+S=1:V]`[9]PUN=60634[9]TUID=1118[12]PUID=5036028
- 186: Text3: [28]UID=RN&J^=P`I?,4F$N<%&6Y\GM0[9]PUN=60634[9]TUID=1213[12]PUID=5036028
- 187: Text3: [28]UID=RNL*UZ!O+8Q$V;6-;&,>V5"P[9]PUN=60634[9]TUID=1158[12]PUID=5036028
- 188: Text3: [28]UID=RN-6L"2*:2^$>G?=^L[C.%1`[9]PUN=60634[9]TUID=2151[12]PUID=5036028
- 189: Text3: [28]UID=RN[/OYI^;N+D*&?E)+H+(2HP[9]PUN=60634[9]TUID=1095[12]PUID=5036028
- 190: Text3: [28]UID=RN97XKMGYF^TJ+V:T+H`6P.`[9]PUN=60634[9]TUID=1128[12]PUID=5036028
- 191: Text3: [28]UID=RNBJ=-H$T!PDV`F<JU"LAGB@[9]PUN=60634[9]TUID=1129[12]PUID=5036028
- 192: Text3: [28]UID=RN<N\LJP#AK$&5JI2LO)DOC@[9]PUN=60634[9]TUID=1841[12]PUID=5036028
- 193: Text3: [28]UID=RN]NA:+EM\Q$F*?7$O81/J,`[9]PUN=60634[9]TUID=1130[12]PUID=5036028
- 194: Text3: [28]UID=RNU"J\%KH5$D6*?K<#2Y!R6@[9]PUN=60634[9]TUID=1217[12]PUID=5036028
- 195: Text3: [28]UID=RNKGX%/_Y?!4:A[6T;/LW`<`[9]PUN=60634[9]TUID=1218[12]PUID=5036028
- 196: Text3: [28]UID=RN;5E=QIS$+DBZ,BB'R=/;G`[9]PUN=60634[9]TUID=1216[12]PUID=5036028
- 197: Text3: [28]UID=RNF[%F[&7!8DV?L>*T+^)YD@[9]PUN=60634[9]TUID=1126[12]PUID=5036028
- 198: Text3: [28]UID=RN4><"3UA@BT6I=EK6V>I\%@[9]PUN=60634[9]TUID=2008[12]PUID=5036028
- 199: Text3: [28]UID=RNN<%(@:IKKTN'FM3>6);0[`[9]PUN=60634[9]TUID=2009[12]PUID=5036028
- 200: Text3: [28]UID=RN?TXC^9;G,T*SKG%:"[JJ+@[9]PUN=60634[9]TUID=2010[12]PUID=5036028
- 201: Text3: [28]UID=RNK"H6Q&6FC$&"AI./;=QT^0[9]PUN=60634[9]TUID=2012[12]PUID=5036028
- 202: Text3: [28]UID=RN6HR.-.TP!$6-A]3+X*Q^.@[9]PUN=60634[9]TUID=2013[12]PUID=5036028
- 203: Text3: [28]UID=RND><X%R0_KDF",5WS0U^9%@[9]PUN=60634[9]TUID=2019[12]PUID=5036028
- 204: Text3: [28]UID=RNSKOHV:M+D$BB--3*,MI>4P[9]PUN=60634[9]TUID=1131[12]PUID=5036028
- 205: Text3: [28]UID=RN[`P0)=HS%4^#2+G-;6Q<Y0[9]PUN=60634[9]TUID=1132[12]PUID=5036028

| ID | WBS | Task | Type | Duration | Start | Finish | Predecessors | Complete | Constraint | Fin Ajustado | Responsable | Reporte Semanal | Colaboradores |
| --- | --- | --- | --- | --- | --- | --- | --- | --- | --- | --- | --- | --- | --- |
| 206 | 1.2.2.11 | **Pasaje a Producción** |  | 17d | 2013-04-04 A | 2013-04-26 A |  | 100% |  | A definir |  |  |  |
| 207 | 1.2.2.11.1 | Armado de documento de implementación |  | 5d | 2013-04-22 A | 2013-04-26 A | 187 | 100% | start no earlier than 2013-04-22 | A definir | Carlos Peñaloza |  |  |
| 208 | 1.2.2.11.2 | Revisión de Plan de Implementación |  | 1d | 2013-04-04 A | 2013-04-04 A | 207 | 100% |  | A definir | Nestor Vergano |  |  |
| 209 | 1.2.2.11.3 | Vuelco de Información |  | 1d | 2013-04-19 A | 2013-04-19 A | 70 | 100% | start no earlier than 2013-04-12 | A definir | Néstor Vergano |  |  |
| 210 | 1.2.2.11.4 | Implementación Fase 1 - Fijación de Objetivos |  | 2d | 2013-04-18 A | 2013-04-22 A | 205 | 100% |  | A definir | Implementaciones | ܁9 |  |
| 211 | 1.2.2.11.5 | Piloto en Producción |  | 1d | 2013-04-22 A | 2013-04-23 A | 210 | 100% |  | A definir | Nestor Vergano | ܁9 |  |
| 212 | 1.2.2.11.6 | Documentación funcional de desarrollo |  | 2d | 2013-04-11 A | 2013-04-12 A |  | 100% | start no earlier than 2013-04-11 | A definir | Nestor Vergano | ܁9 |  |
| 213 | 1.2.2.11.7 | Documentación Técnica de desarrollo |  | 2d | 2013-04-11 A | 2013-04-12 A | 187 | 100% | start no earlier than 2013-04-11 | A definir | Summant | ܁9 |  |
| 214 | 1.2.3 | Hito: Fase 1 Fijación de Objetivos Finalizada | milestone | 0d | 2013-04-26 A | 2013-04-26 A | 156 | 100% |  | A definir |  |  |  |
| 215 | 1.2.4 | Hito: Salida en Producción para Áreas Centrales y Sucursales | milestone | 0d | 2013-05-06 A | 2013-05-06 A |  | 100% | start no earlier than 2013-05-06 | A definir | Néstor Vergano |  |  |
| 216 | 1.2.5 | **Fase 2.1: Feedback Periódico** |  | 368d? | 2012-02-03 A | 2013-08-12 A |  | 100% |  | A definir |  |  |  |
| 217 | 1.2.5.1 | **Procesos** |  | 1d? | 2012-02-03 A | 2012-02-03 A |  | 100% |  | A definir |  |  |  |
| 218 | 1.2.5.1.1 | Relevamiento del proceso actual |  | 1d? | 2012-02-03 A | 2012-02-03 A |  | 100% |  | A definir | Gustavo Rosemberg |  | Néstor Vergano |
| 219 | 1.2.5.1.2 | Workshop y/o entendimiento de Peoplenet |  | 1d? | 2012-02-03 A | 2012-02-03 A |  | 100% |  | A definir | Gustavo Rosemberg |  | Néstor Vergano |
| 220 | 1.2.5.1.3 | Entregable del ERS con sugerencias y/o mejoras de Procesos |  | 1d? | 2012-02-03 A | 2012-02-03 A |  | 100% |  | A definir | Gustavo Rosemberg |  | Néstor Vergano |
| 221 | 1.2.5.1.4 | Soporte al armado de Casos de Pruebas |  | 1d? | 2012-02-03 A | 2012-02-03 A |  | 100% |  | A definir | Gustavo Rosemberg |  | Néstor Vergano |
| 222 | 1.2.5.1.5 | Soporte a la prueba propiamente dichas |  | 1d? | 2012-02-03 A | 2012-02-03 A |  | 100% |  | A definir | Gustavo Rosemberg |  | Néstor Vergano |
| 223 | 1.2.5.1.6 | Modelado Aris para publicar en Claridad |  | 1d? | 2012-02-03 A | 2012-02-03 A |  | 100% |  | A definir | Gustavo Rosemberg |  | Néstor Vergano |
| 224 | 1.2.5.1.7 | Soporte a la implementación |  | 1d? | 2012-02-03 A | 2012-02-03 A |  | 100% |  | A definir | Gustavo Rosemberg |  | Néstor Vergano |
| 225 | 1.2.5.2 | Hito: Casos de Pruebas Definidos | milestone | 0d | 2012-02-03 A | 2012-02-03 A |  | 100% |  | A definir | Gustavo Rosemberg |  | Néstor Vergano |
| 226 | 1.2.5.3 | Hito: Modelo Aris finalizado | milestone | 0d | 2012-02-03 A | 2012-02-03 A |  | 100% |  | A definir | Gustavo Rosemberg |  | Néstor Vergano |
| 227 | 1.2.5.4 | **Construcción** |  | 50d | 2013-04-16 A | 2013-06-27 A |  | 100% |  | A definir |  |  |  |
| 228 | 1.2.5.4.1 | Apertura de Proceso de Evaluación |  | 2d | 2013-04-16 A | 2013-04-17 A | 193 | 100% | start no earlier than 2013-04-16 | A definir | Osvaldo Fernández/Julio Garnica |  |  |
| 229 | 1.2.5.4.2 | Ajustes de Apertura de Proceso de Evaluación |  | 1d | 2013-05-06 A | 2013-05-06 A | 228 | 100% | start no earlier than 2013-05-06 | A definir | Julio Garnica, Leandro Lomonaco |  |  |
| 230 | 1.2.5.4.3 | Gestionar proceso de evaluación |  | 4d | 2013-04-18 A | 2013-04-23 A |  | 100% |  | A definir | Osvaldo Fernández/Julio Garnica |  |  |
| 231 | 1.2.5.4.4 | Ajustes de Gestionar proceso de evaluación |  | 1d | 2013-05-07 A | 2013-05-07 A | 229 | 100% |  | A definir | Julio Garnica, Leandro Lomonaco |  |  |
| 232 | 1.2.5.4.5 | Hito: Diseño de registro de nuevas interfaces definidos | milestone | 0d | 2013-05-08 A | 2013-05-08 A | 231 | 100% | start no earlier than 2013-05-08 | A definir | Pablo Ferreiro |  |  |
| 233 | 1.2.5.4.6 | Definir criterios propios de evaluación |  | 5d | 2013-05-08 A | 2013-05-14 A | 232 | 100% |  | A definir | Osvaldo Fernández/Julio Garnica |  |  |
| 234 | 1.2.5.4.7 | Evaluación de seguimiento |  | 25d | 2013-05-15 A | 2013-06-18 A | 233 | 100% |  | A definir | Osvaldo Fernández/Julio Garnica |  | Gabriela Bustos |
| 235 | 1.2.5.4.8 | Evaluación definitiva de Feedback Periódico |  | 15d | 2013-05-29 A | 2013-06-18 A | 233 | 100% | start no earlier than 2013-05-29 | A definir | Osvaldo Fernández/Julio Garnica |  | Gabriela Bustos |
| 236 | 1.2.5.4.9 | Nuevos requerimientos |  | 5d | 2013-06-19 A | 2013-06-27 A | 235, 234 | 100% |  | A definir |  |  |  |
| 237 | 1.2.5.5 | Hito: Construcción Fase 2 - Feedback Periódico | milestone | 0d | 2013-06-27 A | 2013-06-27 A | 227 | 100% |  | A definir |  |  |  |
| 238 | 1.2.5.6 | Hito: Definición de la aplicación de mejoras finalizada | milestone | 0d | 2013-06-11 A | 2013-06-11 A |  | 100% | start no earlier than 2013-06-11 | A definir | Nestor Vergano |  |  |

Notes:
- 206: Text3: [28]UID=RNP"3MS3J;(DF8D[9;C\/!^`[9]PUN=60634[9]TUID=1123[12]PUID=5036028
- 207: Text3: [28]UID=RNCY3WVWH'(4V9D"59P?'H@@[9]PUN=60634[9]TUID=1135[12]PUID=5036028
- 208: Text3: [28]UID=RNFV>ZX!WD&T21>%SRZ;Y*70[9]PUN=60634[9]TUID=1136[12]PUID=5036028
- 209: Text3: [28]UID=RNFLX,\2B%<4&MVQ;*&C[R)P[9]PUN=60634[9]TUID=2018[12]PUID=5036028
- 210: Text3: [28]UID=RN.GA.%8"V_D.*$HR^UJ>2N`[9]PUN=60634[9]TUID=1137[12]PUID=5036028
- 211: Text3: [28]UID=RNTSP3#Q;'HTJX=X?<"=+8\0[9]PUN=60634[9]TUID=1992[12]PUID=5036028
- 212: Text3: [28]UID=RN/K]M18[G_$^!,(BFVVPAFP[9]PUN=60634[9]TUID=1138[12]PUID=5036028
- 213: Text3: [28]UID=RN?](+38(/$4NAG,SSQ@N.&@[9]PUN=60634[9]TUID=1139[12]PUID=5036028
- 214: Text3: [28]UID=RN)0WEO[:C3TN-6R5@<T7/E@[9]PUN=60634[9]TUID=1156[12]PUID=5036028
- 215: Text3: [28]UID=RN@)@F?ME<446F:F._?!I[A@[9]PUN=60634[9]TUID=2156[12]PUID=5036028
- 216: Text3: [28]UID=RNG4M%#U?CM4J,+^2;SR8S4`[9]PUN=60634[9]TUID=1092[12]PUID=5036028
- 217: Text3: [28]UID=RNVRIM3X"+,TVJ"O;45,A(UP[9]PUN=60634[9]TUID=2193[12]PUID=5036028
- 218: Text3: [28]UID=RN+=9A8-E5YD*(W7-)H\XFD@[9]PUN=60634[9]TUID=2204[12]PUID=5036028
- 219: Text3: [28]UID=RN&>Y)OR?`(4^F4D&['3HGKP[9]PUN=60634[9]TUID=2203[12]PUID=5036028
- 220: Text3: [28]UID=RN'(YZK2"Y^T*,AN*5SB3#,@[9]PUN=60634[9]TUID=2202[12]PUID=5036028
- 221: Text3: [28]UID=RNV=V\?([5`$:W1UL0:&^,1@[9]PUN=60634[9]TUID=2201[12]PUID=5036028
- 222: Text3: [28]UID=RNF]6&M/<")T6>#:(!T86AC`[9]PUN=60634[9]TUID=2200[12]PUID=5036028
- 223: Text3: [28]UID=RNL3'$X,)8NDZ7KG^4[KX2P@[9]PUN=60634[9]TUID=2199[12]PUID=5036028
- 224: Text3: [28]UID=RN8$&\Y!>QC$FBB8`6GS.U``[9]PUN=60634[9]TUID=2198[12]PUID=5036028
- 225: Text3: [28]UID=RN<8S-Q18J34F&]9K_;LL#40[9]PUN=60634[9]TUID=2205[12]PUID=5036028
- 226: Text3: [28]UID=RNYD-NB[@ITT*@R3@Y/*TIB@[9]PUN=60634[9]TUID=2206[12]PUID=5036028
- 227: Text3: [28]UID=RN)30ML0!@[4R>-\,8J/DPB@[9]PUN=60634[9]TUID=2159[12]PUID=5036028
- 228: Text3: [28]UID=RNLM%8&[BG3$VHM5<UY!+N%@[9]PUN=60634[9]TUID=1236[12]PUID=5036028
- 229: Text3: [28]UID=RNT1&W:N$QNT:4DA2"S9X!_0[9]PUN=60634[9]TUID=2165[12]PUID=5036028
- 230: Text3: [28]UID=RNX]A-</S-MD2T73/V_G_S*0[9]PUN=60634[9]TUID=1235[12]PUID=5036028
- 231: Text3: [28]UID=RN87NVHWBHTTJI%KX0[\4<O`[9]PUN=60634[9]TUID=2163[12]PUID=5036028
- 232: Text3: [28]UID=RN9DLEICYM7TBFC@L3U%R4LP[9]PUN=60634[9]TUID=2180[12]PUID=5036028
- 233: Text3: [28]UID=RN^B$U'95;PD>=:L)\FE9J90[9]PUN=60634[9]TUID=1234[12]PUID=5036028
- 234: Text3: [28]UID=RN.P<@/M9S"T*!,(PW!A"*A@[9]PUN=60634[9]TUID=1206[12]PUID=5036028
- 235: Text3: [28]UID=RN!0!\S3AO14:HKYQ_(L"\C0[9]PUN=60634[9]TUID=1205[12]PUID=5036028
- 236: Text3: [28]UID=RN[`C-.X!*4T")&W[=,#-8D`[9]PUN=60634[9]TUID=2377[12]PUID=5036028
- 237: Text3: [28]UID=RNMD>3:MZ%>$&P`4N>?Z*)B0[9]PUN=60634[9]TUID=2166[12]PUID=5036028
- 238: Text3: [28]UID=RNXET_62U@-D"\0%4$(:"3:0[9]PUN=60634[9]TUID=2373[12]PUID=5036028

| ID | WBS | Task | Type | Duration | Start | Finish | Predecessors | Complete | Constraint | Fin Ajustado | Responsable | Colaboradores |
| --- | --- | --- | --- | --- | --- | --- | --- | --- | --- | --- | --- | --- |
| 239 | 1.2.5.7 | **Aplicación de Mejoras** |  | 24d? | 2013-05-09 A | 2013-06-11 A | 238 | 100% |  | A definir |  |  |
| 240 | 1.2.5.7.1 | Opción de eliminar todos los evaluados de un proceso |  | 2d | 2013-05-09 A | 2013-05-10 A |  | 100% | start no earlier than 2013-05-09 | A definir | Osvaldo Fernández |  |
| 241 | 1.2.5.7.2 | Filtro por puestos |  | 1d? | 2013-06-11 A | 2013-06-11 A |  | 100% |  | A definir | TBD |  |
| 242 | 1.2.5.7.3 | Filtro por estado |  | 1d? | 2013-06-11 A | 2013-06-11 A |  | 100% |  | A definir | TBD |  |
| 243 | 1.2.5.7.4 | Optimización de modificación de ternas |  | 1d? | 2013-06-11 A | 2013-06-11 A |  | 100% |  | A definir | TBD |  |
| 244 | 1.2.5.7.5 | Planificar procesos |  | 1d? | 2013-06-11 A | 2013-06-11 A |  | 100% |  | A definir | TBD |  |
| 245 | 1.2.5.7.6 | Permitir a RRHH actuar como Manager |  | 1d? | 2013-06-11 A | 2013-06-11 A |  | 100% |  | A definir | TBD |  |
| 246 | 1.2.5.8 | Hito: Aplicación de Mejoras finalizadas | milestone | 0d | 2013-06-11 A | 2013-06-11 A | 239 | 100% |  | A definir |  |  |
| 247 | 1.2.5.9 | Presentación Feedback Periódico |  | 1d | 2013-06-19 A | 2013-06-19 A |  | 100% | start no earlier than 2013-06-19 | A definir | Gabriela Bustos |  |
| 248 | 1.2.5.10 | **Testing Funcional** |  | 35d | 2013-05-21 A | 2013-07-11 A |  | 100% |  | A definir |  |  |
| 249 | 1.2.5.10.1 | Definición de casos de prueba de Feedback Periódico |  | 5d | 2013-05-21 A | 2013-05-27 A |  | 100% | start no earlier than 2013-05-21 | A definir | Valeria Venegas/Guadalupe Castellano | Carlos Peñaloza/Néstor Vergano/Sebastian Abad |
| 250 | 1.2.5.10.2 | Testing Feedback Periódico |  | 6d | 2013-06-28 A | 2013-07-05 A | 237, 249 | 100% |  | A definir | Valeria Venegas/Guadalupe Castellano | Carlos Peñaloza/Néstor Vergano/Sebastian Abad |
| 251 | 1.2.5.10.3 | Ajustes Feedback Periódico |  | 3d | 2013-07-08 A | 2013-07-11 A | 250 | 100% |  | A definir | Valeria Venegas/Guadalupe Castellano | Carlos Peñaloza/Néstor Vergano/Sebastian Abad |
| 252 | 1.2.5.11 | Hito: Testing Feedback Periódico finalizado | milestone | 0d | 2013-07-11 A | 2013-07-11 A | 248 | 100% |  | A definir |  |  |
| 253 | 1.2.5.12 | **Diseño Gráfico** |  | 4d | 2013-07-12 A | 2013-07-17 A |  | 100% |  | A definir |  |  |
| 254 | 1.2.5.12.1 | Modificación del diseño en las pantallas |  | 4d | 2013-07-12 A | 2013-07-17 A |  | 100% | start no earlier than 2013-07-12 | A definir |  |  |
| 255 | 1.2.5.13 | **Homologación** |  | 44d | 2013-05-16 A | 2013-07-19 A |  | 100% |  | A definir |  |  |
| 256 | 1.2.5.13.1 | Hito: Planificación de las fechas de Homologación - Feedback Periódico | milestone | 0d | 2013-05-23 A | 2013-05-23 A |  | 100% | start no earlier than 2013-05-23 | A definir | Néstor Vergano |  |
| 257 | 1.2.5.13.2 | Hito: Actualización del ambiente de Homologación - Feedback Periódico | milestone | 0d | 2013-05-24 A | 2013-05-24 A |  | 100% | start no earlier than 2013-05-24 | A definir | Carlos Peñalosa |  |
| 258 | 1.2.5.13.3 | Definición de Tracks de prueba - Feedback Periódico |  | 8d | 2013-05-16 A | 2013-05-27 A |  | 100% | start no earlier than 2013-05-16 | A definir | Sebastian Abad |  |
| 259 | 1.2.5.13.4 | Producto: Plan de Pruebas de Feedback Periódico | milestone | 0d | 2013-05-27 A | 2013-05-27 A | 258 | 100% |  | A definir | Sebastian Abad |  |
| 260 | 1.2.5.13.5 | Hito: Casos de prueba definidos de Feedback Periódico | milestone | 0d | 2013-05-27 A | 2013-05-27 A | 259 | 100% |  | A definir | Sebastian Abad |  |
| 261 | 1.2.5.13.6 | **Pruebas del módulo de Feedback Periódico** |  | 6d | 2013-07-12 A | 2013-07-19 A | 252, 260 | 100% |  | A definir |  |  |
| 262 | 1.2.5.13.6.1 | Pruebas de Homologación |  | 6d | 2013-07-12 A | 2013-07-19 A |  | 100% |  | A definir | Alejandro Tarallo | Flavia Piatti / Néstor Vergano |
| 263 | 1.2.5.13.7 | Hito: Pruebas del módulo de Feedback Periódico finalizada | milestone | 0d | 2013-07-19 A | 2013-07-19 A | 261 | 100% |  | A definir |  |  |
| 264 | 1.2.5.14 | Hito: Homologación Feedback Periódico finalizada | milestone | 0d | 2013-07-19 A | 2013-07-19 A | 255 | 100% |  | A definir | Alejandro Tarallo | Flavia Piatti / Néstor Vergano |

Notes:
- 239: Text3: [28]UID=RNIW)=LTZ*D$.\T0MI2F<<:P[9]PUN=60634[9]TUID=2167[12]PUID=5036028
- 240: Text3: [28]UID=RN?8U^M70/`DJ*74L\>.$;W`[9]PUN=60634[9]TUID=2171[12]PUID=5036028
- 241: Text3: [28]UID=RN)':.@T:TVD6"-X1Z]NS@I@[9]PUN=60634[9]TUID=2169[12]PUID=5036028
- 242: Text3: [28]UID=RNQ',#RMA#&D&'&KD5TP[&V@[9]PUN=60634[9]TUID=2170[12]PUID=5036028
- 243: Text3: [28]UID=RNEG"1=H-RE$R&**MR'X^;W@[9]PUN=60634[9]TUID=2172[12]PUID=5036028
- 244: Text3: [28]UID=RN2")4:]XNKDJ<B57USR0+@`[9]PUN=60634[9]TUID=2173[12]PUID=5036028
- 245: Text3: [28]UID=RN\#FIET@E\$VPR91@]-[SV0[9]PUN=60634[9]TUID=2174[12]PUID=5036028
- 246: Text3: [28]UID=RNT[.2:!@/E$>EB6'\6W8%T0[9]PUN=60634[9]TUID=2168[12]PUID=5036028
- 247: Text3: [28]UID=RN@V>-HTT3/TR@<IO]F=F^/P[9]PUN=60634[9]TUID=2183[12]PUID=5036028
- 248: Text3: [28]UID=RN#0:!&JLEVT27K'%YN=/K;`[9]PUN=60634[9]TUID=2185[12]PUID=5036028
- 249: Text3: [28]UID=RN+3<:AK`UD$6W.A7_*'B*O`[9]PUN=60634[9]TUID=2186[12]PUID=5036028
- 250: Text3: [28]UID=RNLU8"2[M9HTB^BC$[@^?F^0[9]PUN=60634[9]TUID=2187[12]PUID=5036028
- 251: Text3: [28]UID=RNNJ,-K,`PP$2^!!@Z>"E5N@[9]PUN=60634[9]TUID=2188[12]PUID=5036028
- 252: Text3: [28]UID=RN'JY-+5GD%T:8G#LTM<[HV`[9]PUN=60634[9]TUID=2192[12]PUID=5036028
- 253: Text3: [28]UID=RN<8L(\83E,T2T(MTQKC=:'0[9]PUN=60634[9]TUID=2585[12]PUID=5036028
- 254: Text3: [28]UID=RN#8;/J@\_B$RY854OOH<>%@[9]PUN=60634[9]TUID=2586[12]PUID=5036028
- 255: Text3: [28]UID=RN++'%%E39$$V@1M@/ZB)]^@[9]PUN=60634[9]TUID=2294[12]PUID=5036028
- 256: [14/05/2013 06:06:39 p.m. (5104029)] / Nro de UT es SIST000100632 / Añadir nuevas notas aquí debajo: / Text3: [28]UID=RN3NQ=G$#-#$*!HW?YCT$:'@[9]PUN=60634[9]TUID=2314[12]PUID=5036028
- 257: Text3: [28]UID=RNX<DA!4+3Y4R=BG#HCGS;T`[9]PUN=60634[9]TUID=2308[12]PUID=5036028
- 258: Text3: [28]UID=RNW=K%"0]U.$2/BQ'L'G=Y*`[9]PUN=60634[9]TUID=2295[12]PUID=5036028
- 259: Text3: [28]UID=RNS`/!6%KP(TR9_?A(5-@Q@0[9]PUN=60634[9]TUID=2296[12]PUID=5036028
- 260: Text3: [28]UID=RN,"&N71:7&TV04RCB%EZ#$@[9]PUN=60634[9]TUID=2297[12]PUID=5036028
- 261: Text3: [28]UID=RN^>@5>^X(?D>LG1VC<1F8B0[9]PUN=60634[9]TUID=2298[12]PUID=5036028
- 262: Text3: [28]UID=RN7PL&2#1+[D"M/!M>O4AVL`[9]PUN=60634[9]TUID=2550[12]PUID=5036028
- 263: Text3: [28]UID=RN_I?U(I6LODV`JG'1H/S-'0[9]PUN=60634[9]TUID=2552[12]PUID=5036028
- 264: Text3: [28]UID=RNOC569?=1K$>>%*Q(HV2;:P[9]PUN=60634[9]TUID=2299[12]PUID=5036028

| ID | WBS | Task | Type | Duration | Start | Finish | Predecessors | Complete | Constraint | Fin Ajustado | Responsable | Reporte Semanal | Colaboradores |
| --- | --- | --- | --- | --- | --- | --- | --- | --- | --- | --- | --- | --- | --- |
| 265 | 1.2.5.15 | **Prueba de Performance** |  | 20d | 2013-07-16 A | 2013-08-12 A |  | 100% |  | A definir |  |  |  |
| 266 | 1.2.5.15.1 | Generación de Scrip de Feedback Periódico |  | 1d | 2013-07-16 A | 2013-07-16 A |  | 100% | start no earlier than 2013-07-16 | A definir | Carlos Peñaloza | ܁K |  |
| 267 | 1.2.5.15.2 | Ejecución de Scrip de Feedback Periódico |  | 2d | 2013-07-17 A | 2013-07-18 A | 266 | 100% |  | A definir | Carlos Domeniconi | ܁K | Carlos Peñaliosa |
| 268 | 1.2.5.15.3 | Segunda Ejecución de Scrip de Feedback Periódico |  | 2d | 2013-07-19 A | 2013-07-22 A | 267 | 100% |  | A definir |  | ܁K |  |
| 269 | 1.2.5.15.4 | Identificación de picos de saturación en las pruebas de Stress |  | 7d | 2013-08-02 A | 2013-08-12 A | 268 | 100% | start no earlier than 2013-08-02 | A definir | Nestor Vergano | ܁K | Carlos Domeniconi |
| 270 | 1.2.5.15.5 | Hito: Aceptación de pruebas de Performance | milestone | 0d | 2013-07-31 A | 2013-07-31 A |  | 100% | start no earlier than 2013-07-31 | A definir |  | ܁K |  |
| 271 | 1.2.5.16 | Hito: Prueba de Stress finalizadas | milestone | 0d | 2013-08-12 A | 2013-08-12 A | 265 | 100% |  | A definir |  |  |  |
| 272 | 1.2.5.17 | **Pasaje a Producción** |  | 5d | 2013-07-19 A | 2013-07-29 A |  | 100% |  | A definir |  |  |  |
| 273 | 1.2.5.17.1 | Implementación Fase 2 - Feedback Periódico | milestone | 0d | 2013-07-19 A | 2013-07-19 A | 264 | 100% |  | A definir | Néstor Vergano |  |  |
| 274 | 1.2.5.17.2 | Prueba piloto en producción |  | 1d | 2013-07-22 A | 2013-07-22 A | 273 | 100% |  | A definir | Néstor Vergano |  |  |
| 275 | 1.2.5.17.3 | Documentación funcional de desarrollo | milestone | 0d | 2013-07-29 A | 2013-07-29 A | 274 | 100% | start no earlier than 2013-07-29 | A definir | Summant |  |  |
| 276 | 1.2.6 | Hito: Fase 2 Feedback Periodicos finalizada | milestone | 0d | 2013-08-12 A | 2013-08-12 A | 216 | 100% |  | A definir |  |  |  |
| 277 | 1.2.7 | **Fase 2.2: Evaluación Final** |  | 407d? | 2012-02-03 A | 2013-10-07 A |  | 100% |  | A definir |  |  |  |
| 278 | 1.2.7.1 | **Procesos** |  | 1d? | 2012-02-03 A | 2012-02-03 A |  | 100% |  | A definir |  |  |  |
| 279 | 1.2.7.1.1 | Relevamiento del proceso actua |  | 1d? | 2012-02-03 A | 2012-02-03 A |  | 100% |  | A definir | Gustavo Rosemberg |  | Néstor Vergano |
| 280 | 1.2.7.1.2 | Workshop y/o entendimiento de Peoplene |  | 1d? | 2012-02-03 A | 2012-02-03 A |  | 100% |  | A definir | Gustavo Rosemberg |  | Néstor Vergano |
| 281 | 1.2.7.1.3 | Entregable del ERS con sugerencias y/o mejoras de Procesos |  | 1d? | 2012-02-03 A | 2012-02-03 A |  | 100% |  | A definir | Gustavo Rosemberg |  | Néstor Vergano |
| 282 | 1.2.7.1.4 | Soporte al armado de Casos de Prueba |  | 1d? | 2012-02-03 A | 2012-02-03 A |  | 100% |  | A definir | Gustavo Rosemberg |  | Néstor Vergano |
| 283 | 1.2.7.1.5 | Soporte a la prueba propiamente dicha |  | 1d? | 2012-02-03 A | 2012-02-03 A |  | 100% |  | A definir | Gustavo Rosemberg |  | Néstor Vergano |
| 284 | 1.2.7.1.6 | Modelado Aris para publicar en Clarida |  | 1d? | 2012-02-03 A | 2012-02-03 A |  | 100% |  | A definir | Gustavo Rosemberg |  | Néstor Vergano |
| 285 | 1.2.7.1.7 | Soporte a la implementació |  | 1d? | 2012-02-03 A | 2012-02-03 A |  | 100% |  | A definir | Gustavo Rosemberg |  | Néstor Vergano |
| 286 | 1.2.7.2 | Hito: Casos de Pruebas Definidos | milestone | 0d | 2012-02-03 A | 2012-02-03 A |  | 100% |  | A definir | Gustavo Rosemberg |  | Néstor Vergano |
| 287 | 1.2.7.3 | Hito: Modelo Aris finalizado | milestone | 0d | 2012-02-03 A | 2012-02-03 A |  | 100% |  | A definir | Gustavo Rosemberg |  | Néstor Vergano |
| 288 | 1.2.7.4 | **Construcción** |  | 24d | 2013-07-08 A | 2013-08-09 A |  | 100% |  | A definir |  |  |  |
| 289 | 1.2.7.4.1 | Evaluación definitiva de Evaluación Final |  | 15d | 2013-07-08 A | 2013-07-29 A | 237 | 100% | start no earlier than 2013-07-07 | A definir | Julio Garnica | ܁G |  |
| 290 | 1.2.7.4.2 | Valoración de evaluación |  | 5d | 2013-07-30 A | 2013-08-05 A | 289 | 100% |  | A definir | Julio Garnica | ܁G | Gabriela Bustos |
| 291 | 1.2.7.4.3 | Registro de resultados de la Evaluación desde RRHH |  | 1d | 2013-08-06 A | 2013-08-06 A | 290 | 100% |  | A definir | Julio Garnica | ܁G | Gabriela Bustos |
| 292 | 1.2.7.4.4 | Análisis de informe de calibración |  | 1d | 2013-07-26 A | 2013-07-26 A |  | 100% | start no earlier than 2013-07-26 | A definir | Carlos Peñaloza |  | Gabriela Bustos |
| 293 | 1.2.7.4.5 | Hito: Propuesta de solución a Usuarios finalizada | milestone | 0d | 2013-08-06 A | 2013-08-06 A | 292 | 100% | start no earlier than 2013-08-06 | A definir | Gabriela Bustos |  | Carlos Peñaloza |
| 294 | 1.2.7.4.6 | Mejoras en filtros |  | 15d | 2013-07-22 A | 2013-08-09 A | 237 | 100% | start no earlier than 2013-07-22 | A definir | Carlos Peñaloza | ܁G | Gabriela Bustos |
| 295 | 1.2.7.5 | Hito: Construcción Fase 2 - Evaluación Final | milestone | 0d | 2013-08-09 A | 2013-08-09 A | 288 | 100% | start no earlier than 2013-08-09 | A definir |  |  |  |
| 296 | 1.2.7.6 | Hito: Definición de la aplicación de mejoras finalizada | milestone | 0d | 2013-06-11 A | 2013-06-11 A |  | 100% | start no earlier than 2013-06-11 | A definir | Nestor Vergano | ܁G |  |

Notes:
- 265: Text3: [28]UID=RNK]<-4$.VFD6R-`G>2)2YSP[9]PUN=60634[9]TUID=2547[12]PUID=5036028
- 266: Text3: [28]UID=RNCA#R3RYMND"!F#77[2-WA0[9]PUN=60634[9]TUID=2548[12]PUID=5036028
- 267: Text3: [28]UID=RN6;4(W'.?B4&1C>T4#X<G@0[9]PUN=60634[9]TUID=2549[12]PUID=5036028
- 268: Text3: [28]UID=RN7<O7\$A/`4N\`6:I%.F?RP[9]PUN=60634[9]TUID=2591[12]PUID=5036028
- 269: Text3: [28]UID=RNDM,CNNW_&$N#;$L=%'G`$0[9]PUN=60634[9]TUID=2645[12]PUID=5036028
- 270: Text3: [28]UID=RN??:NTM8/DT*^O:IN#J9K&@[9]PUN=60634[9]TUID=2642[12]PUID=5036028
- 271: Text3: [28]UID=RN?6E-\&>034N0(0./F9=[?P[9]PUN=60634[9]TUID=2551[12]PUID=5036028
- 272: Text3: [28]UID=RN&@'V2H%(V$*SS%CU^\V"D0[9]PUN=60634[9]TUID=2300[12]PUID=5036028
- 273: Text3: [28]UID=RNRPUFH`#Q@D&.#SQ<FSX.FP[9]PUN=60634[9]TUID=2303[12]PUID=5036028
- 274: Text3: [28]UID=RNI.BN]VG]D$&3:RFY4]X8Y0[9]PUN=60634[9]TUID=2321[12]PUID=5036028
- 275: Text3: [28]UID=RN$=?5VCBV"$*5WJ!W-)\%I`[9]PUN=60634[9]TUID=2304[12]PUID=5036028
- 276: Text3: [28]UID=RNX_^O%,[/($R/@'UP!?Z94P[9]PUN=60634[9]TUID=2306[12]PUID=5036028
- 277: Text3: [28]UID=RNXS67PE.TLTV7/X.M0X9I;`[9]PUN=60634[9]TUID=2157[12]PUID=5036028
- 278: Text3: [28]UID=RN0,?]S.^UVDF#8(;K!$^6R`[9]PUN=60634[9]TUID=2207[12]PUID=5036028
- 279: Text3: [28]UID=RN=2+A7\.YR$NMX+1!PZ83E`[9]PUN=60634[9]TUID=2208[12]PUID=5036028
- 280: Text3: [28]UID=RN1@B0YVE&;TBW2M#8T##-\P[9]PUN=60634[9]TUID=2209[12]PUID=5036028
- 281: Text3: [28]UID=RN5U21!N.;WD"/<2M@#$8RV@[9]PUN=60634[9]TUID=2210[12]PUID=5036028
- 282: Text3: [28]UID=RN_+8)_4@[N4^[<]9@56MR^@[9]PUN=60634[9]TUID=2211[12]PUID=5036028
- 283: Text3: [28]UID=RNVGW7YN'+'$2<S!I=AQ.-5@[9]PUN=60634[9]TUID=2212[12]PUID=5036028
- 284: Text3: [28]UID=RNN4)4+K660T"V1D',;SMCL`[9]PUN=60634[9]TUID=2213[12]PUID=5036028
- 285: Text3: [28]UID=RN@?[WM4S\X4JNV[FP^+3%+0[9]PUN=60634[9]TUID=2214[12]PUID=5036028
- 286: Text3: [28]UID=RNXE"._!(>#DB,T721=*!>3`[9]PUN=60634[9]TUID=2215[12]PUID=5036028
- 287: Text3: [28]UID=RN2UE/*/=HW4ZWLK$[)Q]V!`[9]PUN=60634[9]TUID=2216[12]PUID=5036028
- 288: Text3: [28]UID=RNVNSS:':,KTJ<^+^.P>IL7@[9]PUN=60634[8]TUID=138[12]PUID=5036028
- 289: Text3: [28]UID=RN,`:;#ACLD$:81L(A,#/G-0[9]PUN=60634[9]TUID=2175[12]PUID=5036028
- 290: Text3: [28]UID=RNIW058Y;&0T"76"O'0K16_@[9]PUN=60634[9]TUID=1204[12]PUID=5036028
- 291: Text3: [28]UID=RNU@HNERC`R4Z_3'R!XR-3W`[9]PUN=60634[9]TUID=1203[12]PUID=5036028
- 292: Text3: [28]UID=RNYN].KN32-$./()<86_!,CP[9]PUN=60634[9]TUID=2587[12]PUID=5036028
- 293: Text3: [28]UID=RNGLBED@"D'$>_`<KR?JM.4P[9]PUN=60634[9]TUID=2646[12]PUID=5036028
- 294: Text3: [28]UID=RNU(U5G_LTI4Z;Y-FNL4"\.P[9]PUN=60634[9]TUID=2378[12]PUID=5036028
- 295: Text3: [28]UID=RN':=BQHY/!T"!_&.%\_*&@@[9]PUN=60634[9]TUID=1163[12]PUID=5036028
- 296: Text3: [28]UID=RN1"7<$-Z*%T&00DR?"7-C'`[9]PUN=60634[9]TUID=2374[12]PUID=5036028

| ID | WBS | Task | Type | Duration | Start | Finish | Predecessors | Complete | Constraint | Fin Ajustado | Responsable | Colaboradores |
| --- | --- | --- | --- | --- | --- | --- | --- | --- | --- | --- | --- | --- |
| 297 | 1.2.7.7 | **Clasificación estratégica (potencial) MEJORAS** |  | 20d | 2013-06-11 A | 2013-07-11 A | 296 | 100% |  | A definir |  |  |
| 298 | 1.2.7.7.1 | Histórico de registro de potencial |  | 4d | 2013-06-11 A | 2013-06-14 A |  | 100% | start no earlier than 2013-06-11 | A definir | Osvaldo Fernández/Julio Garnica | Gabriela Bustos |
| 299 | 1.2.7.7.2 | Reporte para promoción |  | 8d | 2013-06-17 A | 2013-06-28 A | 298 | 100% |  | A definir | Osvaldo Fernández/Julio Garnica | Gabriela Bustos |
| 300 | 1.2.7.7.3 | Reporte para calibración |  | 8d | 2013-07-01 A | 2013-07-11 A | 299 | 100% |  | A definir | Osvaldo Fernández/Julio Garnica | Gabriela Bustos |
| 301 | 1.2.7.8 | Hito: Presentación Evaluación Final | milestone | 0d | 2013-08-09 A | 2013-08-09 A | 295 | 100% | start no earlier than 2013-08-09 | A definir | Gabriela Bustos |  |
| 302 | 1.2.7.9 | **Testing Funcional** |  | 98d | 2013-05-16 A | 2013-10-04 A |  | 100% |  | A definir |  |  |
| 303 | 1.2.7.9.1 | Definición de casos de prueba de Evaluación Final |  | 39d | 2013-05-16 A | 2013-07-12 A |  | 100% | start no earlier than 2013-05-16 | A definir | Abigail Carmio/Guadalupe Castellano |  |
| 304 | 1.2.7.9.2 | Testing Funcional de Evaluación final |  | 5d | 2013-08-13 A | 2013-08-20 A | 295, 291, 301 | 100% | start no earlier than 2013-08-13 | A definir | Sebastian Abad | Carlos Peñaloza/Néstor Vergano |
| 305 | 1.2.7.9.3 | Hito: Planificación de UAT Finalizada | milestone | 0d | 2013-08-14 A | 2013-08-14 A |  | 100% | start no earlier than 2013-08-14 | A definir | Sebastian Abad | Néstor Vergano |
| 306 | 1.2.7.9.4 | UAT de Evaluación final |  | 5d | 2013-08-21 A | 2013-08-27 A | 304 | 100% |  | A definir | Abigail Carmio/Guadalupe Castellano | Carlos Peñaloza/Néstor Vergano/Sebastian Abad |
| 307 | 1.2.7.9.5 | Ajustes Evaluación Final |  | 5d | 2013-08-21 A | 2013-08-27 A | 304 | 100% |  | A definir | Abigail Carmio/Guadalupe Castellano | Carlos Peñaloza/Néstor Vergano/Sebastian Abad |
| 308 | 1.2.7.9.6 | UAT Final de Ajustes |  | 5d | 2013-09-30 A | 2013-10-04 A | 307 | 100% | start no earlier than 2013-09-30 | A definir | Abigail Carmio/Guadalupe Castellano | Carlos Peñaloza/Néstor Vergano/Sebastian Abad |
| 309 | 1.2.7.10 | Hito: Testing Evaluación Final Finalizado | milestone | 0d | 2013-10-04 A | 2013-10-04 A | 302 | 100% |  | A definir |  |  |
| 310 | 1.2.7.11 | **Homologación** |  | 93d | 2013-05-16 A | 2013-09-27 A |  | 100% |  | A definir |  |  |
| 311 | 1.2.7.11.1 | Hito: Planificación de las fechas de Homologación - Evaluación Final | milestone | 0d | 2013-08-01 A | 2013-08-01 A |  | 100% | start no earlier than 2013-08-01 | A definir | Néstor Vergano |  |
| 312 | 1.2.7.11.2 | Definición de Tracks de prueba - Evaluación Final |  | 37d | 2013-05-16 A | 2013-07-10 A |  | 100% | start no earlier than 2013-05-16 | A definir | Sebastian Abad |  |
| 313 | 1.2.7.11.3 | Producto: Plan de Pruebas de Evaluación Final | milestone | 0d | 2013-07-10 A | 2013-07-10 A | 312 | 100% |  | A definir | Sebastian Abad |  |
| 314 | 1.2.7.11.4 | Hito: Casos de prueba definidos de Evaluación Final | milestone | 0d | 2013-07-10 A | 2013-07-10 A | 313 | 100% |  | A definir | Sebastian Abad |  |
| 315 | 1.2.7.11.5 | Pruebas del módulo de Evaluación Final |  | 10d | 2013-09-16 A | 2013-09-27 A | 314 | 100% | start no earlier than 2013-09-30 | A definir | Alejandro Tarallo | Flavia Piatti / Néstor Vergano |
| 316 | 1.2.7.12 | Hito: Homologación Evaluación Final finalizada | milestone | 0d | 2013-09-27 A | 2013-09-27 A | 310 | 100% |  | A definir | Alejandro Tarallo | Flavia Piatti / Néstor Vergano |
| 317 | 1.2.7.13 | **Pasaje a Producción** |  | 2d | 2013-10-04 A | 2013-10-07 A |  | 100% |  | A definir |  |  |
| 318 | 1.2.7.13.1 | Implementación Fase 2 - Evaluación Final |  | 2d | 2013-10-04 A | 2013-10-07 A | 316 | 100% | start no earlier than 2013-10-04 | A definir | Alejandro Tarallo |  |
| 319 | 1.2.7.13.2 | Documentación funcional de desarrollo | milestone | 0d | 2013-10-07 A | 2013-10-07 A | 318 | 100% |  | A definir | TBD |  |
| 320 | 1.2.7.13.3 | Documentación Técnica de desarrollo | milestone | 0d | 2013-10-07 A | 2013-10-07 A | 319 | 100% |  | A definir | Summant |  |
| 321 | 1.2.8 | Hito: Fase 2 Evaluación Final Finalizada | milestone | 0d | 2013-10-07 A | 2013-10-07 A | 317 | 100% |  | A definir |  |  |

Notes:
- 297: Text3: [28]UID=RN`[R*+-QDDD..:@(B`VZGO@[9]PUN=60634[8]TUID=451[12]PUID=5036028
- 298: Text3: [28]UID=RN4T*2?1$8=$B5V0Z[KQY<SP[9]PUN=60634[8]TUID=452[12]PUID=5036028
- 299: Text3: [28]UID=RN](&%\"[@RD:,[QKF''SS)`[9]PUN=60634[8]TUID=453[12]PUID=5036028
- 300: Text3: [28]UID=RNRG5`EP@M9$BS,KC"(#E<<0[9]PUN=60634[8]TUID=454[12]PUID=5036028
- 301: Text3: [28]UID=RN,=2+T8\VM$V[GTE3"KK-R`[9]PUN=60634[9]TUID=2184[12]PUID=5036028
- 302: Text3: [28]UID=RNMD?AKY>B^421PZ:D'D=4[`[9]PUN=60634[8]TUID=476[12]PUID=5036028
- 303: Text3: [28]UID=RNB@F(`)T2DDZ"I,M(055[`P[9]PUN=60634[9]TUID=2182[12]PUID=5036028
- 304: Text3: [28]UID=RN^4&L=+47\T*DZQ>L3MH.\P[9]PUN=60634[9]TUID=2177[12]PUID=5036028
- 305: Text3: [28]UID=RN,U!V@KM@YT.JH!9@L<LMM0[9]PUN=60634[9]TUID=2651[12]PUID=5036028
- 306: Text3: [28]UID=RN#?FU0C:#^4>VW3ELY25+,0[9]PUN=60634[9]TUID=2650[12]PUID=5036028
- 307: Text3: [28]UID=RNCQ5T$?*))4:^"],$\G<R4P[9]PUN=60634[9]TUID=2178[12]PUID=5036028
- 308: Text3: [28]UID=RN']ZGGI-)W4JC@9"5NYZ(G@[9]PUN=60634[9]TUID=2670[12]PUID=5036028
- 309: Text3: [28]UID=RN=G3]O!&2+$ZP";4D5`U<T0[9]PUN=60634[8]TUID=506[12]PUID=5036028
- 310: Text3: [28]UID=RN:OP-"X>HZD&YI;#]MU<P$@[9]PUN=60634[8]TUID=145[12]PUID=5036028
- 311: [14/05/2013 06:06:39 p.m. (5104030)] / Nro de UT es SIST000100632 / Añadir nuevas notas aquí debajo: / Text3: [28]UID=RNA=/DX%S/`42'=Q+["3P(C`[9]PUN=60634[9]TUID=2315[12]PUID=5036028
- 312: Text3: [28]UID=RN8?,B0!B?F46.^E,L'7Z:^`[9]PUN=60634[9]TUID=2023[12]PUID=5036028
- 313: Text3: [28]UID=RNI://I$+G\4*/228,&58B'P[9]PUN=60634[9]TUID=2024[12]PUID=5036028
- 314: Text3: [28]UID=RN-U,`K)HB;$B4%(`@G'(`P0[9]PUN=60634[9]TUID=2025[12]PUID=5036028
- 315: Text3: [28]UID=RNZO#O\/WD7D^"C7?"`P?%T0[9]PUN=60634[8]TUID=468[12]PUID=5036028
- 316: Text3: [28]UID=RNC;OS)@WI7D6H6.#?ZY*?:P[9]PUN=60634[8]TUID=470[12]PUID=5036028
- 317: Text3: [28]UID=RN$KXW$#1<1D.,F``.6=(/$`[9]PUN=60634[8]TUID=522[12]PUID=5036028
- 318: Text3: [28]UID=RNE;!_./+D%$&M#NBBBBE760[9]PUN=60634[8]TUID=524[12]PUID=5036028
- 319: Text3: [28]UID=RN0+O0W%%2J4.@'B8,!XF)7P[9]PUN=60634[8]TUID=530[12]PUID=5036028
- 320: Text3: [28]UID=RN*<1?&[9!8$"*F62M+EA.KP[9]PUN=60634[8]TUID=529[12]PUID=5036028
- 321: Text3: [28]UID=RN1AF>EZR6Y4*+0J7$8E%8$@[9]PUN=60634[9]TUID=1191[12]PUID=5036028

| ID | WBS | Task | Type | Duration | Start | Finish | Predecessors | Complete | Remaining | Total slack | Free slack | Constraint | Fin Ajustado | Responsable | Colaboradores | Reporte Semanal |
| --- | --- | --- | --- | --- | --- | --- | --- | --- | --- | --- | --- | --- | --- | --- | --- | --- |
| 322 | 1.2.9 | **Migración de Evaluaciones de Desempeño** |  | 402d | 2012-02-03 A | 2013-09-30 |  | 25% | 301.5d | 258d | 0d |  | A definir |  |  |  |
| 323 | 1.2.9.1 | Extracción de evaluaciones desde tecnología RHOL | milestone | 0d | 2013-08-09 A | 2013-08-09 A | 294 | 100% |  |  |  |  | A definir | Carlos Peñaloza | Gabriela Bustos |  |
| 324 | 1.2.9.2 | Hito: Extracción de evaluaciones desde tecnología Lotus Note | milestone | 0d | 2012-02-03 A | 2012-02-03 A |  | 100% |  |  |  |  | A definir | Carlos Scherdejer | Gabriela Bustos |  |
| 325 | 1.2.9.3 | Incorporación del Historial de evaluaciones |  | 25d | 2013-08-12 A | 2013-09-16 | 323 | 25% | 18.75d | 258d | 0d |  | A definir | Carlos Peñaloza | Gabriela Bustos |  |
| 326 | 1.2.9.4 | Hito: Validación del usuario final de la información importada | milestone | 0d | 2013-09-30 | 2013-09-30 | 325FS+10d |  |  | 258d | 0d |  | A definir | Guadalupe Castellano; Natalia Pecorelli | Néstor Vergano |  |
| 327 | 1.2.9.5 | **Hito: Definir acciones de comunicación por la migración de evaluaciones** |  | 0d | 2013-09-06 | 2013-09-06 |  |  |  | 275d | 17d |  | A definir |  |  |  |
| 328 | 1.2.9.5.1 | Hito: Coordinar con ERD y EGG acciones | milestone | 0d | 2013-09-06 | 2013-09-06 |  |  |  | 275d | 0d | start no earlier than 2013-09-06 | A definir | Florencia Bozzini | Carlos Peñaloza |  |
| 329 | 1.2.9.6 | Hito: Definición acciones de comunicación por la migración de evaluaciones finalizada | milestone | 0d | 2013-09-30 | 2013-09-30 | 326, 327 |  |  | 258d |  |  | A definir | Florencia Bozzini | Carlos Peñaloza |  |
| 330 | 1.2.9.7 | Hito: Discontinuar los accesos a evaluaciones 2010/2012 desde RHOL | milestone | 0d | 2013-09-06 | 2013-09-06 | 328 |  |  | 275d |  |  | A definir | Carlos Peñaloza |  |  |
| 331 | 1.2.10 | Hito: Evaluaciones de Desempeño Migradas | milestone | 0d | 2013-09-30 | 2013-09-30 | 322 |  |  | 258d | 0d | start no earlier than 2013-09-30 | A definir |  |  |  |
| 332 | 1.2.11 | Hito: Documentar el modelo de mapping finalizado | milestone | 0d | 2013-09-23 A | 2013-09-23 A |  | 100% |  |  |  | start no earlier than 2013-09-23 | A definir | Gabriela Bustos |  |  |
| 333 | 1.2.12 | Construcción del informe de Evaluaciones (calibración) |  | 1d? | 2013-10-01 | 2013-10-01 | 331 |  |  | 258d |  | start no earlier than 2013-10-01 | A definir | Carlos Peñaloza | Gabriela Bustos |  |
| 334 | 1.3 | Hito: Etapa 1 - Evaluación de Desempeño finalizada | milestone | 0d | 2013-10-07 | 2013-10-07 | 132 |  |  | 254d | 227d |  | A definir |  |  |  |
| 335 | 1.4 | **Etapa 1.1 Migración de fichas electrónicas** |  | 2d? | 2013-09-16 A | 2013-09-17 |  |  | 2d? | 352d | 0d |  | A definir |  |  |  |
| 336 | 1.4.1 | Hito: Definición de mapping finalizado | milestone | 0d | 2013-09-16 A | 2013-09-16 A |  | 100% |  |  |  | start no earlier than 2013-09-16 | A definir | Ignacio Alonso |  |  |
| 337 | 1.4.2 | Hito: Creación de mapping en People Net | milestone | 0d | 2013-09-16 A | 2013-09-16 A | 336 | 100% |  |  |  |  | A definir | Gabriela Bustos |  |  |
| 338 | 1.4.3 | Hito: Planificar la migración de fichas electrónicas | milestone | 0d | 2013-09-16 | 2013-09-16 | 337 |  |  | 352d | 0d | start no earlier than 2013-09-16 | A definir | Carlos Peñaloza | Néstor Vergano |  |
| 339 | 1.4.4 | Desarrollo de fichas electrónicas |  | 1d? | 2013-09-16 | 2013-09-16 | 338 |  |  | 352d | 0d |  | A definir | Carlos Peñaloza |  |  |
| 340 | 1.4.5 | Migración de Fichas Electrónicas de Rhol |  | 1d? | 2013-09-17 | 2013-09-17 | 339 |  |  | 352d |  |  | A definir |  |  |  |
| 341 | 1.5 | Hito: Etapa 1.1 Migración de fichas electrónicas finalziada | milestone | 0d | 2013-09-17 | 2013-09-17 | 335 |  |  | 352d |  |  | A definir |  |  |  |
| 342 | 1.6 | **Etapa 2 - Organización, Administración de personal, Nómina, Simulaciones** |  | 604d? | 2012-02-03 A | 2014-08-01 |  | 72% | 167.38d? | 108d | 0d |  | 01/08/14 |  |  |  |
| 343 | 1.6.1 | Hito: Planificación detallada Nomina Finalizada | milestone | 0d | 2013-02-28 A | 2013-02-28 A |  | 100% |  |  |  | start no earlier than 2013-02-28 | A definir |  |  | ܁# |
| 344 | 1.6.2 | Hito: Validación de Cronograma con el Usuario | milestone | 0d | 2013-08-01 A | 2013-08-01 A |  | 100% |  |  |  | start no earlier than 2013-08-01 | A definir | Néstor Vergano |  |  |
| 345 | 1.6.3 | **Fase 1 - Organización, Administración de Personal y Nomina** |  | 569d? | 2012-02-03 A | 2014-06-11 |  | 73% | 150.86d? | 108d | 0d |  | 11/06/14 |  |  |  |
| 346 | 1.6.3.1 | **Análisis y Diseño** |  | 163d? | 2013-03-04 A | 2013-10-31 A |  | 100% |  |  |  |  | A definir |  |  |  |
| 347 | 1.6.3.1.1 | Reunión - Gestión de Identidades | milestone | 0d | 2013-05-28 A | 2013-05-28 A |  | 100% |  |  |  | start no earlier than 2013-05-28 | A definir | Néstor Vergano |  | ܁# |

Notes:
- 322: Text3: [28]UID=RN*Z@72B.B`DR&86^9\]:ME0[9]PUN=60634[9]TUID=1208[12]PUID=5036028
- 323: Text3: [28]UID=RNALX,D9WD(TB-%OT>3_V79P[9]PUN=60634[9]TUID=2287[12]PUID=5036028
- 324: Text3: [28]UID=RN#`8TM@R!J4"X8.3S'+0C<P[9]PUN=60634[9]TUID=2288[12]PUID=5036028
- 325: Text3: [28]UID=RNV^LOMH:#]T*Y&X1R;-KDC`[9]PUN=60634[9]TUID=2289[12]PUID=5036028
- 326: Text3: [28]UID=RN,"%B#:#%M4*'?J'E86:]-@[9]PUN=60634[9]TUID=2290[12]PUID=5036028
- 327: Text3: [28]UID=RNOM'UH)TOXD.XC`<:^A434`[9]PUN=60634[9]TUID=2539[12]PUID=5036028
- 328: Text3: [28]UID=RN*O\^+RL[[DR:]O8\&CDB_P[9]PUN=60634[9]TUID=2659[12]PUID=5036028
- 329: Text3: [28]UID=RNK)Y4/!1OOD2<UE0#L@-OG`[9]PUN=60634[9]TUID=2660[12]PUID=5036028
- 330: Text3: [28]UID=RNE_9,.(-EI4J;9&(G^X]1)P[9]PUN=60634[9]TUID=2538[12]PUID=5036028
- 331: Text3: [28]UID=RN":'C8K'#+TF%V=&Z+M7(T0[9]PUN=60634[9]TUID=1207[12]PUID=5036028
- 332: Text3: [28]UID=RN&[\+[>-C\4&&-NI6_RWBL@[9]PUN=60634[9]TUID=2657[12]PUID=5036028
- 333: Text3: [28]UID=RNCDYPDR0`JD&ZB7*2DA^;^P[9]PUN=60634[9]TUID=2652[12]PUID=5036028
- 334: Text3: [28]UID=RN>TK.6T%&>T.J<ZKS,'J[,0[9]PUN=60634[8]TUID=525[12]PUID=5036028
- 335: Text3: [28]UID=RN*VQZ\/7-T$"A5$)J&!(50`[9]PUN=60634[9]TUID=2541[12]PUID=5036028
- 336: Text3: [28]UID=RN+\PU^D'Z4TVO8;D&5A%PHP[9]PUN=60634[9]TUID=2590[12]PUID=5036028
- 337: Text3: [28]UID=RN(7'#]J`_ADJ3;SBX#WZIQ0[9]PUN=60634[9]TUID=2655[12]PUID=5036028
- 338: Text3: [28]UID=RNBC">Y0*SN4N,5)GO76R<#0[9]PUN=60634[9]TUID=2543[12]PUID=5036028
- 339: Text3: [28]UID=RN:/,<R8CL84&HX+AGY+#V_0[9]PUN=60634[9]TUID=2656[12]PUID=5036028
- 340: Text3: [28]UID=RNH2502M>G+T"Y<+\VG6KD]P[9]PUN=60634[9]TUID=2666[12]PUID=5036028
- 341: Text3: [28]UID=RN1[7BMFZJZ$N\^R,;O12E!`[9]PUN=60634[9]TUID=2542[12]PUID=5036028
- 342: Text3: [28]UID=RNUIX.=]?)HD*%%%0XRS9Q9@[9]PUN=60634[9]TUID=1689[12]PUID=5036028
- 343: Text3: [28]UID=RN)N>S9+&JU4J.>9P0U(O\40[9]PUN=60634[9]TUID=1690[12]PUID=5036028
- 344: Text3: [28]UID=RN!TKY%X4)_4*':-`K+$^(R`[9]PUN=60634[9]TUID=2143[12]PUID=5036028
- 345: Text3: [28]UID=RN"/'5EWF@[TNZK=:4Y;#L7@[9]PUN=60634[9]TUID=1691[12]PUID=5036028
- 346: Text3: [28]UID=RN.6HCED76@T22:=.+!V+&7P[9]PUN=60634[9]TUID=1692[12]PUID=5036028
- 347: Text3: [28]UID=RN8HXM)'D$Z$:OYL[&9.':O`[9]PUN=60634[9]TUID=2316[12]PUID=5036028

| ID | WBS | Task | Type | Duration | Start | Finish | Predecessors | Complete | Constraint | Fin Ajustado | Responsable | Colaboradores | Reporte Semanal |
| --- | --- | --- | --- | --- | --- | --- | --- | --- | --- | --- | --- | --- | --- |
| 348 | 1.6.3.1.2 | **Workshop** |  | 13.75d | 2013-03-04 A | 2013-03-21 A |  | 100% |  | A definir |  |  |  |
| 349 | 1.6.3.1.2.1 | Workshop Organización y Administración de Personal |  | 1d | 2013-03-04 A | 2013-03-04 A |  | 100% | start no earlier than 2013-03-04 | A definir | Diego Prieto | Gabriela Bustos | ܁# |
| 350 | 1.6.3.1.2.2 | Workshop Nómina |  | 11.75d | 2013-03-06 A | 2013-03-21 A |  | 100% | finish no earlier than 2013-03-21 | A definir | Diego Prieto | Gabriela Bustos | ܁# |
| 351 | 1.6.3.1.3 | Análisis de requerimientos de Organización y Administración de Personal |  | 30d | 2013-03-05 A | 2013-04-19 A | 349 | 100% |  | A definir | Laura Fernández | Diego Prieto | ܁# |
| 352 | 1.6.3.1.4 | Análisis de requerimientos de Gestión de Identidades |  | 25d | 2013-04-22 A | 2013-05-28 A | 347FF | 100% |  | A definir | Laura Fernández |  | ܁# |
| 353 | 1.6.3.1.5 | Generar Reunión (Nómina/Vacaciones/Contabilidad PS) | milestone | 0d | 2013-06-07 A | 2013-06-07 A |  | 100% | start no earlier than 2013-06-07 | A definir | Sebastián Herrera |  | ܁# |
| 354 | 1.6.3.1.6 | Análisis de requerimientos de Nómina |  | 50d | 2013-03-21 A | 2013-06-06 A | 350 | 100% |  | A definir | Sebastián Herrera, Magdalena Museli | Diego Prieto | ܁# |
| 355 | 1.6.3.1.7 | Análisis de requerimientos de interfaces |  | 16d | 2013-05-16 A | 2013-06-07 A | 354 | 100% |  | A definir | Sebastián Herrera, Magdalena Museli | Diego Prieto | ܁# |
| 356 | 1.6.3.1.8 | Relevamiento (Contratados) |  | 18d | 2013-06-07 A | 2013-07-04 A |  | 100% | start no earlier than 2013-05-23 | A definir | Sebastián Herrera |  | ܁# |
| 357 | 1.6.3.1.9 | Relevamiento de Interfaces de Integraciones |  | 1d? | 2013-06-24 A | 2013-06-24 A |  | 100% | start no earlier than 2013-06-24 | A definir | Néstor Vergano / Carlos Peñaloza |  | ܁# |
| 358 | 1.6.3.1.10 | Análisis de requerimientos de reportes de legales y de gestión |  | 10d | 2013-06-13 A | 2013-07-01 A | 357 | 100% |  | A definir | Sebastián Herrera, Magdalena Museli | Diego Prieto | ܁# |
| 359 | 1.6.3.1.11 | Hito: Confección de ERS de Gestión de Identidades | milestone | 0d | 2013-05-28 A | 2013-05-28 A | 347 | 100% |  | A definir | Sebastián Herrera, Magdalena Museli |  | ܁# |
| 360 | 1.6.3.1.12 | Hito: Confección del ERS Organización y Administración de Personal Finalizados | milestone | 0d | 2013-04-19 A | 2013-04-19 A | 351 | 100% |  | A definir | Diego Prieto / Gabriela Bustos |  | ܁# |
| 361 | 1.6.3.1.13 | Hito: Confección de ERS Nómina finalizados | milestone | 0d | 2013-06-06 A | 2013-06-06 A | 354 | 100% |  | A definir | Diego Prieto / Gabriela Bustos |  | ܁# |
| 362 | 1.6.3.1.14 | Hito: Confección de ERS Interfaces Legales finalizados | milestone | 0d | 2013-06-07 A | 2013-06-07 A | 355 | 100% |  | A definir | Diego Prieto / Gabriela Bustos |  | ܁# |
| 363 | 1.6.3.1.15 | Hito: Confección de ERS Reportes Legales y de Gestión finalizados | milestone | 0d | 2013-07-19 A | 2013-07-19 A | 358 | 100% | start no earlier than 2013-07-19 | A definir | Diego Prieto / Gabriela Bustos |  | ܁# |
| 364 | 1.6.3.1.16 | Hito: Confección de ERS de Contratados finalizados | milestone | 0d | 2013-07-19 A | 2013-07-19 A | 356 | 100% | start no earlier than 2013-07-19 | A definir |  |  | ܁# |
| 365 | 1.6.3.1.17 | Hito: Aceptación del usuario del ERS de Gestión de Identidades | milestone | 0d | 2013-06-14 A | 2013-06-14 A | 359 | 100% | start no earlier than 2013-06-14 | A definir | Pablo Lopez Gutierrez | Ignacio Alonso, Laura Fernandez | ܁# |
| 366 | 1.6.3.1.18 | Hito: Aceptación del usuario del ERS Organización y Adm de Personal | milestone | 0d | 2013-04-19 A | 2013-04-19 A | 360 | 100% |  | A definir | Laura Fernández | Carolina Bayer | ܁# |
| 367 | 1.6.3.1.19 | Hito: Aceptación del usuario del ERS de Nómina | milestone | 0d | 2013-06-14 A | 2013-06-14 A | 361 | 100% | start no earlier than 2013-06-14 | A definir | Sebastián Herrera, Magdalena Museli |  | ܁# |
| 368 | 1.6.3.1.20 | Hito: Aceptación del usuario del ERS de Interfaces Legales | milestone | 0d | 2013-06-14 A | 2013-06-14 A | 362 | 100% | start no earlier than 2013-06-14 | A definir | Sebastián Herrera, Magdalena Museli |  | ܁# |
| 369 | 1.6.3.1.21 | Hito: Aceptación del usuario del ERS de Reportes Legales y Gestión | milestone | 0d | 2013-08-09 A | 2013-08-09 A | 363FS+5d | 100% | start no earlier than 2013-08-09 | A definir | Sebastián Herrera, Magdalena Museli |  | ܁# |
| 370 | 1.6.3.1.22 | Hito: Aceptación del usuario del ERS de Contratados | milestone | 0d | 2013-09-27 A | 2013-09-27 A | 364FS+5d, 402 | 100% | start no earlier than 2013-09-27 | A definir | Sebastián Herrera, Magdalena Museli |  | ܁# |
| 371 | 1.6.3.1.23 | **Relevamiento de Interfaces** |  | 15d | 2013-09-03 A | 2013-09-24 A |  | 100% |  | A definir |  |  |  |
| 372 | 1.6.3.1.23.1 | Relevamiento Interfaz Directorio Global finalizado | milestone | 0d | 2013-09-24 A | 2013-09-24 A |  | 100% | start no earlier than 2013-09-24 | A definir | Néstor Vergano | Flavia Piatti | ܁L |
| 373 | 1.6.3.1.23.2 | Relevamiento Interfaz Lotus Note finalizado | milestone | 0d | 2013-09-05 A | 2013-09-05 A |  | 100% | start no earlier than 2013-09-05 | A definir | Néstor Vergano | Flavia Piatti | ܁L |
| 374 | 1.6.3.1.23.3 | Relevamiento Interfaz Seguridad Informática finalizado | milestone | 0d | 2013-09-03 A | 2013-09-03 A |  | 100% | start no earlier than 2013-09-03 | A definir | Néstor Vergano | Flavia Piatti | ܁L |
| 375 | 1.6.3.1.24 | Hito: Relavamiento de Interfaces finalizado | milestone | 0d | 2013-10-31 A | 2013-10-31 A | 371 | 100% | start no earlier than 2013-10-31 | A definir | Néstor Vergano |  |  |
| 376 | 1.6.3.2 | Hito: Análisis y diseño Finalizado | milestone | 0d | 2013-10-31 A | 2013-10-31 A | 346 | 100% |  | A definir |  |  |  |

Notes:
- 348: Text3: [28]UID=RNIZ"RWI%3M$.#%DV6VAV6W@[9]PUN=60634[9]TUID=1693[12]PUID=5036028
- 349: Text3: [28]UID=RN8$%)BH6DEDJJN,4@.82!-@[9]PUN=60634[9]TUID=1694[12]PUID=5036028
- 350: Text3: [28]UID=RN7YI)Z`O['T>XY<5O\\U1.P[9]PUN=60634[9]TUID=1695[12]PUID=5036028
- 351: Text3: [28]UID=RNE;*7CLTO64VL28^:=L3[,P[9]PUN=60634[9]TUID=1696[12]PUID=5036028
- 352: Text3: [28]UID=RN+*_0<=&MDTVW$8]&VHWL3`[9]PUN=60634[9]TUID=2133[12]PUID=5036028
- 353: Text3: [28]UID=RN8*.(<3?5/D^,<U#'SQE5P`[9]PUN=60634[9]TUID=2317[12]PUID=5036028
- 354: Text3: [28]UID=RNPRKL++I3Y4B-P\[!2%NL^0[9]PUN=60634[9]TUID=1697[12]PUID=5036028
- 355: Text3: [28]UID=RNQGC7P&7`U4>FU'`RF?%C;@[9]PUN=60634[9]TUID=1698[12]PUID=5036028
- 356: Text3: [28]UID=RNDM:4C-L4@4>VP33F90OO!@[9]PUN=60634[9]TUID=2319[12]PUID=5036028
- 357: Text3: [28]UID=RN[96[CF,_6T6;MZO'1)/F-0[9]PUN=60634[9]TUID=2320[12]PUID=5036028
- 358: Text3: [28]UID=RN'(6_<JJA-$F+</FMI&G:HP[9]PUN=60634[9]TUID=1699[12]PUID=5036028
- 359: Text3: [28]UID=RN7FCG^T=#K4Z).P/I,1DF1P[9]PUN=60634[9]TUID=2325[12]PUID=5036028
- 360: Text3: [28]UID=RNS0-35BYO@4:_'7PV1M:KA@[9]PUN=60634[9]TUID=1700[12]PUID=5036028
- 361: Text3: [28]UID=RN]:[K)QL]_TJ&M0<T(YU=_0[9]PUN=60634[9]TUID=1701[12]PUID=5036028
- 362: Text3: [28]UID=RN4V*#V:L0)T&PK#Z1!D=U0`[9]PUN=60634[9]TUID=1702[12]PUID=5036028
- 363: Text3: [28]UID=RN7/[FS>`V6D&QSAXNTGKJK`[9]PUN=60634[9]TUID=1703[12]PUID=5036028
- 364: Text3: [28]UID=RNF6#18=/:[DFK;*T"3-9GUP[9]PUN=60634[9]TUID=2433[12]PUID=5036028
- 365: Text3: [28]UID=RN8=!(2)B8J4"4G\@V9<;M0`[9]PUN=60634[9]TUID=2326[12]PUID=5036028
- 366: Text3: [28]UID=RN6.PDQ&+3E$V-<T5)R;\=Y@[9]PUN=60634[9]TUID=1704[12]PUID=5036028
- 367: Text3: [28]UID=RN9B2&W&9&@T>QP[&73_6@A@[9]PUN=60634[9]TUID=1705[12]PUID=5036028
- 368: Text3: [28]UID=RNL@H?*R/Z9TB8Z^IQ!##QC0[9]PUN=60634[9]TUID=1706[12]PUID=5036028
- 369: Text3: [28]UID=RN\N`&S[@%.$ZC+E/(7G4+5@[9]PUN=60634[9]TUID=1707[12]PUID=5036028
- 370: Text3: [28]UID=RNY\<QNBR(1$JNH(J/D"R!KP[9]PUN=60634[9]TUID=2434[12]PUID=5036028
- 371: Text3: [28]UID=RND>C`R*7OB$V9'/"$IFW.#`[9]PUN=60634[9]TUID=2661[12]PUID=5036028
- 372: Text3: [28]UID=RN*T\&X["N\D^18-0-^=R!_@[9]PUN=60634[9]TUID=2664[12]PUID=5036028
- 373: Text3: [28]UID=RN"^#W>['44$:IXU[+>&Y95`[9]PUN=60634[9]TUID=2662[12]PUID=5036028
- 374: Text3: [28]UID=RN9&ZZM'VSH$*E4+_^Q)^_P0[9]PUN=60634[9]TUID=2663[12]PUID=5036028
- 375: Text3: [28]UID=RNQ1?T9#YAP4>\UO^$;\@#>0[9]PUN=60634[9]TUID=2665[12]PUID=5036028
- 376: Text3: [28]UID=RNUK0%M9BZ;$64Y[EN#^H'N0[9]PUN=60634[9]TUID=1708[12]PUID=5036028

| ID | WBS | Task | Type | Duration | Start | Finish | Predecessors | Complete | Remaining | Total slack | Free slack | Constraint | Fin Ajustado | Responsable | Colaboradores | Reporte Semanal |
| --- | --- | --- | --- | --- | --- | --- | --- | --- | --- | --- | --- | --- | --- | --- | --- | --- |
| 377 | 1.6.3.3 | **Armado de Casos de Pruebas** |  | 38d | 2013-09-16 A | 2013-11-08 A |  | 100% |  |  |  |  | A definir |  |  |  |
| 378 | 1.6.3.3.1 | Casos de Prueba de Administración |  | 15d | 2013-09-16 A | 2013-10-04 A |  | 100% |  |  |  | start no earlier than 2013-09-16 | A definir | Adriana Espinar |  |  |
| 379 | 1.6.3.3.2 | Validación de Casos de Prueba de Administración |  | 5d | 2013-10-29 A | 2013-11-04 A | 378 | 100% |  |  |  | start no earlier than 2013-10-29 | A definir | Adriana Espinar |  |  |
| 380 | 1.6.3.3.3 | Identificación de tipos de Liquidaciones a Probar | milestone | 0d | 2013-09-16 A | 2013-09-16 A |  | 100% |  |  |  | start no earlier than 2013-09-16 | A definir |  |  |  |
| 381 | 1.6.3.3.4 | Ejecución de Paralelos internos |  | 33d | 2013-09-16 A | 2013-10-31 A |  | 100% |  |  |  | start no earlier than 2013-09-16 | A definir | Adriana Espinar |  |  |
| 382 | 1.6.3.3.5 | Validación de Casos de Prueba de Nóminas |  | 5d | 2013-11-01 A | 2013-11-08 A | 381 | 100% |  |  |  |  | A definir | Adriana Espinar |  |  |
| 383 | 1.6.3.4 | Hito: Armado de Casos de Pruebas Finalizados |  | 1d? | 2012-02-03 A | 2012-02-03 A |  | 100% |  |  |  |  | A definir |  |  |  |
| 384 | 1.6.3.5 | **Plan de Comunicación - GC** |  | 90d | 2013-07-08 A | 2013-11-14 |  | 37% | 56.7d | 244d | 0d |  | A definir |  |  |  |
| 385 | 1.6.3.5.1 | Análisis y Entendimiento de Nómina |  | 37d | 2013-07-08 A | 2013-08-29 | 367 | 90% | 3.7d | 244d | 0d | start no earlier than 2013-07-07 | A definir | Florencia Bozzini | Gabriela Bustos |  |
| 386 | 1.6.3.5.2 | Análisis y Entendimiento de Gestión de Identidades |  | 10d | 2013-08-30 | 2013-09-12 | 385 |  |  | 244d | 0d |  | A definir | Florencia Bozzini | Gabriela Bustos |  |
| 387 | 1.6.3.5.3 | Análisis y Entendimiento de Organización y Adm de Personal |  | 10d | 2013-09-13 | 2013-09-26 | 386 |  |  | 244d | 0d |  | A definir | Florencia Bozzini | Gabriela Bustos |  |
| 388 | 1.6.3.5.4 | Análisis y Entendimiento de Reportes Legales y Gestión |  | 10d | 2013-09-27 | 2013-10-10 | 387 |  |  | 244d | 0d |  | A definir | Florencia Bozzini |  |  |
| 389 | 1.6.3.5.5 | Análisis y Entendimiento de Contratados |  | 10d | 2013-10-11 | 2013-10-25 | 388 |  |  | 244d | 0d |  | A definir | Florencia Bozzini |  |  |
| 390 | 1.6.3.5.6 | Armado de documentación |  | 5d | 2013-10-28 | 2013-11-01 | 387, 386, 385, 389, 388 |  |  | 244d | 0d |  | A definir | Florencia Bozzini |  |  |
| 391 | 1.6.3.5.7 | Validación de documentación |  | 5d | 2013-11-04 | 2013-11-11 | 390 |  |  | 244d | 0d |  | A definir | Florencia Bozzini |  |  |
| 392 | 1.6.3.5.8 | Diseño del Plan de Comunicación |  | 3d | 2013-11-12 | 2013-11-14 | 391 |  |  | 244d | 0d |  | A definir | Florencia Bozzini |  |  |
| 393 | 1.6.3.5.9 | Hito: Validación del Plan de Comunicación finalizada | milestone | 0d | 2013-11-14 | 2013-11-14 | 392 |  |  | 244d |  |  | A definir | Florencia Bozzini |  |  |
| 394 | 1.6.3.6 | Hito: Plan de Comunicación finalizado | milestone | 0d | 2013-11-14 | 2013-11-14 | 384 |  |  | 244d |  |  | A definir | Florencia Bozzini |  |  |
| 395 | 1.6.3.7 | **Procesos** |  | 215d | 2013-06-07 A | 2014-04-28 A |  | 100% |  |  |  |  | 28/04/14 |  |  |  |
| 396 | 1.6.3.7.1 | **Procesos Contratados** |  | 50d | 2013-06-07 A | 2013-08-21 A |  | 100% |  |  |  |  | A definir |  |  |  |
| 397 | 1.6.3.7.1.1 | Entregable Interno - Diagnostico y Mejoras de Contratados |  | 2d | 2013-07-05 A | 2013-07-08 A | 398 | 100% |  |  |  |  | A definir | Gustavo Rosemberg | Néstor Vergano | ܁J |
| 398 | 1.6.3.7.1.2 | Relevamiento del proceso en el sistema en detalle de Contratados |  | 18d | 2013-06-07 A | 2013-07-04 A |  | 100% |  |  |  | start no earlier than 2013-06-07 | A definir | Gustavo Rosemberg | Néstor Vergano | ܁J |
| 399 | 1.6.3.7.1.3 | Hito: Recepción del ERS de Contratados | milestone | 0d | 2013-07-31 A | 2013-07-31 A | 364 | 100% |  |  |  | start no earlier than 2013-07-29 | A definir | Néstor Vergano | Gustavo Rosemberg | ܁J |
| 400 | 1.6.3.7.1.4 | Diseño del proceso de Contratados |  | 5d | 2013-07-31 A | 2013-08-06 A | 399 | 100% |  |  |  |  | A definir | Gustavo Rosemberg | Néstor Vergano | ܁J |
| 401 | 1.6.3.7.1.5 | Modificación del Diseño del proceso de Contratados |  | 2d | 2013-08-20 A | 2013-08-21 A | 400 | 100% |  |  |  | start no earlier than 2013-08-20 | A definir | Gustavo Rosemberg | Néstor Vergano | ܁J |
| 402 | 1.6.3.7.1.6 | Hito: Aprobación del diseño de Procesos de Contratados finalizado | milestone | 0d | 2013-08-13 A | 2013-08-13 A | 401 | 100% |  |  |  | start no earlier than 2013-08-13 | A definir | Gustavo Rosemberg | Néstor Vergano | ܁J |
| 403 | 1.6.3.7.2 | Hito: Procesos de Contratados finalizado | milestone | 0d | 2013-08-21 A | 2013-08-21 A | 396 | 100% |  |  |  |  | A definir | Gustavo Rosemberg | Néstor Vergano | ܁J |
| 404 | 1.6.3.7.3 | Relevamiento Alta de Personal |  | 5d | 2013-10-22 A | 2013-10-28 A | 730 | 100% |  |  |  |  | A definir | Gustavo Rosemberg | Néstor Vergano |  |
| 405 | 1.6.3.7.4 | Relevamiento Liquidación |  | 4d | 2013-10-29 A | 2013-11-01 A | 404 | 100% |  |  |  |  | A definir | Gustavo Rosemberg | Néstor Vergano |  |
| 406 | 1.6.3.7.5 | Relevamiento de Beneficios al Personal |  | 3d | 2013-11-04 A | 2013-11-06 A | 405 | 100% |  |  |  |  | A definir | Gustavo Rosemberg | Néstor Vergano |  |
| 407 | 1.6.3.7.6 | Relevamiento de Novedades y Administración del Personal |  | 10d | 2013-11-07 A | 2013-11-20 A | 406 | 100% |  |  |  |  | A definir | Gustavo Rosemberg | Néstor Vergano |  |
| 408 | 1.6.3.7.7 | Relevamiento Baja del Personal |  | 2d | 2013-11-21 A | 2013-11-22 A | 407 | 100% |  |  |  |  | A definir | Gustavo Rosemberg | Néstor Vergano |  |
| 409 | 1.6.3.7.8 | Relevamiento atención consultas 6900 |  | 5d | 2013-11-26 A | 2013-12-02 A | 408 | 100% |  |  |  |  | A definir | Gustavo Rosemberg | Néstor Vergano |  |
| 410 | 1.6.3.7.9 | Entregable interno diagnóstico y mejoras |  | 4d | 2013-12-03 A | 2013-12-06 A | 409 | 100% |  |  |  |  | A definir | Gustavo Rosemberg | Néstor Vergano |  |
| 411 | 1.6.3.7.10 | Relevamiento del proceso en el sistema en detalle (ERS) |  | 4d | 2013-12-09 A | 2013-12-12 A | 410 | 100% |  |  |  |  | A definir | Gustavo Rosemberg | Néstor Vergano |  |
| 412 | 1.6.3.7.11 | Entregable diseño |  | 20d | 2013-12-13 A | 2014-01-13 A | 411 | 100% |  |  |  |  | A definir | Gustavo Rosemberg | Néstor Vergano |  |
| 413 | 1.6.3.7.12 | Modelado de ARI para publicar Claridad |  | 40d | 2014-02-24 A | 2014-04-28 A | 691FF | 100% |  |  |  |  | 28/04/14 | Gustavo Rosemberg | Néstor Vergano |  |
| 414 | 1.6.3.8 | Hito: Casos de Pruebas Definidos | milestone | 0d | 2012-02-03 A | 2012-02-03 A |  | 100% |  |  |  |  | A definir | Gustavo Rosemberg | Néstor Vergano |  |
| 415 | 1.6.3.9 | Hito: Modelo Aris finalizado | milestone | 0d | 2012-02-03 A | 2012-02-03 A |  | 100% |  |  |  |  | A definir | Gustavo Rosemberg | Néstor Vergano |  |

Notes:
- 377: Text3: [28]UID=RN@,`.S;\6/T&5Z)-=-ZRR&`[9]PUN=60634[9]TUID=2694[12]PUID=5036028
- 378: Text3: [28]UID=RN),@%BE(AOD63<+M$?`ORBP[9]PUN=60634[9]TUID=2699[12]PUID=5036028
- 379: Text3: [28]UID=RN71K.E^-OW$NM[?8?WWQP7P[9]PUN=60634[9]TUID=2698[12]PUID=5036028
- 380: Text3: [28]UID=RNY?`FIH\V>4BO1ULM<GC*!P[9]PUN=60634[9]TUID=2712[12]PUID=5036028
- 381: Text3: [28]UID=RNKS:U#IWG64>S4?D))A.620[9]PUN=60634[9]TUID=2697[12]PUID=5036028
- 382: Text3: [28]UID=RNGV^J:UC$+4.AZJ-+IUL]3@[9]PUN=60634[9]TUID=2696[12]PUID=5036028
- 383: Text3: [28]UID=RN!]2]TZI=HTJ_:D+?#U7"H@[9]PUN=60634[9]TUID=2695[12]PUID=5036028
- 384: Text3: [28]UID=RNF,C+YG4.&D:41N('3<X/,P[9]PUN=60634[9]TUID=2435[12]PUID=5036028
- 385: Text3: [28]UID=RN)@9:\7>M?D:M&[\@B!`RK@[9]PUN=60634[9]TUID=2452[12]PUID=5036028
- 386: Text3: [28]UID=RN)XNSQ0[D]D*\A0]"`1"MF@[9]PUN=60634[9]TUID=2436[12]PUID=5036028
- 387: Text3: [28]UID=RNIDYDR[BD;4B7:=0[V/\+4@[9]PUN=60634[9]TUID=2445[12]PUID=5036028
- 388: Text3: [28]UID=RNA2I11'*3S4V;V"\[%0@36P[9]PUN=60634[9]TUID=2466[12]PUID=5036028
- 389: Text3: [28]UID=RN>[L<`/_JAD:LQUVDQXUK?`[9]PUN=60634[9]TUID=2473[12]PUID=5036028
- 390: Text3: [28]UID=RN'@J;KN9?YT.^]U7?@Z1/40[9]PUN=60634[9]TUID=2474[12]PUID=5036028
- 391: Text3: [28]UID=RN09CBGQ;:-DF7*AM^N.8VUP[9]PUN=60634[9]TUID=2475[12]PUID=5036028
- 392: Text3: [28]UID=RNS6AZ"E9B&46K-_O^E194<`[9]PUN=60634[9]TUID=2476[12]PUID=5036028
- 393: Text3: [28]UID=RN)G&V++Z>&DRQH/,TV6HJZ`[9]PUN=60634[9]TUID=2477[12]PUID=5036028
- 394: Text3: [28]UID=RN9W2?-R$1"$*LW67(=`*2F`[9]PUN=60634[9]TUID=2441[12]PUID=5036028
- 395: Text3: [28]UID=RNAM[T=RDGQ$R\UJTV#[#3<0[9]PUN=60634[9]TUID=2217[12]PUID=5036028
- 396: Text3: [28]UID=RN:3\-^SHN#4:/\1\3$@'?H`[9]PUN=60634[9]TUID=2633[12]PUID=5036028
- 397: Text3: [28]UID=RN7UUO:T#WOT*;P.4#.BL9+P[9]PUN=60634[9]TUID=2635[12]PUID=5036028
- 398: Text3: [28]UID=RNX-FA]DCW5$VR;WE+\^MADP[9]PUN=60634[9]TUID=2636[12]PUID=5036028
- 399: Text3: [28]UID=RND@_1:7*-HTRTENG:MY?@)0[9]PUN=60634[9]TUID=2637[12]PUID=5036028
- 400: Text3: [28]UID=RN0I_GB;7/?D&-H\@836KR)0[9]PUN=60634[9]TUID=2638[12]PUID=5036028
- 401: Text3: [28]UID=RNRU[=PO6`N$29K6CTA7^QS`[9]PUN=60634[9]TUID=2648[12]PUID=5036028
- 402: Text3: [28]UID=RN>7ZY-%4=PD"(SN`!"C,0B@[9]PUN=60634[9]TUID=2639[12]PUID=5036028
- 403: Text3: [28]UID=RN7MVN3MC8?4VBAP^EX_>=(`[9]PUN=60634[9]TUID=2641[12]PUID=5036028
- 404: Text3: [28]UID=RN.]&AQACG?TVL>*6*F;!+6`[9]PUN=60634[9]TUID=2218[12]PUID=5036028
- 405: Text3: [28]UID=RNZZ&\'$HO`4JY2D]Z"39*,@[9]PUN=60634[9]TUID=2219[12]PUID=5036028
- 406: Text3: [28]UID=RN-$_;J/>,;$Z2B]L5JB$R+0[9]PUN=60634[9]TUID=2220[12]PUID=5036028
- 407: Text3: [28]UID=RNUQR,=N-PX$>C[QIT:_%!<P[9]PUN=60634[9]TUID=2221[12]PUID=5036028
- 408: Text3: [28]UID=RNE9`VI>`<DTZD*OHHX`(%%0[9]PUN=60634[9]TUID=2222[12]PUID=5036028
- 409: Text3: [28]UID=RNA2)`ZT\)RT*1$SWZT22YT@[9]PUN=60634[9]TUID=2223[12]PUID=5036028
- 410: Text3: [28]UID=RN++))"_IUK$^@*"[M<G)A-P[9]PUN=60634[9]TUID=2224[12]PUID=5036028
- 411: Text3: [28]UID=RNA&)>.1*Y>4V70@!&,U()@`[9]PUN=60634[9]TUID=2629[12]PUID=5036028
- 412: Text3: [28]UID=RN=M.)09GM64B,5O[9IO&[BP[9]PUN=60634[9]TUID=2630[12]PUID=5036028
- 413: Text3: [28]UID=RN-]6K<7&>,46D6>V/BX/I[`[9]PUN=60634[9]TUID=2631[12]PUID=5036028
- 414: Text3: [28]UID=RN6]Y<=<9-*T*B*""GX#4A\P[9]PUN=60634[9]TUID=2225[12]PUID=5036028
- 415: Text3: [28]UID=RNT^"2-HQGX4B&X)(;XMJG0`[9]PUN=60634[9]TUID=2226[12]PUID=5036028

| ID | WBS | Task | Type | Duration | Start | Finish | Predecessors | Complete | Remaining | Total slack | Free slack | Constraint | Fin Ajustado | Responsable | Colaboradores | Reporte Semanal |
| --- | --- | --- | --- | --- | --- | --- | --- | --- | --- | --- | --- | --- | --- | --- | --- | --- |
| 416 | 1.6.3.10 | **Análisis de Aplicaciones** |  | 25d | 2013-05-23 A | 2013-06-28 A |  | 100% |  |  |  |  | A definir |  |  |  |
| 417 | 1.6.3.10.1 | Análisis de Registro de puntos para pago de comisiones se refiere al pago de Productividad (Hoy CargaM4.exe) |  | 1d | 2013-05-23 A | 2013-05-23 A |  | 100% |  |  |  | start no earlier than 2013-05-23 | A definir | Gabriela Bustos | Carlos Peñaloza | ܁H |
| 418 | 1.6.3.10.2 | Análisis de Premio ABC (hoy ABC.exe) |  | 6d | 2013-06-19 A | 2013-06-28 A |  | 100% |  |  |  | start no earlier than 2013-06-19 | A definir | Gabriela Bustos | Carlos Peñaloza | ܁H |
| 419 | 1.6.3.10.3 | Análisis de Premios trimestrales (ABC trimestral y Zona Patagónica, un store proc que se invoca desde el FRL homónimo) |  | 6d | 2013-06-19 A | 2013-06-28 A |  | 100% |  |  |  | start no earlier than 2013-06-24 | A definir | Gabriela Bustos | Carlos Peñaloza | ܁H |
| 420 | 1.6.3.10.4 | Análisis de Ascensos automáticos: recompone el salario de los empleados de algunas categorías de convenio que cumplen un año más de antigüedad. |  | 6d | 2013-06-19 A | 2013-06-28 A |  | 100% |  |  |  |  | A definir | Gabriela Bustos | Carlos Peñaloza | ܁H |
| 421 | 1.6.3.10.5 | Análsis de Aumentos salariales (Trans - Salario.exe) |  | 6d | 2013-06-19 A | 2013-06-28 A |  | 100% |  |  |  |  | A definir | Gabriela Bustos | Carlos Peñaloza | ܁H |
| 422 | 1.6.3.11 | Hito: Análisis de aplicaciones finalizada | milestone | 0d | 2013-06-28 A | 2013-06-28 A | 416 | 100% |  |  |  |  | A definir |  |  |  |
| 423 | 1.6.3.12 | **Construcción** |  | 533d? | 2012-02-03 A | 2014-04-16 |  | 83% | 90.97d? | 144d |  |  | 16/04/14 |  |  |  |
| 424 | 1.6.3.12.1 | Elaboración Casos de Uso |  | 25d | 2013-07-01 A | 2013-08-05 A | 422 | 100% |  |  |  |  | A definir | Sebastián Herrera, Ignacio Alonso, Alfredo Gonzales | Adriana Espinar |  |
| 425 | 1.6.3.12.2 | **Organización y administración de personal** |  | 64d | 2013-05-09 A | 2013-08-09 A |  | 100% |  |  |  |  | A definir |  |  |  |
| 426 | 1.6.3.12.2.1 | Confección de Modelo de Datos Adm. Pers. & Org. |  | 5d | 2013-05-09 A | 2013-05-15 A | 366 | 100% |  |  |  | start no earlier than 2013-05-09 | A definir | Recurso 1 | Carlos Peñaloza | ܁$ |
| 427 | 1.6.3.12.2.2 | Adaptación Adm. Pers. & Org. |  | 45d | 2013-05-16 A | 2013-07-22 A | 426 | 100% |  |  |  |  | A definir | Oslvaldo Fernadez | Carlos Peñaloza | ܁$ |
| 428 | 1.6.3.12.2.3 | Ajustes de Adaptación Adm. Pers. & Org. |  | 4d | 2013-07-23 A | 2013-07-26 A | 427 | 100% |  |  |  |  | A definir |  |  |  |
| 429 | 1.6.3.12.2.4 | Procesos de altas masivas |  | 5d | 2013-08-05 A | 2013-08-09 A | 428 | 100% |  |  |  |  | A definir | Recurso 1 | Carlos Peñaloza |  |
| 430 | 1.6.3.12.2.5 | Gestión de Identidades |  | 5d | 2013-07-23 A | 2013-07-29 A | 427 | 100% |  |  |  |  | A definir | Oslvaldo Fernadez | Carlos Peñaloza | ܁$ |
| 431 | 1.6.3.12.3 | Hito: Construcción Organización y Administración de Personal Finalizada | milestone | 0d | 2013-08-09 A | 2013-08-09 A | 425 | 100% |  |  |  |  | A definir |  |  |  |
| 432 | 1.6.3.12.4 | **Tareas de nómina** |  | 533d? | 2012-02-03 A | 2014-04-16 |  | 82% | 96.67d? | 144d |  |  | 16/04/14 |  |  |  |
| 433 | 1.6.3.12.4.1 | **Estructuras de Cálculo y Pruebas** |  | 465d? | 2012-02-03 A | 2014-01-06 |  | 92% | 36.35d? | 212d | 0d |  | A definir |  |  |  |
| 434 | 1.6.3.12.4.1.1 | Confección de Modelo de datos de nómina y Estructura de Cálculo |  | 31d | 2013-06-14 A | 2013-07-31 A | 367 | 100% |  |  |  |  | A definir | Diego Prieto | Adriana Espinar | ܁$ |
| 435 | 1.6.3.12.4.1.2 | Estructura de Cálculo |  | 22d | 2013-08-01 A | 2013-09-02 A | 434 | 100% |  |  |  |  | A definir | Diego Prieto | Adriana Espinar | ܁$ |
| 436 | 1.6.3.12.4.1.3 | Pruebas unitarias y Ajustes de cálculo |  | 38d | 2013-08-01 A | 2013-09-24 A | 434 | 100% |  |  |  |  | A definir | Diego Prieto | Adriana Espinar | ܁$ |
| 437 | 1.6.3.12.4.1.4 | **Procesos especiales** |  | 465d? | 2012-02-03 A | 2014-01-06 |  | 89% | 51.67d? | 212d |  |  | A definir |  |  |  |
| 438 | 1.6.3.12.4.1.4.1 | Hito: Definir alcance final y esfuerzo | milestone | 0d | 2013-08-01 A | 2013-08-01 A |  | 100% |  |  |  | start no earlier than 2013-08-01 | A definir | Flavia Piatti; Néstor Vergano |  | ܁$ |
| 439 | 1.6.3.12.4.1.4.2 | Registro de puntos para pago de comisiones se refiere al pago de Productividad (Hoy CargaM4.exe) |  | 24d | 2013-10-07 A | 2013-11-11 A | 431, 417, 438 | 100% |  |  |  |  | A definir | Diego Prieto | Adriana Espinar | ܁$ |
| 440 | 1.6.3.12.4.1.4.3 | Premio ABC (hoy ABC.exe) - En Etapa de Evolución |  | 20d | 2013-11-12 | 2013-12-10 | 439, 418, 438 |  |  | 227d |  |  | A definir | Diego Prieto | Adriana Espinar | ܁$ |
| 441 | 1.6.3.12.4.1.4.4 | Generación de conector de premios ABC PN |  | 11d | 2013-10-25 A | 2013-11-11 A |  | 100% |  |  |  | start no earlier than 2013-10-25 | A definir |  |  | ܁$ |
| 442 | 1.6.3.12.4.1.4.5 | Premios trimestrales (ABC trimestral y Zona Patagónica, un store proc que se invoca desde el FRL homónimo) |  | 42d | 2013-10-25 A | 2013-12-30 A | 419, 438 | 100% |  |  |  | finish no earlier than 2013-12-30 | A definir | Diego Prieto | Adriana Espinar | ܁$ |

Notes:
- 416: Text3: [28]UID=RN9Z_R@3Z<7DN0C3"4]KQ^V`[9]PUN=60634[9]TUID=2355[12]PUID=5036028
- 417: Text3: [28]UID=RN1JN-GVM5U42'5CEG#F/)P`[9]PUN=60634[9]TUID=2359[12]PUID=5036028
- 418: Text3: [28]UID=RN`\/Q)WYWUT2]UA'P69*RC`[9]PUN=60634[9]TUID=2358[12]PUID=5036028
- 419: Text3: [28]UID=RN2Q2U/!,9WDR^EO"A#-306P[9]PUN=60634[9]TUID=2357[12]PUID=5036028
- 420: Text3: [28]UID=RN-W;7-L+;W$&'J]:R%I\2[0[9]PUN=60634[9]TUID=2368[12]PUID=5036028
- 421: Text3: [28]UID=RN"B]X+K7E^TZWI)_44/]<4@[9]PUN=60634[9]TUID=2370[12]PUID=5036028
- 422: Text3: [28]UID=RN&IX@\3MNLT*[=R'N\)73L0[9]PUN=60634[9]TUID=2356[12]PUID=5036028
- 423: Text3: [28]UID=RNR1X8V<>/3$J186_TI,I]$P[9]PUN=60634[9]TUID=1709[12]PUID=5036028
- 424: Text3: [28]UID=RN9OHV[K/<`$ZIX<J!M!TQ8P[9]PUN=60634[9]TUID=1710[12]PUID=5036028
- 425: Text3: [28]UID=RN<BC))`0J_$.0ZDSWOD:@T`[9]PUN=60634[9]TUID=1711[12]PUID=5036028
- 426: Text3: [28]UID=RNWVA>N"T+#$:".7HEYMT"O0[9]PUN=60634[9]TUID=1712[12]PUID=5036028
- 427: Text3: [28]UID=RN>;B^LB@Z3$F?>^ND7-]T#P[9]PUN=60634[9]TUID=1713[12]PUID=5036028
- 428: Text3: [28]UID=RNU`H#2I'"44*^1_R*.DZ62P[9]PUN=60634[9]TUID=2592[12]PUID=5036028
- 429: Text3: [28]UID=RNPR?F1]_KQT>'%&PZ`:M16`[9]PUN=60634[9]TUID=1714[12]PUID=5036028
- 430: Text3: [28]UID=RN^@.0&LWD<T2GN5,V<OLA!P[9]PUN=60634[9]TUID=1986[12]PUID=5036028
- 431: Text3: [28]UID=RN36A?<P_DWDNO+:8H3REQY`[9]PUN=60634[9]TUID=1716[12]PUID=5036028
- 432: Text3: [28]UID=RN;/-"1(P89$^?*$45_>EY9P[9]PUN=60634[9]TUID=1717[12]PUID=5036028
- 433: Text3: [28]UID=RNX[C'75,$LTZ$0IXZR-OK;0[9]PUN=60634[9]TUID=1718[12]PUID=5036028
- 434: Text3: [28]UID=RNL/;K;M+9!D:82WG]Y3YO7P[9]PUN=60634[9]TUID=1719[12]PUID=5036028
- 435: Text3: [28]UID=RNBQG0PZB48D:RJ\PI6;)D[P[9]PUN=60634[9]TUID=1720[12]PUID=5036028
- 436: Text3: [28]UID=RNTIWB'D5M*4.\,;4=#0!N,@[9]PUN=60634[9]TUID=2379[12]PUID=5036028
- 437: Text3: [28]UID=RNQ:K73VE]J$&)V1!(!_"-`P[9]PUN=60634[9]TUID=1721[12]PUID=5036028
- 438: Text3: [28]UID=RN"F3/S'JNI4F#>%M,ZU:<C`[9]PUN=60634[9]TUID=2607[12]PUID=5036028
- 439: Text3: [28]UID=RNS:*Z[?!C.TNBW,<V6NNUW`[9]PUN=60634[9]TUID=1722[12]PUID=5036028
- 440: Text3: [28]UID=RN7UN,\LL,8D*!0E=;MG3,'@[9]PUN=60634[9]TUID=2327[12]PUID=5036028
- 441: Text3: [28]UID=RN:UP<L[4""$R)^E[4:0/ENP[9]PUN=60634[9]TUID=2710[12]PUID=5036028
- 442: Text3: [28]UID=RN%/`V\X(%&4J%N@78$U;740[9]PUN=60634[9]TUID=2328[12]PUID=5036028

| ID | WBS | Task | Type | Duration | Start | Finish | Predecessors | Complete | Remaining | Total slack | Free slack | Constraint | Fin Ajustado | Responsable | Colaboradores | Reporte Semanal |
| --- | --- | --- | --- | --- | --- | --- | --- | --- | --- | --- | --- | --- | --- | --- | --- | --- |
| 443 | 1.6.3.12.4.1.4.6 | **Pagas Extas** |  | 5d | 2013-08-01 A | 2013-08-07 A | 434 | 100% |  |  |  |  | A definir |  |  |  |
| 444 | 1.6.3.12.4.1.4.6.1 | Bonos |  | 5d | 2013-08-01 A | 2013-08-07 A |  | 100% |  |  |  |  | A definir | Diego Prieto | Adriana Espinar | ܁$ |
| 445 | 1.6.3.12.4.1.4.6.2 | Temporada Veraniega |  | 5d | 2013-08-01 A | 2013-08-07 A |  | 100% |  |  |  |  | A definir | Diego Prieto | Adriana Espinar | ܁$ |
| 446 | 1.6.3.12.4.1.4.7 | Hito: Pagas Extras finalizada | milestone | 0d | 2013-08-07 A | 2013-08-07 A | 443 | 100% |  |  |  |  | A definir |  |  |  |
| 447 | 1.6.3.12.4.1.4.8 | **Pagas Semanales** |  | 10d | 2013-08-08 A | 2013-08-22 A | 446 | 100% |  |  |  |  | A definir |  |  |  |
| 448 | 1.6.3.12.4.1.4.8.1 | Anticipo de Haberes |  | 5d | 2013-08-08 A | 2013-08-14 A |  | 100% |  |  |  |  | A definir | Diego Prieto | Adriana Espinar | ܁$ |
| 449 | 1.6.3.12.4.1.4.8.2 | Anticipo de vacaciones |  | 5d | 2013-08-15 A | 2013-08-22 A | 448 | 100% |  |  |  |  | A definir | Diego Prieto | Adriana Espinar | ܁$ |
| 450 | 1.6.3.12.4.1.4.8.3 | Liquidación de Bajas |  | 5d | 2013-08-08 A | 2013-08-14 A |  | 100% |  |  |  |  | A definir | Diego Prieto | Adriana Espinar | ܁$ |
| 451 | 1.6.3.12.4.1.4.9 | Hito: Pagas Semanales finalizada | milestone | 0d | 2013-08-22 A | 2013-08-22 A | 447 | 100% |  |  |  |  | A definir |  |  | ܁$ |
| 452 | 1.6.3.12.4.1.4.10 | Ascensos automáticos: recompone el salario de los empleados de algunas categorías de convenio que cumplen un año más de antigüedad. |  | 18d | 2013-10-07 A | 2013-10-31 A | 451 | 100% |  |  |  |  | A definir | Diego Prieto;Leandro Lomonaco | Adriana Espinar | ܁$ |
| 453 | 1.6.3.12.4.1.4.11 | Vacaciones: Pago de Plus Anual, Cta Cte Saldo Cabecera |  | 5d | 2013-08-27 A | 2013-09-02 A | 452 | 100% |  |  |  |  | A definir | Diego Prieto;Leandro Lomonaco | Adriana Espinar | ܁$ |
| 454 | 1.6.3.12.4.1.4.12 | Aumentos salariales (Trans) |  | 40d | 2013-10-29 A | 2013-12-30 A | 453, 421 | 100% |  |  |  | finish no earlier than 2013-12-30 | A definir | Diego Prieto | Adriana Espinar | ܁$ |
| 455 | 1.6.3.12.4.1.4.13 | Proceso de eliminación de una/s liquidación/es y su/s contabilidad/es |  | 2d | 2013-09-05 A | 2013-09-06 A | 454 | 100% |  |  |  |  | A definir | Diego Prieto;Leandro Lomonaco | Adriana Espinar | ܁$ |
| 456 | 1.6.3.12.4.1.4.14 | Transferencia automática de acumulados para un empleado que cambia de Empresa (y Período) |  | 10d | 2013-10-28 A | 2013-11-11 A | 455 | 100% |  |  |  | start no earlier than 2013-10-28 | A definir | Diego Prieto;Leandro Lomonaco | Adriana Espinar | ܁$ |
| 457 | 1.6.3.12.4.1.4.15 | **Recibos históricos: (Para el 2014)** |  | 465d? | 2012-02-03 A | 2014-01-06 |  | 33% | 310d? | 212d | 0d |  | A definir |  |  |  |
| 458 | 1.6.3.12.4.1.4.15.1 | Hito: Identificar el alcance de Recibos Históricos | milestone | 0d | 2013-08-30 A | 2013-08-30 A |  | 100% |  |  |  | start no earlier than 2013-08-30 | A definir | Adriana Espinar | Carlos Peñaloza | ܁$ |
| 459 | 1.6.3.12.4.1.4.15.2 | Recupero inicial de la información |  | 1d? | 2012-02-03 A | 2012-02-03 A |  | 100% |  |  |  |  | A definir | Carlos Peñaloza | Adriana Espinar | ܁$ |
| 460 | 1.6.3.12.4.1.4.15.3 | Hito: Identificar las necesidades para la obtención de Recibos Históricos | milestone | 0d | 2013-12-06 A | 2013-12-06 A |  | 100% |  |  |  | start no earlier than 2013-12-06 | A definir | Ana Parimbelli |  |  |
| 461 | 1.6.3.12.4.1.4.15.4 | Hito: Estimar la solución | milestone | 0d | 2013-12-13 A | 2013-12-13 A | 460 | 100% |  |  |  | start no earlier than 2013-12-13 | A definir | Flavia Piatti |  |  |
| 462 | 1.6.3.12.4.1.4.15.5 | Visualización de un recibo |  | 1d? | 2014-01-06 | 2014-01-06 | 461 |  |  | 212d |  | start no earlier than 2014-01-04 | A definir | Carlos Peñaloza | Adriana Espinar | ܁$ |
| 463 | 1.6.3.12.4.1.4.15.6 | Impresión de recibos |  | 1d? | 2014-01-06 | 2014-01-06 |  |  |  | 212d |  | start no earlier than 2014-01-06 | A definir | Carlos Peñaloza | Adriana Espinar | ܁$ |
| 464 | 1.6.3.12.4.1.4.16 | Hito: Recibos históricos finalizado | milestone | 0d | 2014-01-06 | 2014-01-06 | 457 |  |  | 212d |  |  | A definir |  |  |  |
| 465 | 1.6.3.12.4.1.4.17 | Fondo para fallo de caja |  | 10d | 2013-09-12 A | 2013-09-25 A |  | 100% |  |  |  | start no earlier than 2013-09-12 | A definir | Diego Prieto;Leandro Lomonaco | Adriana Espinar | ܁$ |
| 466 | 1.6.3.12.4.1.4.18 | Ajustes (retroactividad) |  | 1d | 2013-09-26 A | 2013-09-26 A | 465 | 100% |  |  |  |  | A definir | Diego Prieto;Leandro Lomonaco | Adriana Espinar | ܁$ |
| 467 | 1.6.3.12.4.1.4.19 | Carga masiva de datos en tablas de ajustes |  | 3d | 2013-10-28 A | 2013-10-30 A | 466 | 100% |  |  |  | start no earlier than 2013-10-27 | A definir | Diego Prieto;Leandro Lomonaco | Adriana Espinar | ܁$ |
| 468 | 1.6.3.12.4.1.4.20 | Hito: Definición de tablas finalizada | milestone | 0d | 2013-11-28 | 2013-11-28 | 467 |  |  | 234d | 1d | start no earlier than 2013-11-28 | A definir | Ignacio Alonso |  | ܁$ |
| 469 | 1.6.3.12.4.1.4.21 | Setear auditoría en tablas seleccionadas |  | 2d | 2013-11-29 | 2013-12-02 | 468 |  |  | 233d |  | start no earlier than 2013-11-29 | A definir | Diego Prieto | Adriana Espinar | ܁$ |
| 470 | 1.6.3.12.4.2 | Hito: Construcción de estructuras de Cálculos y Pruebas finalizados | milestone | 0d | 2014-01-06 | 2014-01-06 | 433 |  |  | 212d |  |  | A definir |  |  |  |

Notes:
- 443: Text3: [28]UID=RNYB2`$IN9+4ZI^SZ60QO^FP[9]PUN=60634[9]TUID=2330[12]PUID=5036028
- 444: Text3: [28]UID=RN?N%WOG],^$*-B*RP4FZ96`[9]PUN=60634[9]TUID=1723[12]PUID=5036028
- 445: Text3: [28]UID=RNTZN^%)>>MDZLM7O/Y(=&KP[9]PUN=60634[9]TUID=2331[12]PUID=5036028
- 446: Text3: [28]UID=RNIAM@H7N`.4BJ8??#G`M3^`[9]PUN=60634[9]TUID=2608[12]PUID=5036028
- 447: Text3: [28]UID=RN=03^::T'VDB@75QE@F;3Z0[9]PUN=60634[9]TUID=2332[12]PUID=5036028
- 448: Text3: [28]UID=RN^/L=C>UEZ$>3,GK2=#MARP[9]PUN=60634[9]TUID=1725[12]PUID=5036028
- 449: Text3: [28]UID=RNT%^B.,#>7$NJ774U2:;K!@[9]PUN=60634[9]TUID=1726[12]PUID=5036028
- 450: Text3: [28]UID=RN!^-^5)H^RTF)%-'>G1'<80[9]PUN=60634[9]TUID=2333[12]PUID=5036028
- 451: Text3: [28]UID=RNTS15`.2\$D"]=1L$X8]F(P[9]PUN=60634[9]TUID=2609[12]PUID=5036028
- 452: Text3: [28]UID=RNP(C;'5Y+P4:X`W;;BD4ZP0[9]PUN=60634[9]TUID=2334[12]PUID=5036028
- 453: Text3: [28]UID=RNM.;ID]WNET.'AA9=35X]YP[9]PUN=60634[9]TUID=2348[12]PUID=5036028
- 454: Text3: [28]UID=RN&G,T%1$*ET*0=;:Q'+\/-0[9]PUN=60634[9]TUID=2369[12]PUID=5036028
- 455: Text3: [28]UID=RNISN!)RI>_D*<OZQ7%PB5L`[9]PUN=60634[9]TUID=2346[12]PUID=5036028
- 456: Text3: [28]UID=RN91NW>WSG_D6Y?THL"Y@R^@[9]PUN=60634[9]TUID=2345[12]PUID=5036028
- 457: Text3: [28]UID=RN`*5J:G.93$:Z3,L].KF<+P[9]PUN=60634[9]TUID=2342[12]PUID=5036028
- 458: Text3: [28]UID=RN1Z"B*[$#'4ZGO$72,V0-R@[9]PUN=60634[9]TUID=2658[12]PUID=5036028
- 459: Text3: [28]UID=RNF]!["CK]2$NI?GR>:Z?=Y0[9]PUN=60634[9]TUID=2353[12]PUID=5036028
- 460: Text3: [28]UID=RNJX1@Z6:=!D^\KN;QV.0*Y0[9]PUN=60634[9]TUID=2783[12]PUID=5036028
- 461: Text3: [28]UID=RN\RMDU=[<W46,UL1T4P(B[0[9]PUN=60634[9]TUID=2962[12]PUID=5036028
- 462: Text3: [28]UID=RNW2:_CER]U42TV"V<LX1S?0[9]PUN=60634[9]TUID=2352[12]PUID=5036028
- 463: Text3: [28]UID=RN&4%3\"(K3D*Z=-.Y'MLRM`[9]PUN=60634[9]TUID=2351[12]PUID=5036028
- 464: Text3: [28]UID=RN?F>O-!Y0-TB./6Q.5/'%-0[9]PUN=60634[9]TUID=2610[12]PUID=5036028
- 465: Text3: [28]UID=RNG)$Y//?GLTJ`1'N*A<X!'0[9]PUN=60634[9]TUID=1727[12]PUID=5036028
- 466: Text3: [28]UID=RNH0FI/Y(6W$R[E<@%R)_TG@[9]PUN=60634[9]TUID=1736[12]PUID=5036028
- 467: Text3: [28]UID=RN&#NF7!1/4DJHC:=,CLI"N0[9]PUN=60634[9]TUID=2371[12]PUID=5036028
- 468: Text3: [28]UID=RN=&J)B!A'G4^%.DB'^+;:.`[9]PUN=60634[9]TUID=2729[12]PUID=5036028
- 469: Text3: [28]UID=RNOHR*6A'(]TVM?]JYO_43`@[9]PUN=60634[9]TUID=2376[12]PUID=5036028
- 470: Text3: [28]UID=RN[.Q;78KT@T6WQ2AR8>Q[G0[9]PUN=60634[9]TUID=1737[12]PUID=5036028

| ID | WBS | Task | Type | Duration | Start | Finish | Predecessors | Complete | Remaining | Total slack | Free slack | Constraint | Fin Ajustado | Responsable | Reporte Semanal | Colaboradores |
| --- | --- | --- | --- | --- | --- | --- | --- | --- | --- | --- | --- | --- | --- | --- | --- | --- |
| 471 | 1.6.3.12.4.3 | **Cálculo Contable** |  | 121d? | 2013-08-02 A | 2014-01-29 |  | 62% | 46.44d? | 195d | 0d |  | 29/01/14 |  |  |  |
| 472 | 1.6.3.12.4.3.1 | Análisis Procesos Contables |  | 33d | 2013-08-02 A | 2013-09-18 A |  | 100% |  |  |  | start no earlier than 2013-08-02 | A definir | Néstor Vergano; Adriana Espinar | ܁T |  |
| 473 | 1.6.3.12.4.3.2 | Definición de Esquemas Contables |  | 15d | 2013-10-28 A | 2013-11-18 A | 472 | 100% |  |  |  | start no earlier than 2013-10-28 | A definir | Sebastán Herrera; Patricia Saporiti | ܁T | Néstor Vergano; Juan Ponce |
| 474 | 1.6.3.12.4.3.3 | Hito: Esquemas contables Validados por el sector usuario Contable | milestone | 0d | 2013-11-18 A | 2013-11-18 A | 473 | 100% |  |  |  |  | A definir | Patricia Saporiti | ܁T | Néstor Vergano; Juan Ponce |
| 475 | 1.6.3.12.4.3.4 | Parametrización en PeopleNet los eventos Contable |  | 10d | 2013-11-26 | 2013-12-09 | 474, 479 |  |  | 217d | 0d |  | A definir | Homero Sanchez | ܁T | Adriana Espinar |
| 476 | 1.6.3.12.4.3.5 | Interfaz para integrador Contable (salida a TXT) |  | 10d | 2013-12-10 | 2013-12-23 | 475 |  |  | 217d | 22d |  | A definir | Homero Sanchez | ܁T | Adriana Espinar |
| 477 | 1.6.3.12.4.3.6 | Hito: Planificación según SGOp | milestone | 0d | 2013-12-12 A | 2013-12-12 A |  | 100% |  |  |  | start no earlier than 2013-12-12 | A definir | Juan Ponce | ܁T | Néstor Vergano |
| 478 | 1.6.3.12.4.3.7 | Hito: Validación de Esquemas Contables. | milestone | 0d | 2014-01-06 A | 2014-01-06 A |  | 100% |  |  |  | start no earlier than 2014-01-06 | A definir | Néstor Vergano | ܁T | Juan Ponce |
| 479 | 1.6.3.12.4.3.8 | Definición de eventos contables |  | 4d | 2013-11-19 A | 2013-11-22 A | 474 | 100% |  |  |  |  | A definir | Juan Ponce | ܁T | Néstor Vergano |
| 480 | 1.6.3.12.4.3.9 | Definición de Reportes contables |  | 10d | 2013-12-09 A | 2014-01-06 | 479, 478 | 90% | 1d | 195d | 0d | start no earlier than 2013-12-09 | A definir | Juan Ponce | ܁T | Néstor Vergano |
| 481 | 1.6.3.12.4.3.10 | Parametrización de eventos contables |  | 15d | 2014-01-07 | 2014-01-27 | 480 |  |  | 195d | 0d |  | 27/01/14 | Juan Ponce | ܁T | Néstor Vergano |
| 482 | 1.6.3.12.4.3.11 | Pruebas unitarias de eventos contables |  | 1d? | 2014-01-28 | 2014-01-28 | 481 |  |  | 195d | 0d |  | 28/01/14 | Juan Ponce | ܁T | Néstor Vergano |
| 483 | 1.6.3.12.4.3.12 | Pruerbas de Integración |  | 1d? | 2014-01-29 | 2014-01-29 | 476, 482 |  |  | 195d |  |  | 29/01/14 | Juan Ponce | ܁T | Néstor Vergano |
| 484 | 1.6.3.12.4.4 | Hito: Análisis y Construcción de cáculo de la contabilidad finalizada | milestone | 0d | 2014-01-29 | 2014-01-29 | 471 |  |  | 195d |  | start no earlier than 2014-01-29 | 29/01/14 | Diego Prieto | ܁T | Adriana Espinar |
| 485 | 1.6.3.12.4.5 | **Reportes de gestión** |  | 35d | 2013-08-12 A | 2013-09-30 A |  | 100% |  |  |  |  | A definir |  |  |  |
| 486 | 1.6.3.12.4.5.1 | Netos Negativos |  | 35d | 2013-08-12 A | 2013-09-30 A |  | 100% |  |  |  | finish no earlier than 2013-09-30 | A definir | Osvaldo Fernandez |  | Adriana Espinar |
| 487 | 1.6.3.12.4.5.2 | Estadísticas de Ingresos/Egresos |  | 35d | 2013-08-12 A | 2013-09-30 A |  | 100% |  |  |  | start no earlier than 2013-08-12 | A definir | Osvaldo Fernandez |  | Adriana Espinar |
| 488 | 1.6.3.12.4.5.3 | Socios Club del Banco |  | 35d | 2013-08-12 A | 2013-09-30 A |  | 100% |  |  |  | start no earlier than 2013-08-12 | A definir | Osvaldo Fernandez |  | Adriana Espinar |
| 489 | 1.6.3.12.4.5.4 | Asociación Bancaria |  | 35d | 2013-08-12 A | 2013-09-30 A |  | 100% |  |  |  | start no earlier than 2013-08-12 | A definir | Osvaldo Fernandez |  | Adriana Espinar |
| 490 | 1.6.3.12.4.5.5 | Provisión SAC |  | 35d | 2013-08-12 A | 2013-09-30 A |  | 100% |  |  |  | start no earlier than 2013-08-12 | A definir | Osvaldo Fernandez |  | Adriana Espinar |
| 491 | 1.6.3.12.4.5.6 | Detalle F649's |  | 35d | 2013-08-12 A | 2013-09-30 A |  | 100% |  |  |  | start no earlier than 2013-08-12 | A definir | Osvaldo Fernandez |  | Adriana Espinar |
| 492 | 1.6.3.12.4.5.7 | Control final de la Liquidación |  | 35d | 2013-08-12 A | 2013-09-30 A |  | 100% |  |  |  | start no earlier than 2013-08-12 | A definir | Osvaldo Fernandez |  | Adriana Espinar |
| 493 | 1.6.3.12.4.5.8 | Ajuste a Reporte STD Obras Sociales |  | 35d | 2013-08-12 A | 2013-09-30 A |  | 100% |  |  |  | start no earlier than 2013-08-12 | A definir | Osvaldo Fernandez |  | Adriana Espinar |
| 494 | 1.6.3.12.4.5.9 | Ajuste a Reporte STD Sindicatos |  | 35d | 2013-08-12 A | 2013-09-30 A |  | 100% |  |  |  | start no earlier than 2013-08-12 | A definir | Osvaldo Fernandez |  | Adriana Espinar |
| 495 | 1.6.3.12.4.5.10 | Vencimientos de contratos |  | 35d | 2013-08-12 A | 2013-09-30 A |  | 100% |  |  |  | start no earlier than 2013-08-12 | A definir | Osvaldo Fernandez |  | Adriana Espinar |
| 496 | 1.6.3.12.4.5.11 | Reportes SOX |  | 35d | 2013-08-12 A | 2013-09-30 A |  | 100% |  |  |  | start no earlier than 2013-08-12 | A definir | Osvaldo Fernandez |  | Adriana Espinar |
| 497 | 1.6.3.12.4.6 | Hito: Reportes de Gestión Finalizados | milestone | 0d | 2013-10-02 A | 2013-10-02 A | 485 | 100% |  |  |  | start no earlier than 2013-10-02 | A definir |  |  |  |

Notes:
- 471: Text3: [28]UID=RN9V%?/49#U$JT.C*-E55$V`[9]PUN=60634[9]TUID=1785[12]PUID=5036028
- 472: Text3: [28]UID=RN;ED+JRIX?TN6.*!*;@TT[P[9]PUN=60634[9]TUID=1786[12]PUID=5036028
- 473: Text3: [28]UID=RN_\:>^L'_-DJ\_:CD=;->!P[9]PUN=60634[9]TUID=1787[12]PUID=5036028
- 474: Text3: [28]UID=RN;4BI^M5@RTBT001,*5NXN@[9]PUN=60634[9]TUID=1788[12]PUID=5036028
- 475: Text3: [28]UID=RN.V>#+7.MQDJ/4*90MOBT;0[9]PUN=60634[9]TUID=1789[12]PUID=5036028
- 476: [05/03/2013 04:47:39 a.m. p.m. (5080527)] / Interfaz contable de salida desde e-Mind. La contabilidad genera dos archivos TXT de salida: una por rubro y otra por partidas pendientes de presupuestación. Estas salidas no son generadas directamente por e-Mind, sino son generadas desde un desarrollo Visual Basic. / [05/03/2013 04:47:39 p.m. (5080528)] / Puede existir la alternativa de remplazar esta interfaz por una contabilidad por eventos (también se realizaría por medio de un archivo TXT, pero esta contabilidad no está implementada actualmente en el banco). / Añadir nuevas notas aquí debajo: / Text3: [28]UID=RNEE9N:'.'O4ZZ8=>Z>JNUY0[9]PUN=60634[9]TUID=1792[12]PUID=5036028
- 477: Text3: [28]UID=RNTFCFF3MBTT&VC^YQ6<QN*P[9]PUN=60634[9]TUID=2725[12]PUID=5036028
- 478: Text3: [28]UID=RNB01,:4>IW$J?=57L(;R\B0[9]PUN=60634[9]TUID=2963[12]PUID=5036028
- 479: Text3: [28]UID=RN6T@@1T;#(T6@/94VEP,I-P[9]PUN=60634[9]TUID=2721[12]PUID=5036028
- 480: Text3: [28]UID=RN8/_[^@&)_TVXP/O+JV7_KP[9]PUN=60634[9]TUID=2726[12]PUID=5036028
- 481: Text3: [28]UID=RNB5A@H1ZY!4*?'(!2Z*%OJP[9]PUN=60634[9]TUID=2722[12]PUID=5036028
- 482: Text3: [28]UID=RN/^.`87#"'$.?I/=%K^9)P@[9]PUN=60634[9]TUID=2723[12]PUID=5036028
- 483: Text3: [28]UID=RNJF^9W2XK]DNTPN0@`[D"O`[9]PUN=60634[9]TUID=2724[12]PUID=5036028
- 484: Text3: [28]UID=RNVPW</*FEF$"$N+FSX%K+E@[9]PUN=60634[9]TUID=2354[12]PUID=5036028
- 485: Text3: [28]UID=RNE0!+VVA#RTJ>T[@)HLVP50[9]PUN=60634[9]TUID=1746[12]PUID=5036028
- 486: Text3: [28]UID=RN2MHED_4_=T6VEK#2\4IU2`[9]PUN=60634[9]TUID=2537[12]PUID=5036028
- 487: Text3: [28]UID=RND]I%&AV]HDJJ>O@Q4V]U%`[9]PUN=60634[9]TUID=2536[12]PUID=5036028
- 488: Text3: [28]UID=RN.OQB./Q5'DB)7X,.XN2U90[9]PUN=60634[9]TUID=2535[12]PUID=5036028
- 489: Text3: [28]UID=RNWA.JQGQJ`4*/0]H+C]'3%P[9]PUN=60634[9]TUID=2534[12]PUID=5036028
- 490: Text3: [28]UID=RN4#\7M.J34$"@I>OU,JZ=1`[9]PUN=60634[9]TUID=2533[12]PUID=5036028
- 491: Text3: [28]UID=RN%458&2W)?$.3CW:$$3@P5`[9]PUN=60634[9]TUID=2532[12]PUID=5036028
- 492: Text3: [28]UID=RN=-%8A$8?RDZ0-0%BW[QK\P[9]PUN=60634[9]TUID=2531[12]PUID=5036028
- 493: Text3: [28]UID=RN;SN[7ET[]$6+P,%O8T*2+P[9]PUN=60634[9]TUID=2529[12]PUID=5036028
- 494: Text3: [28]UID=RN/R4D1RF4#$2R^JSR!)MC)@[9]PUN=60634[9]TUID=2528[12]PUID=5036028
- 495: Text3: [28]UID=RN\WH\:[G5=DF@-X<H?_9K1P[9]PUN=60634[9]TUID=1748[12]PUID=5036028
- 496: Text3: [28]UID=RNN!>EK:+\6DN-@G^P/#&1/@[9]PUN=60634[9]TUID=2530[12]PUID=5036028
- 497: Text3: [28]UID=RN&?'\6').2D>;5MG<@,%`*0[9]PUN=60634[9]TUID=1761[12]PUID=5036028

| ID | WBS | Task | Type | Duration | Start | Finish | Predecessors | Complete | Remaining | Total slack | Free slack | Constraint | Fin Ajustado | Responsable | Colaboradores | Reporte Semanal |
| --- | --- | --- | --- | --- | --- | --- | --- | --- | --- | --- | --- | --- | --- | --- | --- | --- |
| 498 | 1.6.3.12.4.7 | **Reportes Legales (Ajustes)** |  | 45.25d | 2013-10-03 A | 2013-12-10 A |  | 100% |  |  |  |  | A definir |  |  |  |
| 499 | 1.6.3.12.4.7.1 | Recibo de sueldo (4 modelos) |  | 31d | 2013-10-03 A | 2013-11-18 A | 497 | 100% |  |  |  |  | A definir | Diego Prieto | Adriana Espinar |  |
| 500 | 1.6.3.12.4.7.2 | SICORE |  | 5d | 2013-11-01 A | 2013-11-07 A | 499 | 100% |  |  |  |  | A definir | Diego Prieto | Adriana Espinar |  |
| 501 | 1.6.3.12.4.7.3 | SICOSS |  | 5d | 2013-11-11 A | 2013-11-18 A | 500 | 100% |  |  |  |  | A definir | Diego Prieto | Adriana Espinar |  |
| 502 | 1.6.3.12.4.7.4 | Libro Ley |  | 5d | 2013-11-18 A | 2013-11-26 A | 501 | 100% |  |  |  |  | A definir | Diego Prieto | Adriana Espinar |  |
| 503 | 1.6.3.12.4.7.5 | Resumen de conceptos |  | 5d | 2013-11-26 A | 2013-12-03 A | 502 | 100% |  |  |  |  | A definir | Diego Prieto | Adriana Espinar |  |
| 504 | 1.6.3.12.4.7.6 | Mi simplificación |  | 5d | 2013-12-03 A | 2013-12-10 A | 503 | 100% |  |  |  |  | A definir | Diego Prieto | Adriana Espinar |  |
| 505 | 1.6.3.12.4.8 | Hito: Reportes Legales Finalizados | milestone | 0d | 2013-12-10 A | 2013-12-10 A | 498 | 100% |  |  |  |  | A definir |  |  |  |
| 506 | 1.6.3.12.4.9 | Hito: Planificación y estimación de Interfaces finalizada | milestone | 0d | 2013-10-31 A | 2013-10-31 A | 375 | 100% |  |  |  | start no earlier than 2013-10-31 | A definir | Néstor Vergano | Flavia Piatti | ܁C |
| 507 | 1.6.3.12.4.10 | **Interfaces** |  | 117d? | 2013-10-22 A | 2014-04-16 | 506 | 66% | 39.86d? | 144d | 0d |  | 16/04/14 |  |  |  |
| 508 | 1.6.3.12.4.10.1 | **Interfaces de Nóminas** |  | 49.75d | 2013-11-11 A | 2014-01-24 |  | 97% | 1.39d | 198.25d | 0d |  | A definir |  |  |  |
| 509 | 1.6.3.12.4.10.1.1 | Ausentismos CCC (archivo Excel de entrada) |  | 14d | 2013-12-09 A | 2013-12-30 A |  | 100% |  |  |  | start no earlier than 2013-12-09 | A definir | Osvaldo Fernandez | Flavia Piatti | ܁$ |
| 510 | 1.6.3.12.4.10.1.2 | Interfaz de entrada para valores de préstamos |  | 32d | 2013-11-11 A | 2013-12-30 A |  | 100% |  |  |  | finish no earlier than 2013-12-30 | A definir | Osvaldo Fernandez |  | ܁$ |
| 511 | 1.6.3.12.4.10.1.3 | Comisiones (entrada mediante archivo plano) |  | 14d | 2013-12-09 A | 2013-12-30 A |  | 100% |  |  |  | start no earlier than 2013-12-09 | A definir | Osvaldo Fernandez | Flavia Piatti | ܁$ |
| 512 | 1.6.3.12.4.10.1.4 | Falla de caja (entrada mediante archivo plano) |  | 14d | 2013-12-09 A | 2013-12-30 A |  | 100% |  |  |  | start no earlier than 2013-12-09 | A definir | Osvaldo Fernandez | Flavia Piatti | ܁$ |
| 513 | 1.6.3.12.4.10.1.5 | Mutuales (un archivo plano de salida) |  | 14d | 2013-12-09 A | 2013-12-30 A |  | 100% |  |  |  | start no earlier than 2013-12-09 | A definir | Osvaldo Fernandez | Flavia Piatti | ܁$ |
| 514 | 1.6.3.12.4.10.1.6 | Oficios (archivo plano de salida) |  | 24d | 2013-11-11 A | 2013-12-13 A |  | 100% |  |  |  | start no earlier than 2013-11-11 | A definir | Osvaldo Fernandez |  | ܁$ |
| 515 | 1.6.3.12.4.10.1.7 | Log de Plataforma de Caja (adicionales cajero) - Archivo de entrada en formato TXT |  | 14d | 2013-12-09 A | 2013-12-30 A |  | 100% |  |  |  | start no earlier than 2013-12-09 | A definir | Osvaldo Fernandez | Flavia Piatti | ܁$ |
| 516 | 1.6.3.12.4.10.1.8 | (sin apertura de cuenta) |  | 49d | 2013-11-11 A | 2014-01-24 |  | 90% | 4.9d | 198.25d |  | finish no earlier than 2014-01-24 | A definir | Osvaldo Fernandez | Flavia Piatti | ܁V |
| 517 | 1.6.3.12.4.10.2 | Hito: Interfaces de Nóminas finalizadas | milestone | 0d | 2014-01-24 | 2014-01-24 | 508 |  |  | 198.25d |  |  | A definir | Osvaldo Fernandez | Flavia Piatti |  |
| 518 | 1.6.3.12.4.10.3 | **Interfaces de Integración** |  | 1d? | 2013-10-31 A | 2013-10-31 A |  | 100% |  |  |  |  | A definir |  |  |  |
| 519 | 1.6.3.12.4.10.3.1 | Información para Directorio Global (Batch generación TXT salida/ webservice ESS para consulta on-line) |  | 1d? | 2013-10-31 A | 2013-10-31 A |  | 100% |  |  |  |  | A definir | Recurso 2 |  |  |
| 520 | 1.6.3.12.4.10.3.2 | Integración (on-line) con GReCo (+interface actualización de usuarios) |  | 1d? | 2013-10-31 A | 2013-10-31 A |  | 100% |  |  |  |  | A definir | Recurso 2 |  |  |
| 521 | 1.6.3.12.4.10.3.3 | Interfaz de ABM Seguridad informática |  | 1d? | 2013-10-31 A | 2013-10-31 A |  | 100% |  |  |  |  | A definir | Recurso 2 |  |  |
| 522 | 1.6.3.12.4.10.3.4 | 1001_datos (efectivos/contratados) host |  | 1d? | 2013-10-31 A | 2013-10-31 A |  | 100% |  |  |  |  | A definir | Recurso 2 |  |  |
| 523 | 1.6.3.12.4.10.3.5 | Tablas auxiliares para LN |  | 1d? | 2013-10-31 A | 2013-10-31 A |  | 100% |  |  |  |  | A definir | Recurso 2 |  |  |
| 524 | 1.6.3.12.4.10.3.6 | Integración Adm Usr Sucursales |  | 1d? | 2013-10-31 A | 2013-10-31 A |  | 100% |  |  |  |  | A definir | Recurso 2 |  |  |
| 525 | 1.6.3.12.4.10.3.7 | Integración Filenet (Thuban) |  | 1d? | 2013-10-31 A | 2013-10-31 A |  | 100% |  |  |  |  | A definir | Recurso 2 |  |  |
| 526 | 1.6.3.12.4.10.3.8 | Integración SIGal |  | 1d? | 2013-10-31 A | 2013-10-31 A |  | 100% |  |  |  |  | A definir | Recurso 2 |  |  |
| 527 | 1.6.3.12.4.10.3.9 | Integración P-2000 |  | 1d? | 2013-10-31 A | 2013-10-31 A |  | 100% |  |  |  |  | A definir | Recurso 2 |  |  |
| 528 | 1.6.3.12.4.10.3.10 | Integración Sourcing DW |  | 1d? | 2013-10-31 A | 2013-10-31 A |  | 100% |  |  |  |  | A definir | Recurso 2 |  |  |
| 529 | 1.6.3.12.4.10.4 | Hito: Interfaces de Integración finalizadas | milestone | 0d | 2013-10-31 A | 2013-10-31 A | 518 | 100% |  |  |  |  | A definir |  |  |  |

Notes:
- 498: Text3: [28]UID=RN"60N:W\W`4^"IPO:P=9_U0[9]PUN=60634[9]TUID=1738[12]PUID=5036028
- 499: Text3: [28]UID=RN]?I71'J;>$RV1QD-@6^[)0[9]PUN=60634[9]TUID=1739[12]PUID=5036028
- 500: Text3: [28]UID=RNI%2FCZ;KZTR-.3PG)%6+"`[9]PUN=60634[9]TUID=1740[12]PUID=5036028
- 501: Text3: [28]UID=RN(=/7_`"^4TZW[$J&P18-W0[9]PUN=60634[9]TUID=1741[12]PUID=5036028
- 502: Text3: [28]UID=RNXF;NPX&08D:"AD(C?9>RO`[9]PUN=60634[9]TUID=1742[12]PUID=5036028
- 503: Text3: [28]UID=RNI:=])LZI2T^7VUS"IG2,$@[9]PUN=60634[9]TUID=1743[12]PUID=5036028
- 504: Text3: [28]UID=RN'J7ND-P-GDBOO:I]LJ--$`[9]PUN=60634[9]TUID=1744[12]PUID=5036028
- 505: Text3: [28]UID=RNK.)+1=X/:$NM,F,U0S$TK0[9]PUN=60634[9]TUID=1745[12]PUID=5036028
- 506: Text3: [28]UID=RNUVX3E\"LC4*6=V-IR\>7:P[9]PUN=60634[9]TUID=2611[12]PUID=5036028
- 507: Text3: [28]UID=RNK13V.H@Q)$N.ASV`V!:ZC`[9]PUN=60634[9]TUID=1762[12]PUID=5036028
- 508: Text3: [28]UID=RN2CH0'*"!4DR^)#A(J8W>*0[9]PUN=60634[9]TUID=2756[12]PUID=5036028
- 509: Text3: [28]UID=RN)>QN3Z/_`TB"3F)\('"^V0[9]PUN=60634[9]TUID=2766[12]PUID=5036028
- 510: Text3: [28]UID=RNNXD0['E.UTZP,"IW7Y*-HP[9]PUN=60634[9]TUID=2765[12]PUID=5036028
- 511: Text3: [28]UID=RN7K/,*;`&SDZ,6=<T29P680[9]PUN=60634[9]TUID=2764[12]PUID=5036028
- 512: Text3: [28]UID=RN3P<.?+.B!$.4J94#RUP+_@[9]PUN=60634[9]TUID=2763[12]PUID=5036028
- 513: Text3: [28]UID=RN/&\<#?%VZT*S/6/B>+QPE0[9]PUN=60634[9]TUID=2762[12]PUID=5036028
- 514: Text3: [28]UID=RN?7=.5HOT9DF$?Q&QLUF<$0[9]PUN=60634[9]TUID=2761[12]PUID=5036028
- 515: Text3: [28]UID=RN9KSP`:['BDR!#+9VJ.+("P[9]PUN=60634[9]TUID=2760[12]PUID=5036028
- 516: Text3: [28]UID=RN73=<-/#AL$B%2D/*/)A@NP[9]PUN=60634[9]TUID=2759[12]PUID=5036028
- 517: Text3: [28]UID=RNJ-=W3RO1?TR5G%**J)^*40[9]PUN=60634[9]TUID=2777[12]PUID=5036028
- 518: Text3: [28]UID=RNB/T#G%-,9$6*>TRHL,+B;P[9]PUN=60634[9]TUID=2758[12]PUID=5036028
- 519: Text3: [28]UID=RNUFQ-M.'?!T^%,Q,T1OY+Z@[9]PUN=60634[9]TUID=2782[12]PUID=5036028
- 520: Text3: [28]UID=RNC?%<,H?U`$V>U^/`7A\AO@[9]PUN=60634[9]TUID=2781[12]PUID=5036028
- 521: Text3: [28]UID=RNP8F+=]WAS$^I#D/H6\-R%@[9]PUN=60634[9]TUID=2780[12]PUID=5036028
- 522: Text3: [28]UID=RNZ_PLTYHD8TRW>)B>+[NSZ@[9]PUN=60634[9]TUID=2779[12]PUID=5036028
- 523: Text3: [28]UID=RNWN64QU,CRTNR(+NT,^O%/P[9]PUN=60634[9]TUID=2778[12]PUID=5036028
- 524: Text3: [28]UID=RN"Z4D.[%1WT6F<Z*K>J4'R`[9]PUN=60634[9]TUID=2776[12]PUID=5036028
- 525: Text3: [28]UID=RN3VED,_*7%T&A[UF>/[V-#0[9]PUN=60634[9]TUID=2775[12]PUID=5036028
- 526: Text3: [28]UID=RN`3XS;+;,*DVY[;Z(4Y8Z00[9]PUN=60634[9]TUID=2774[12]PUID=5036028
- 527: Text3: [28]UID=RN6`GT8`X+BTBA3452F'UJ?`[9]PUN=60634[9]TUID=2773[12]PUID=5036028
- 528: Text3: [28]UID=RNHEJ^-E_^GD>&$-[AA;6^Y0[9]PUN=60634[9]TUID=2772[12]PUID=5036028
- 529: Text3: [28]UID=RNZ=RS7V>@TDZ)F2S-E!W99P[9]PUN=60634[9]TUID=2771[12]PUID=5036028

| ID | WBS | Task | Type | Duration | Start | Finish | Predecessors | Complete | Constraint | Fin Ajustado | Responsable | Colaboradores |
| --- | --- | --- | --- | --- | --- | --- | --- | --- | --- | --- | --- | --- |
| 530 | 1.6.3.12.4.10.5 | **Gestión de información VER** |  | 71d | 2013-10-22 A | 2014-02-05 A |  | 100% |  | 05/02/14 |  |  |
| 531 | 1.6.3.12.4.10.5.1 | Interfaz de entrada de novedades desde sistema reloj (por archivo plano, ya validados) |  | 15d | 2013-10-31 A | 2013-11-21 A | 449 | 100% |  | A definir | Recurso 2 |  |
| 532 | 1.6.3.12.4.10.5.2 | Ausentismos CCC (archivo Excel de entrada) |  | 10d | 2013-11-22 A | 2013-12-06 A | 531 | 100% |  | A definir | Recurso 2 |  |
| 533 | 1.6.3.12.4.10.5.3 | Interfaz de entrada para valores de préstamos |  | 10d | 2013-12-09 A | 2013-12-20 A | 532 | 100% |  | A definir | Recurso 2 |  |
| 534 | 1.6.3.12.4.10.5.4 | Comisiones (entrada mediante archivo plano) |  | 8d | 2013-10-22 A | 2013-10-31 A | 533 | 100% |  | A definir | Recurso 2 |  |
| 535 | 1.6.3.12.4.10.5.5 | Falla de caja (entrada mediante archivo plano) |  | 8d | 2013-11-01 A | 2013-11-13 A | 534 | 100% |  | A definir | Recurso 2 |  |
| 536 | 1.6.3.12.4.10.5.6 | Mutuales (un archivo plano de salida) |  | 8d | 2013-11-14 A | 2013-11-26 A | 535 | 100% |  | A definir | Recurso 2 |  |
| 537 | 1.6.3.12.4.10.5.7 | Oficios (archivo plano de salida) |  | 8d | 2013-11-27 A | 2013-12-06 A | 536 | 100% |  | A definir | Recurso 2 |  |
| 538 | 1.6.3.12.4.10.5.8 | Log de Plataforma de Caja (adicionales cajero) - Archivo de entrada en formato TXT |  | 5d | 2013-12-09 A | 2013-12-13 A | 537 | 100% |  | A definir | Recurso 2 |  |
| 539 | 1.6.3.12.4.10.5.9 | Información para Directorio Global (Batch generación TXT salida/ webservice ESS para consulta on-line) |  | 8d | 2013-12-16 A | 2013-12-27 A | 538 | 100% |  | A definir | Recurso 2 |  |
| 540 | 1.6.3.12.4.10.5.10 | Integración (on-line) con GReCo (+interface actualización de usuarios) |  | 8d | 2013-12-30 A | 2014-01-10 A | 539 | 100% |  | A definir | Recurso 2 | Marco Legamari |
| 541 | 1.6.3.12.4.10.5.11 | **Seguridad** |  | 18d | 2014-01-13 A | 2014-02-05 A | 540 | 100% |  | 05/02/14 |  |  |
| 542 | 1.6.3.12.4.10.5.11.1 | Interfaz de ABM Seguridad informática |  | 8d | 2014-01-13 A | 2014-01-22 A | 539 | 100% |  | A definir | TBD |  |
| 543 | 1.6.3.12.4.10.5.11.2 | 1001_datos (efectivos/contratados) host |  | 5d | 2014-01-23 A | 2014-01-29 A | 542 | 100% |  | 29/01/14 | TBD |  |
| 544 | 1.6.3.12.4.10.5.11.3 | Tablas auxiliares para LN |  | 5d | 2014-01-30 A | 2014-02-05 A | 543 | 100% |  | 05/02/14 | TBD |  |
| 545 | 1.6.3.12.4.10.5.12 | Integración Adm Usr Sucursales | milestone | 0d | 2014-02-05 A | 2014-02-05 A | 544 | 100% |  | 05/02/14 | Recurso 2 |  |
| 546 | 1.6.3.12.4.10.5.13 | Integración Filenet (Thuban) | milestone | 0d | 2014-02-05 A | 2014-02-05 A | 545 | 100% |  | 05/02/14 | Recurso 2 |  |
| 547 | 1.6.3.12.4.10.5.14 | Integración SIGal | milestone | 0d | 2014-02-05 A | 2014-02-05 A | 546 | 100% |  | 05/02/14 | Recurso 2 |  |
| 548 | 1.6.3.12.4.10.5.15 | Integración P-2000 | milestone | 0d | 2014-02-05 A | 2014-02-05 A | 547 | 100% |  | 05/02/14 | Recurso 2 |  |
| 549 | 1.6.3.12.4.10.5.16 | Integración Sourcing DW | milestone | 0d | 2014-02-05 A | 2014-02-05 A | 548 | 100% |  | 05/02/14 | Recurso 2 |  |
| 550 | 1.6.3.12.4.10.6 | **Bancos (Haberes) VER** |  | 3d | 2014-02-06 A | 2014-02-10 A |  | 100% |  | 10/02/14 |  |  |
| 551 | 1.6.3.12.4.10.6.1 | Banco Galicia (sin apertura de cuenta) |  | 3d | 2014-02-06 A | 2014-02-10 A | 541 | 100% |  | 10/02/14 | Diego Prieto | Adriana Espinar |
| 552 | 1.6.3.12.4.10.7 | **Migracion SQL2K5 a SQL2K8** |  | 5d | 2013-12-09 A | 2013-12-13 A |  | 100% |  | A definir |  |  |
| 553 | 1.6.3.12.4.10.7.1 | Pruebas regresion RHOL |  | 1d | 2013-12-09 A | 2013-12-09 A |  | 100% | start no earlier than 2013-12-09 | A definir | Matías Picon | Carlos Peñalosa |
| 554 | 1.6.3.12.4.10.7.2 | Pruebas regresion E-Mind |  | 1d | 2013-12-10 A | 2013-12-10 A | 553 | 100% | start no earlier than 2013-12-10 | A definir | Matías Picon | Carlos Peñalosa |
| 555 | 1.6.3.12.4.10.7.3 | Pruebas regresion DTS |  | 3d | 2013-12-11 A | 2013-12-13 A | 554 | 100% | start no earlier than 2013-12-11 | A definir | Matías Picon | Carlos Peñalosa |
| 556 | 1.6.3.12.4.10.8 | Hito: Migracion SQL2K5 a SQL2K8 finalizada | milestone | 0d | 2013-12-13 A | 2013-12-13 A | 552 | 100% |  | A definir |  |  |

Notes:
- 530: Text3: [28]UID=RN-3X5(_;59$2]Z(Q`8&O1-`[9]PUN=60634[9]TUID=1763[12]PUID=5036028
- 531: Text3: [28]UID=RN$O0G.RO#R4J=?%[NEP2NGP[9]PUN=60634[9]TUID=1764[12]PUID=5036028
- 532: Text3: [28]UID=RNL_6QKTC1N4Z0R4Q523=D!P[9]PUN=60634[9]TUID=1765[12]PUID=5036028
- 533: Text3: [28]UID=RN5O,`/>V-`$:Q"7&*LXB)Q`[9]PUN=60634[9]TUID=1766[12]PUID=5036028
- 534: Text3: [28]UID=RN&M24-HK9$4JAO'1.%'6KBP[9]PUN=60634[9]TUID=1767[12]PUID=5036028
- 535: [05/03/2013 04:47:39 p.m. (5080526)] / En el sistema contable hay un módulo SAA donde el cajero registra la diferencia de caja. El cajero tiene 72 hs para salvar la diferencia y si transcurrió el plazo el SAA manda un TXT para registrar el fallo de caja en e-Mind. / Añadir nuevas notas aquí debajo: / Text3: [28]UID=RN2I"JE@J?'TFF(T#3X159&`[9]PUN=60634[9]TUID=1768[12]PUID=5036028
- 536: Text3: [28]UID=RNO\/%)VW8-TV,;J*S9:$HM`[9]PUN=60634[9]TUID=1769[12]PUID=5036028
- 537: Text3: [28]UID=RN`H!='YW+N$6ABX)6?FDLG0[9]PUN=60634[9]TUID=1770[12]PUID=5036028
- 538: [05/03/2013 04:47:39 p.m. (5080525)] / Archivo TXT que viene de SIGAL (sistema front end de caja) una vez al final del día y en la base SQL Server de e-Mind existe un DTS de entrada de e-Mind para pagar el adicional de caja. / Añadir nuevas notas aquí debajo: / Text3: [28]UID=RN":78K;JUF$RZA_D5%>ZJB0[9]PUN=60634[9]TUID=1771[12]PUID=5036028
- 539: Text3: [28]UID=RNW`94:IPQ\DJP(]'5,F7*#@[9]PUN=60634[9]TUID=1772[12]PUID=5036028
- 540: [05/03/2013 04:47:39 a.m. p.m. (5080523)] / Greco es una interfaz de actualización desde un archivo TXT con solamente la información de los empleados comerciales. Greco necesita esta información para registrarlo en Siebel y asignar la cartera de clientes. Mediante un proceso batch (utilizando DTS) se genera desde e-Mind un TXT con la información que necesita Greco. / [05/03/2013 04:47:39 p.m. (5080524)] / También existe una integración on-line con Greco. En el sistema rol (autoservicio) cuando se realiza un traslado se indica si el traslado es a una sucursal principal y de esta manera, Greco puede reasignar la cartera de clientes. Cómo estos cambios pueden ser temporales, el empleado puede consultar su cartera anterior y nueva asignada temporalmente. Esta integración se realiza por consumiento desde el ESS un webservice publicado en Greco. / Añadir nuevas notas aquí debajo: / Text3: [28]UID=RNPOXF%\DO\TB$ON`),0(Q3@[9]PUN=60634[9]TUID=1773[12]PUID=5036028
- 541: Text3: [28]UID=RNO6B4*T1X%4.#[C"XW3PIMP[9]PUN=60634[9]TUID=1774[12]PUID=5036028
- 542: Text3: [28]UID=RNBVCB7+!#)$ZZWM[+>%H\5`[9]PUN=60634[9]TUID=1775[12]PUID=5036028
- 543: Text3: [28]UID=RNDBFZ5'SP?$&9^86:B9I020[9]PUN=60634[9]TUID=1776[12]PUID=5036028
- 544: Text3: [28]UID=RN:A7W.S/5X4F4/RER3\?I'@[9]PUN=60634[9]TUID=1777[12]PUID=5036028
- 545: Text3: [28]UID=RN?64"CD#?QDNDU%CNT=;./P[9]PUN=60634[9]TUID=1778[12]PUID=5036028
- 546: Text3: [28]UID=RN7QQNZ_B==4JU'C@X),5;O@[9]PUN=60634[9]TUID=1779[12]PUID=5036028
- 547: Text3: [28]UID=RN4)MN!L?H*T.#%RBQ5\<CF0[9]PUN=60634[9]TUID=1780[12]PUID=5036028
- 548: Text3: [28]UID=RN^+3Q#'I/=$6)/D;*<`4$PP[9]PUN=60634[9]TUID=1781[12]PUID=5036028
- 549: Text3: [28]UID=RNZ%'(?>+)/D>/#C]Z^^@'Z`[9]PUN=60634[9]TUID=1782[12]PUID=5036028
- 550: Text3: [28]UID=RN^!TLLP<E2$.LD`_4#G],@0[9]PUN=60634[9]TUID=1783[12]PUID=5036028
- 551: Text3: [28]UID=RNY7\;2/04-4JURWB6KV*NV0[9]PUN=60634[9]TUID=1784[12]PUID=5036028
- 552: Text3: [28]UID=RNP5J%"`(86T^65+4A``$!EP[9]PUN=60634[9]TUID=2899[12]PUID=5036028
- 553: Text3: [28]UID=RNY$V&93B*8$>1SQ9DWI7O+`[9]PUN=60634[9]TUID=2898[12]PUID=5036028
- 554: Text3: [28]UID=RN&C;6$_WHUTB_R1V$@VQY%@[9]PUN=60634[9]TUID=2897[12]PUID=5036028
- 555: Text3: [28]UID=RN3R)`#5L!C4J>,*NZ=U1>(`[9]PUN=60634[9]TUID=2896[12]PUID=5036028
- 556: Text3: [28]UID=RNC(%VDEJ[14JT.4XA45L9'0[9]PUN=60634[9]TUID=2952[12]PUID=5036028

| ID | WBS | Task | Type | Duration | Start | Finish | Predecessors | Complete | Remaining | Total slack | Free slack | Constraint | Fin Ajustado | Responsable | Colaboradores | Reporte Semanal |
| --- | --- | --- | --- | --- | --- | --- | --- | --- | --- | --- | --- | --- | --- | --- | --- | --- |
| 557 | 1.6.3.12.4.10.9 | **Integracion Procesos Batch - Go Live** |  | 55d | 2014-01-24 A | 2014-04-16 |  | 1% | 54.31d | 144d | 0d |  | 16/04/14 |  |  |  |
| 558 | 1.6.3.12.4.10.9.1 | RRHH_PCDG - Personal Contratados a RRHH |  | 5d | 2014-01-24 | 2014-01-30 | 608 |  |  | 144d | 0d | start no earlier than 2014-01-24 | 30/01/14 | Edgardo Cabrejas | Carlos Peñalosa | ܁V |
| 559 | 1.6.3.12.4.10.9.2 | RRHH_PCEE - Empresas Externas a RRHH |  | 5d | 2014-01-31 | 2014-02-06 | 558 |  |  | 144d | 0d |  | 06/02/14 | Edgardo Cabrejas | Carlos Peñalosa | ܁V |
| 560 | 1.6.3.12.4.10.9.3 | RRHH_HIFC - Falla de caja a RRHH |  | 5d | 2014-02-07 | 2014-02-13 | 559 |  |  | 144d | 0d |  | 13/02/14 | Edgardo Cabrejas | Carlos Peñalosa | ܁V |
| 561 | 1.6.3.12.4.10.9.4 | RRHH_ATDP - Genera .txt con datos de cuentas pago x empleado |  | 5d | 2014-02-14 | 2014-02-20 | 560 |  |  | 144d | 0d |  | 20/02/14 | Edgardo Cabrejas | Carlos Peñalosa | ܁V |
| 562 | 1.6.3.12.4.10.9.5 | RRHH_1001 - Personal y Contratados a host (Marzo) |  | 5d | 2014-02-21 | 2014-02-27 | 561 |  |  | 144d | 0d |  | 27/02/14 | Edgardo Cabrejas | Carlos Peñalosa | ܁V |
| 563 | 1.6.3.12.4.10.9.6 | RRHH_1002 - Tablas de referencia a host (Marzo) |  | 5d | 2014-02-28 | 2014-03-10 | 562 |  |  | 144d | 0d |  | 10/03/14 | Edgardo Cabrejas | Carlos Peñalosa | ܁V |
| 564 | 1.6.3.12.4.10.9.7 | RRHH_1003 - Tablas de referencia a host (Marzo) |  | 5d | 2014-03-11 | 2014-03-17 | 563 |  |  | 144d | 0d |  | 17/03/14 | Edgardo Cabrejas | Carlos Peñalosa | ܁V |
| 565 | 1.6.3.12.4.10.9.8 | RRHH_SDAL - Seg Inf Altas |  | 5d | 2014-03-18 | 2014-03-25 | 564 |  |  | 144d | 0d |  | 25/03/14 | Edgardo Cabrejas | Carlos Peñalosa | ܁V |
| 566 | 1.6.3.12.4.10.9.9 | RRHH_SDAU - Seg Inf Ausentismos |  | 5d | 2014-03-26 | 2014-04-01 | 565 |  |  | 144d | 0d |  | 01/04/14 | Edgardo Cabrejas | Carlos Peñalosa | ܁V |
| 567 | 1.6.3.12.4.10.9.10 | RRHH_SDBJ - Seg Inf Bajas |  | 5d | 2014-04-03 | 2014-04-09 | 566 |  |  | 144d | 0d |  | 09/04/14 | Edgardo Cabrejas | Carlos Peñalosa | ܁V |
| 568 | 1.6.3.12.4.10.9.11 | RRHH_SDCA - Seg Inf Cambio destino |  | 5d | 2014-04-10 | 2014-04-16 | 567 |  |  | 144d |  |  | 16/04/14 | Edgardo Cabrejas | Carlos Peñalosa | ܁V |
| 569 | 1.6.3.12.4.10.9.12 | RRHH_SDBA - Seg Inf Bajas |  | 5d | 2014-01-27 A | 2014-01-31 | 601 | 25% | 3.75d | 153d | 0d | start no earlier than 2014-01-27 | 31/01/14 | Lorena Mende | Carlos Peñalosa | ܁V |
| 570 | 1.6.3.12.4.10.9.13 | RRHH_SDNO - Seg Inf Novedades |  | 5d | 2014-02-03 | 2014-02-07 | 569 |  |  | 153d | 0d | start no earlier than 2014-02-03 | 07/02/14 | Lorena Mende | Carlos Peñalosa | ܁V |
| 571 | 1.6.3.12.4.10.9.14 | RRHH_2000 - Archivos P2000 (Marzo) |  | 5d | 2014-02-10 | 2014-02-14 | 570 |  |  | 153d | 0d | start no earlier than 2014-02-10 | 14/02/14 | Lorena Mende | Carlos Peñalosa | ܁V |
| 572 | 1.6.3.12.4.10.9.15 | RRHH_SABA - Interfaz Usuarios SABA |  | 5d | 2014-02-17 | 2014-02-21 | 571 |  |  | 153d | 0d | start no earlier than 2014-02-17 | 21/02/14 | Lorena Mende | Carlos Peñalosa | ܁V |
| 573 | 1.6.3.12.4.10.9.16 | RRHH_BERH - Salida 1001 datos a Seguridad(P2000) |  | 5d | 2014-02-24 | 2014-02-28 | 572 |  |  | 153d | 0d | start no earlier than 2014-02-24 | 28/02/14 | Lorena Mende | Carlos Peñalosa | ܁V |
| 574 | 1.6.3.12.4.10.9.17 | RRHH_GERC - RRHH a SoftExpert - Gerardo Barbosa |  | 5d | 2014-03-05 | 2014-03-11 | 573 |  |  | 153d | 0d | start no earlier than 2014-03-03 | 11/03/14 | Lorena Mende | Carlos Peñalosa | ܁V |
| 575 | 1.6.3.12.4.10.9.18 | RRHH_ADCO - Notificacion batch a DG para ADMUsuarios |  | 5d | 2014-03-12 | 2014-03-18 | 574 |  |  | 153d | 0d | start no earlier than 2014-03-12 | 18/03/14 | Lorena Mende | Carlos Peñalosa | ܁V |
| 576 | 1.6.3.12.4.10.9.19 | RRHH_GRCO - Usuarios Greco Novedades |  | 5d | 2014-03-19 | 2014-03-26 | 575 |  |  | 153d | 0d | start no earlier than 2014-03-19 | 26/03/14 | Lorena Mende | Carlos Peñalosa | ܁V |
| 577 | 1.6.3.12.4.10.9.20 | RRHH_INBC |  | 5d | 2014-03-27 | 2014-04-03 | 576 |  |  | 153d |  | start no earlier than 2014-03-27 | 03/04/14 | Lorena Mende | Carlos Peñalosa | ܁V |
| 578 | 1.6.3.12.4.10.10 | Hito: Integracion Procesos Batch - Go Live finalizada | milestone | 0d | 2014-04-16 | 2014-04-16 | 557 |  |  | 144d |  |  | 16/04/14 |  |  |  |
| 579 | 1.6.3.12.4.10.11 | **Migraciones Unica Vez** |  | 15d | 2013-12-09 A | 2014-01-02 A |  | 100% |  |  |  |  | A definir |  |  |  |
| 580 | 1.6.3.12.4.10.11.1 | Modificaciones en RRHH_MIGR Y RRHH_VIST (Estructura y Adaptaciones previas al paralelo en caliente) |  | 15d | 2013-12-09 A | 2014-01-02 A |  | 100% |  |  |  | start no earlier than 2013-12-09 | A definir | Matías Picon | Carlos Peñalosa |  |
| 581 | 1.6.3.12.4.10.12 | Hito: Migraciones Unica Vez finalizada | milestone | 0d | 2014-01-02 A | 2014-01-02 A | 579 | 100% |  |  |  |  | A definir |  |  |  |

Notes:
- 557: Text3: [28]UID=RNQGH7$;*<`T:3UO*:FA.QO`[9]PUN=60634[9]TUID=2938[12]PUID=5036028
- 558: Text3: [28]UID=RN)H9B9-0(Q4Z!@Q46L@"E!P[9]PUN=60634[9]TUID=2937[12]PUID=5036028
- 559: Text3: [28]UID=RN5VCVW\0>PTN`?%\^..$)(`[9]PUN=60634[9]TUID=2936[12]PUID=5036028
- 560: Text3: [28]UID=RNH*8[]U)^*T^/8'+<!Y%ZD@[9]PUN=60634[9]TUID=2935[12]PUID=5036028
- 561: Text3: [28]UID=RNV@`%II17[42[V/L)4'./Q@[9]PUN=60634[9]TUID=2934[12]PUID=5036028
- 562: Text3: [28]UID=RNM8,T[S=&X$N>TKLA@N`:F0[9]PUN=60634[9]TUID=2933[12]PUID=5036028
- 563: Text3: [28]UID=RNV\^;QG\,O4F?->*^_B]=N0[9]PUN=60634[9]TUID=2932[12]PUID=5036028
- 564: Text3: [28]UID=RNVT5&8QMJ?4*XM$!R"+ZGY@[9]PUN=60634[9]TUID=2931[12]PUID=5036028
- 565: Text3: [28]UID=RN51WCWJB`X$FN2UDB`7[B@@[9]PUN=60634[9]TUID=2930[12]PUID=5036028
- 566: Text3: [28]UID=RN^>2Q7IJP#TNU+/&*#5Y`9`[9]PUN=60634[9]TUID=2929[12]PUID=5036028
- 567: Text3: [28]UID=RN"[F9,6*'*4*N[)TP&5P8"P[9]PUN=60634[9]TUID=2928[12]PUID=5036028
- 568: Text3: [28]UID=RN-9DE?#7EY$6K<`)MA)Q0+@[9]PUN=60634[9]TUID=2927[12]PUID=5036028
- 569: Text3: [28]UID=RNMO\M*E@-<D:YB/V648$1]0[9]PUN=60634[9]TUID=2926[12]PUID=5036028
- 570: Text3: [28]UID=RN$T6-(5`"ET:MIM'0!EV`R`[9]PUN=60634[9]TUID=2925[12]PUID=5036028
- 571: Text3: [28]UID=RNV3K^DKEE=$J(DP5MU#O/00[9]PUN=60634[9]TUID=2924[12]PUID=5036028
- 572: Text3: [28]UID=RN'^`(X"]-YD6YB>GKGP\`S@[9]PUN=60634[9]TUID=2923[12]PUID=5036028
- 573: Text3: [28]UID=RN$FZAU)H<$D*AGYY[HCCJ0P[9]PUN=60634[9]TUID=2922[12]PUID=5036028
- 574: Text3: [28]UID=RN^E;\Q?+6[T&]$CT'DV[;HP[9]PUN=60634[9]TUID=2921[12]PUID=5036028
- 575: Text3: [28]UID=RN\+*&.?@Q&T&#70]%#KAU5@[9]PUN=60634[9]TUID=2920[12]PUID=5036028
- 576: Text3: [28]UID=RN-];XT_.[`T*!EB_U[O-*2@[9]PUN=60634[9]TUID=2919[12]PUID=5036028
- 577: Text3: [28]UID=RNU:IV5$F_S$BEJ9-SGN#A>P[9]PUN=60634[9]TUID=2918[12]PUID=5036028
- 578: Text3: [28]UID=RN*>^W?,WI24F1H'3'#;SOG0[9]PUN=60634[9]TUID=2953[12]PUID=5036028
- 579: Text3: [28]UID=RN+:80B`ZI=$2&$;PWJRD8G@[9]PUN=60634[9]TUID=2917[12]PUID=5036028
- 580: Text3: [28]UID=RNRU\C!OJ@L$2*^C-Q6@/'$0[9]PUN=60634[9]TUID=2916[12]PUID=5036028
- 581: Text3: [28]UID=RN>XE"*'],$4*U7HB2:L&2NP[9]PUN=60634[9]TUID=2954[12]PUID=5036028

| ID | WBS | Task | Type | Duration | Start | Finish | Predecessors | Complete | Remaining | Total slack | Free slack | Constraint | Fin Ajustado | Responsable | Colaboradores | Reporte Semanal |
| --- | --- | --- | --- | --- | --- | --- | --- | --- | --- | --- | --- | --- | --- | --- | --- | --- |
| 582 | 1.6.3.12.4.10.13 | **Integracion Lotus Notes** |  | 76d? | 2013-12-09 A | 2014-04-03 |  | 63% | 28.5d? | 153d | 0d |  | 03/04/14 |  |  |  |
| 583 | 1.6.3.12.4.10.13.1 | M4SD_CATEGORIAS |  | 5d | 2013-12-09 A | 2013-12-13 A |  | 100% |  |  |  | start no earlier than 2013-12-09 | A definir | Carolina Pepe | Carlos Peñalosa | ܁V |
| 584 | 1.6.3.12.4.10.13.2 | M4SD_CAUSAS_REEMPLAZO |  | 5d | 2013-12-16 A | 2013-12-20 A | 583 | 100% |  |  |  | start no earlier than 2013-12-16 | A definir | Carolina Pepe | Carlos Peñalosa | ܁V |
| 585 | 1.6.3.12.4.10.13.3 | M4SD_CENTROS_COSTO |  | 5d | 2013-12-23 A | 2014-01-02 A | 584 | 100% |  |  |  | start no earlier than 2013-12-23 | A definir | Carolina Pepe | Carlos Peñalosa | ܁V |
| 586 | 1.6.3.12.4.10.13.4 | M4SD_CENTROS_TRABAJO |  | 5d | 2014-01-03 A | 2014-01-09 A | 585 | 100% |  |  |  | start no earlier than 2014-01-03 | A definir | Carolina Pepe | Carlos Peñalosa | ܁V |
| 587 | 1.6.3.12.4.10.13.5 | M4SD_EMPLEADOS |  | 5d | 2014-01-10 A | 2014-01-16 | 586 | 50% | 2.5d | 201.5d | 0d | start no earlier than 2014-01-10 | A definir | Carolina Pepe | Carlos Peñalosa | ܁V |
| 588 | 1.6.3.12.4.10.13.6 | M4_EMPRESAS |  | 5d | 2014-01-17 A | 2014-01-23 | 587 | 50% | 2.5d | 199d |  | start no earlier than 2014-01-17 | A definir | Carolina Pepe | Carlos Peñalosa | ܁V |
| 589 | 1.6.3.12.4.10.13.7 | M4SD_ESTADOS_CIVILES |  | 5d | 2014-01-24 A | 2014-01-30 A | 588 | 100% |  |  |  | start no earlier than 2014-01-24 | 30/01/14 | Carolina Pepe | Carlos Peñalosa | ܁V |
| 590 | 1.6.3.12.4.10.13.8 | M4SD_HIST_NIVELES_SALARIALES |  | 5d | 2014-01-31 A | 2014-02-06 | 589 | 50% | 2.5d | 184d | 0d | start no earlier than 2014-01-31 | 06/02/14 | Carolina Pepe | Carlos Peñalosa | ܁V |
| 591 | 1.6.3.12.4.10.13.9 | M4SD_EMPLEADOS_SUP |  | 5d | 2014-02-07 | 2014-02-13 | 590 |  |  | 184d |  | start no earlier than 2014-02-07 | 13/02/14 | Carolina Pepe | Carlos Peñalosa | ܁V |
| 592 | 1.6.3.12.4.10.13.10 | M4SD_PUESTOS_TRABAJO |  | 5d | 2014-02-14 A | 2014-02-20 A | 591 | 100% |  |  |  | start no earlier than 2014-02-14 | 20/02/14 | Carolina Pepe | Carlos Peñalosa | ܁V |
| 593 | 1.6.3.12.4.10.13.11 | M4SD_SEXOS |  | 5d | 2014-02-21 A | 2014-02-27 A | 592 | 100% |  |  |  | start no earlier than 2014-02-21 | 27/02/14 | Carolina Pepe | Carlos Peñalosa | ܁V |
| 594 | 1.6.3.12.4.10.13.12 | M4SD_CONTRATOS_INTERNOS |  | 5d | 2014-02-28 A | 2014-03-10 A | 593 | 100% |  |  |  | start no earlier than 2014-02-28 | 10/03/14 | Carolina Pepe | Carlos Peñalosa | ܁V |
| 595 | 1.6.3.12.4.10.13.13 | M4T_PROCESOS_SELECCIÓN (a validar) |  | 5d | 2014-03-11 | 2014-03-17 | 594 |  |  | 153d | 0d | start no earlier than 2014-03-11 | 17/03/14 | Carolina Pepe | Carlos Peñalosa | ܁V |
| 596 | 1.6.3.12.4.10.13.14 | M4T_PLAZAS (a validar) |  | 5d | 2014-03-18 | 2014-03-25 | 595 |  |  | 153d | 0d | start no earlier than 2014-03-18 | 25/03/14 | Carolina Pepe | Carlos Peñalosa | ܁V |
| 597 | 1.6.3.12.4.10.13.15 | Lugar de trabajo(Edificios) |  | 5d | 2014-03-26 | 2014-04-01 | 596 |  |  | 153d | 0d | start no earlier than 2014-03-26 | 01/04/14 | Carolina Pepe | Carlos Peñalosa | ܁V |
| 598 | 1.6.3.12.4.10.13.16 | Actualización en Lotus Notes |  | 1d? | 2014-04-03 | 2014-04-03 | 597 |  |  | 153d |  |  | 03/04/14 | Fabiana Sereno |  | ܁V |
| 599 | 1.6.3.12.4.10.14 | Hito: Integracion Lotus Notes finalizada | milestone | 0d | 2014-04-03 | 2014-04-03 | 582 |  |  | 153d |  |  | 03/04/14 |  |  |  |
| 600 | 1.6.3.12.4.10.15 | **Integracion CMO** |  | 5d | 2014-01-20 | 2014-01-24 |  |  |  | 154.25d | 0d |  | A definir |  |  |  |
| 601 | 1.6.3.12.4.10.15.1 | M4PR_CONSULTA_SUCURSALES_ZONA |  | 5d | 2014-01-20 | 2014-01-24 |  |  |  | 154.25d | 0d | start no earlier than 2014-01-20 | A definir | Lorena Mendez | Carlos Peñalosa | ܁V |
| 602 | 1.6.3.12.4.10.16 | Hito: Integracion CMO finalizada | milestone | 0d | 2014-01-24 | 2014-01-24 | 600 |  |  | 198d |  |  | A definir |  |  |  |
| 603 | 1.6.3.12.4.10.17 | **Interfaces RHOL a PeopleNet (Paralelo en Caliente)** |  | 20d | 2014-01-06 A | 2014-01-31 |  | 75% | 5d | 158d | 0d |  | 31/01/14 |  |  |  |
| 604 | 1.6.3.12.4.10.17.1 | Ausentismos - Vacaciones - Novedades Diarias |  | 10d | 2014-01-06 A | 2014-01-17 A | 555 | 100% |  |  |  | start no earlier than 2014-01-06 | A definir | Matías Picon | Carlos Peñalosa |  |
| 605 | 1.6.3.12.4.10.17.2 | Adicionales transitorios( Guardias ATM, Tele , Viaticos) |  | 10d | 2014-01-20 A | 2014-01-31 | 604 | 50% | 5d | 158d | 0d | start no earlier than 2014-01-20 | 31/01/14 | Matías Picon | Carlos Peñalosa | ܁V |
| 606 | 1.6.3.12.4.10.18 | Hito: Interfaces RHOL a PeopleNet finalizada | milestone | 0d | 2014-01-31 | 2014-01-31 | 603 |  |  | 193d |  |  | 31/01/14 |  |  |  |

Notes:
- 582: Text3: [28]UID=RNR5.]+WRY*T24'5ZR.WLB9@[9]PUN=60634[9]TUID=2950[12]PUID=5036028
- 583: Text3: [28]UID=RN%^3ZQHJ7`DJ;F28/TL/.+0[9]PUN=60634[9]TUID=2949[12]PUID=5036028
- 584: Text3: [28]UID=RNL\9#)#'\]$*$[D?='K*CX`[9]PUN=60634[9]TUID=2948[12]PUID=5036028
- 585: Text3: [28]UID=RN98NE0#T10TVG^BG>`(<0,P[9]PUN=60634[9]TUID=2947[12]PUID=5036028
- 586: Text3: [28]UID=RN6_Q@Q3R83DV8(`\93BA9/`[9]PUN=60634[9]TUID=2946[12]PUID=5036028
- 587: Text3: [28]UID=RNFFBIB]J4+$BQB/3J%3B_SP[9]PUN=60634[9]TUID=2945[12]PUID=5036028
- 588: Text3: [28]UID=RN(;I-19*-R4R1B<E5@.G1X`[9]PUN=60634[9]TUID=2944[12]PUID=5036028
- 589: Text3: [28]UID=RN4R)0I58\_$*JEWSP!'N6YP[9]PUN=60634[9]TUID=2943[12]PUID=5036028
- 590: Text3: [28]UID=RN6!-57P]!0$:Y;(P\F)^,?`[9]PUN=60634[9]TUID=2942[12]PUID=5036028
- 591: Text3: [28]UID=RN^NT*2BPS*TR]))DU]2^\0`[9]PUN=60634[9]TUID=2941[12]PUID=5036028
- 592: Text3: [28]UID=RNTTB%U))VID::\TF]F2";I@[9]PUN=60634[9]TUID=2940[12]PUID=5036028
- 593: Text3: [28]UID=RN^*W,H$-!+4V=>F\"^E5DDP[9]PUN=60634[9]TUID=2939[12]PUID=5036028
- 594: Text3: [28]UID=RN/)=L`-K@'$J<QJ<5$^+J[`[9]PUN=60634[9]TUID=2915[12]PUID=5036028
- 595: Text3: [28]UID=RN+S9S5+_#+DR:HWFFHJZ)60[9]PUN=60634[9]TUID=2914[12]PUID=5036028
- 596: Text3: [28]UID=RNW0R(OIZFQTZ,S@NG:LOF(`[9]PUN=60634[9]TUID=2913[12]PUID=5036028
- 597: Text3: [28]UID=RNS=_OA/.B=$2J(:^^?B_O=`[9]PUN=60634[9]TUID=2912[12]PUID=5036028
- 598: Text3: [28]UID=RN/WCG?C`^=D^_C2A'1"%8R0[9]PUN=60634[9]TUID=2951[12]PUID=5036028
- 599: Text3: [28]UID=RN\!1;&/M^Z4RB(1*,(O$D'P[9]PUN=60634[9]TUID=2955[12]PUID=5036028
- 600: Text3: [28]UID=RNT6.LAUY^>$*D!O<V^"T;7`[9]PUN=60634[9]TUID=2911[12]PUID=5036028
- 601: Text3: [28]UID=RN6F8R<^YI:T.'WNJ*_`U34P[9]PUN=60634[9]TUID=2910[12]PUID=5036028
- 602: Text3: [28]UID=RN>5M"WI9VHTR](\9<OYW<Y@[9]PUN=60634[9]TUID=2956[12]PUID=5036028
- 603: Text3: [28]UID=RNQ=OKJV8YUT:!U/T$2[MLU0[9]PUN=60634[9]TUID=2909[12]PUID=5036028
- 604: Text3: [28]UID=RN[<6GPX1S5D:,U_T*B>W-"`[9]PUN=60634[9]TUID=2908[12]PUID=5036028
- 605: Text3: [28]UID=RNIWLL[CYP2D.R%I?DL+G(VP[9]PUN=60634[9]TUID=2907[12]PUID=5036028
- 606: Text3: [28]UID=RN3TN@Y5#O%4V@$4@Q*D9^BP[9]PUN=60634[9]TUID=2957[12]PUID=5036028

| ID | WBS | Task | Type | Duration | Start | Finish | Predecessors | Complete | Remaining | Total slack | Free slack | Constraint | Fin Ajustado | Responsable | Colaboradores | Reporte Semanal |
| --- | --- | --- | --- | --- | --- | --- | --- | --- | --- | --- | --- | --- | --- | --- | --- | --- |
| 607 | 1.6.3.12.4.10.19 | **Interfaces PeopleNet a RHOL** |  | 61d | 2013-12-16 A | 2014-03-18 |  | 11% | 54.07d | 158d | 0d |  | 18/03/14 |  |  |  |
| 608 | 1.6.3.12.4.10.19.1 | Empleados y Fases de alta |  | 25d | 2013-12-16 A | 2014-01-23 |  | 25% | 18.75d | 144d | 0d | start no earlier than 2014-12-16 | A definir | Edgardo Cabrejas | Carlos Peñalosa | ܁V |
| 609 | 1.6.3.12.4.10.19.2 | Historicos de UO, CT , CC , Reconstruccion de Historico de Posiciones (Traslados) |  | 20d | 2014-02-03 | 2014-02-28 | 605 |  |  | 158d | 0d |  | 28/02/14 | Matías Picon | Carlos Peñalosa | ܁V |
| 610 | 1.6.3.12.4.10.19.3 | Puesto Mapping |  | 10d | 2014-03-05 | 2014-03-18 | 609 |  |  | 158d |  |  | 18/03/14 | Matías Picon | Carlos Peñalosa | ܁V |
| 611 | 1.6.3.12.4.10.20 | Hito: Interfaces PeopleNet a RHOL finalizado | milestone | 0d | 2014-03-18 | 2014-03-18 | 607 |  |  | 158d | 0d |  | 18/03/14 |  |  |  |
| 612 | 1.6.3.12.4.10.21 | **Tareas sin definicion** |  | 5d | 2014-03-19 | 2014-03-26 |  |  |  | 158d |  |  | 26/03/14 |  |  |  |
| 613 | 1.6.3.12.4.10.21.1 | Repositorio de Fotos Peoplenet BDD |  | 5d | 2014-03-19 | 2014-03-26 | 611 |  |  | 158d |  |  | 26/03/14 | Matías Picon | Carlos Peñalosa |  |
| 634 | 1.6.3.12.4.11 | Hito: Interfaces Finalizados | milestone | 0d | 2014-04-16 | 2014-04-16 | 507 |  |  | 144d | 0d |  | 16/04/14 |  |  |  |
| 635 | 1.6.3.13 | Hito: Construcción Finalizada | milestone | 0d | 2014-04-16 | 2014-04-16 | 634 |  |  | 144d | 0d |  | 16/04/14 |  |  |  |
| 636 | 1.6.3.14 | **Migración Inicial de Datos para Nómina** |  | 57d | 2013-07-22 A | 2013-10-09 A |  | 100% |  |  |  |  | A definir |  |  |  |
| 637 | 1.6.3.14.1 | Especificación estructura para la migración de datos |  | 8d | 2013-07-22 A | 2013-07-31 A |  | 100% |  |  |  | start no earlier than 2013-07-22 | A definir | Gabriela Bustos | Carlos Peñaloza |  |
| 638 | 1.6.3.14.2 | Análisis de datos sistemas del cliente |  | 54d | 2013-07-22 A | 2013-10-04 A |  | 100% |  |  |  | start no earlier than 2013-07-22 | A definir | Adriana Espinar | Carlos Peñaloza |  |
| 639 | 1.6.3.14.3 | Programas extracción datos cliente |  | 46d | 2013-08-01 A | 2013-10-04 A | 637 | 100% |  |  |  |  | A definir | Adriana Espinar, Gabriela Busto | Carlos Peñaloza |  |
| 640 | 1.6.3.14.4 | Generación archivos de datos migración inicial |  | 46d | 2013-08-01 A | 2013-10-04 A | 637 | 100% |  |  |  |  | A definir | Adriana Espinar, Gabriela Busto | Carlos Peñaloza |  |
| 641 | 1.6.3.14.5 | Programas migración datos hacia Meta4 |  | 46d | 2013-08-01 A | 2013-10-04 A | 637 | 100% |  |  |  |  | A definir | Adriana Espinar, Gabriela Busto | Carlos Peñaloza |  |
| 642 | 1.6.3.14.6 | Ejecución programas migración hacia Meta4 |  | 46d | 2013-08-01 A | 2013-10-04 A | 637 | 100% |  |  |  |  | A definir | Adriana Espinar, Gabriela Busto | Carlos Peñaloza |  |
| 643 | 1.6.3.14.7 | Validación / Corrección de datos |  | 3d | 2013-10-07 A | 2013-10-09 A | 642 | 100% |  |  |  |  | A definir | Adriana Espinar, Gabriela Busto | Carlos Peñaloza |  |
| 644 | 1.6.3.15 | Hito: Migración inicial de datos finalizada | milestone | 0d | 2013-10-09 A | 2013-10-09 A | 636 | 100% |  |  |  |  | A definir |  |  |  |
| 645 | 1.6.3.16 | **Upgrade Funcional** |  | 93d | 2013-05-30 A | 2013-10-11 A |  | 100% |  |  |  |  | A definir |  |  |  |
| 646 | 1.6.3.16.1 | Identificar Upgrades funcional |  | 7d | 2013-05-30 A | 2013-06-07 A |  | 100% |  |  |  | start no earlier than 2013-05-30 | A definir | Flavia Piatti |  | ܁I |
| 647 | 1.6.3.16.2 | Hito: Validar los upgrade a aplicar | milestone | 0d | 2013-06-14 A | 2013-06-14 A | 646 | 100% |  |  |  | start no earlier than 2013-06-14 | A definir | Flavia Piatti | Nestor Vergano | ܁I |
| 648 | 1.6.3.16.3 | Aplicar Upgrade Funcional en Desarrollo |  | 5d | 2013-07-25 A | 2013-07-31 A | 647 | 100% |  |  |  | start no earlier than 2013-07-25 | A definir | Flavia Piatti | Carlos Peñaloza | ܁I |
| 649 | 1.6.3.16.4 | Pasaje del Upgrade Funcional a Homologación |  | 2d | 2013-10-08 A | 2013-10-09 A | 648 | 100% |  |  |  | start no earlier than 2013-10-08 | A definir | Carlos Peñaloza | Flavia Piatti | ܁I |
| 650 | 1.6.3.16.5 | Pasaje del Upgrade Funcional a Producción |  | 2d | 2013-10-10 A | 2013-10-11 A | 649 | 100% |  |  |  |  | A definir | Carlos Peñaloza | Flavia Piatti | ܁I |
| 651 | 1.6.3.17 | Hito: Upgrade funcional finalizado | milestone | 0d | 2013-10-11 A | 2013-10-11 A | 645 | 100% |  |  |  |  | A definir |  |  |  |
| 652 | 1.6.3.18 | Hito: Planificación de Capacitación funcional a Usuarios para Organización y Administración de Personal | milestone | 0d | 2013-08-23 | 2013-08-23 |  |  |  | 302d |  | start no earlier than 2013-08-23 | A definir | Florencia Bozzini | Néstor Vergano | ܁C |

Notes:
- 607: Text3: [28]UID=RNF;,Y9ZN'B4R3)!I.I=/*-@[9]PUN=60634[9]TUID=2906[12]PUID=5036028
- 608: Text3: [28]UID=RN,%Z=0@42?T:HD[E%(\D;EP[9]PUN=60634[9]TUID=2905[12]PUID=5036028
- 609: Text3: [28]UID=RN>")2KU39?$"1&%Z;F>56(0[9]PUN=60634[9]TUID=2904[12]PUID=5036028
- 610: Text3: [28]UID=RNU$ID>?)PSDJL+&`!DR4N%0[9]PUN=60634[9]TUID=2903[12]PUID=5036028
- 611: Text3: [28]UID=RN::,%,*^'24^%%<:GJW,7/@[9]PUN=60634[9]TUID=2958[12]PUID=5036028
- 612: Text3: [28]UID=RN8,T*NP3YPDV^N<(K\4_C!`[9]PUN=60634[9]TUID=2902[12]PUID=5036028
- 613: Text3: [28]UID=RNF`7B'FW+R4B52W#"CV*R"`[9]PUN=60634[9]TUID=2901[12]PUID=5036028
- 634: Text3: [28]UID=RN7/K9(FP;#42!>C;/,LS#\@[9]PUN=60634[9]TUID=1793[12]PUID=5036028
- 635: Text3: [28]UID=RN<90UJE32[4VQOQ8_?=7KPP[9]PUN=60634[9]TUID=1794[12]PUID=5036028
- 636: Text3: [28]UID=RN\K8:_3OF-$:.B^*V".\+#`[9]PUN=60634[9]TUID=1795[12]PUID=5036028
- 637: Text3: [28]UID=RN:?2,%2MZ7T.9KBW9T`HJ\`[9]PUN=60634[9]TUID=2612[12]PUID=5036028
- 638: Text3: [28]UID=RN[(RDLJ8@ZDBXW["IN'ZJ=P[9]PUN=60634[9]TUID=1797[12]PUID=5036028
- 639: Text3: [28]UID=RNP3UR\`F)WDVUP)X!L""7@P[9]PUN=60634[9]TUID=1798[12]PUID=5036028
- 640: Text3: [28]UID=RNNFCZ;\P\=TVGSCIPI33OU`[9]PUN=60634[9]TUID=1799[12]PUID=5036028
- 641: Text3: [28]UID=RN,M*B!&:XLD2)O.JN&>VL<@[9]PUN=60634[9]TUID=1800[12]PUID=5036028
- 642: Text3: [28]UID=RN?2ML678">$.[&<JP0A9W-P[9]PUN=60634[9]TUID=1801[12]PUID=5036028
- 643: Text3: [28]UID=RN*E\""\[T04^FJ,\/ZHUT@P[9]PUN=60634[9]TUID=1802[12]PUID=5036028
- 644: Text3: [28]UID=RN^:AAE63A64>"6N-3O;\L.P[9]PUN=60634[9]TUID=1803[12]PUID=5036028
- 645: Text3: [28]UID=RN>,H;:-*Z^4R".MQI[8B%ZP[9]PUN=60634[9]TUID=2364[12]PUID=5036028
- 646: Text3: [28]UID=RN<]'?Z18Y%$VII68PO(=J<0[9]PUN=60634[9]TUID=1994[12]PUID=5036028
- 647: Text3: [28]UID=RN1L21^X,*D4&>[A.7#.PF7`[9]PUN=60634[9]TUID=2363[12]PUID=5036028
- 648: Text3: [28]UID=RNYIFK1,"!&$^K62I=P6410`[9]PUN=60634[9]TUID=1996[12]PUID=5036028
- 649: Text3: [28]UID=RN$I,SU,2\QDRXT4,:07-4I@[9]PUN=60634[9]TUID=2614[12]PUID=5036028
- 650: Text3: [28]UID=RN94N"_$?63D^@0I.6H+7ON`[9]PUN=60634[9]TUID=2613[12]PUID=5036028
- 651: Text3: [28]UID=RNI?7QSS?<IDB;RD`)14.D30[9]PUN=60634[9]TUID=2366[12]PUID=5036028
- 652: Text3: [28]UID=RN3+!R3X!@44V`L\L^K!"LS`[9]PUN=60634[9]TUID=2653[12]PUID=5036028

| ID | WBS | Task | Type | Duration | Start | Finish | Predecessors | Complete | Remaining | Total slack | Free slack | Constraint | Fin Ajustado | Responsable | Reporte Semanal |
| --- | --- | --- | --- | --- | --- | --- | --- | --- | --- | --- | --- | --- | --- | --- | --- |
| 653 | 1.6.3.19 | **Testing Funcional** |  | 156d? | 2013-08-12 A | 2014-04-01 |  | 47% | 82.21d? | 108d | 0d |  | 01/04/14 |  |  |
| 654 | 1.6.3.19.1 | Organización y Administración de Personal |  | 40d | 2013-08-12 | 2013-10-07 | 431 |  |  | 224d |  |  | A definir |  |  |
| 655 | 1.6.3.19.2 | **Comparación E-mind - PeopleNet** |  | 98d? | 2013-11-04 A | 2014-04-01 |  | 54% | 45.56d? | 108d |  |  | 01/04/14 |  |  |
| 656 | 1.6.3.19.2.1 | **Paralelo en Frio** |  | 98d? | 2013-11-04 A | 2014-04-01 |  | 54% | 45.56d? | 108d | 0d |  | 01/04/14 |  |  |
| 657 | 1.6.3.19.2.1.1 | Hito: Resolución de Incidentes en la migración | milestone | 0d | 2014-01-10 A | 2014-01-10 A |  | 100% |  |  |  | start no earlier than 2014-01-10 | A definir | Adriana Espinar |  |
| 658 | 1.6.3.19.2.1.2 | Inducción Funcional |  | 5d | 2013-11-04 A | 2013-11-11 A |  | 100% |  |  |  | start no earlier than 2013-11-04 | A definir | Ignacio Alonso, Sebastián Herrera, Laura Fernandez | ܁% |
| 659 | 1.6.3.19.2.1.3 | Organización y Gestión de Personal | milestone | 0d | 2014-02-07 | 2014-02-07 | 658 |  |  | 142.25d |  | finish no earlier than 2014-02-07 | 07/02/14 | Ignacio Alonso, Sebastián Herrera, Laura Fernandez | ܁% |
| 660 | 1.6.3.19.2.1.4 | Procesos de Gestión de Nómina | milestone | 0d | 2013-11-11 | 2013-11-11 |  |  |  | 202d |  | start no earlier than 2013-11-11 | A definir | Ignacio Alonso, Sebastián Herrera | ܁% |
| 661 | 1.6.3.19.2.1.5 | **Paralelo frío del cálculo mes 1** |  | 64.75d | 2013-11-11 A | 2014-02-14 |  | 89% | 7.4d | 108.25d | 0d |  | 14/02/14 |  |  |
| 662 | 1.6.3.19.2.1.5.1 | Liquidación anticipo de haberes, Liquidación anticipo vacacional |  | 64d | 2013-11-11 A | 2014-02-14 |  | 90% | 6.4d | 108.25d |  | finish no earlier than 2014-02-14 | 14/02/14 | Ignacio Alonso, Sebastián Herrera | ܁% |
| 663 | 1.6.3.19.2.1.5.2 | Temporada veraniega, Anticipo SAC personal jerárquico. |  | 44d | 2013-11-18 A | 2014-02-14 |  | 90% | 4.4d | 108.25d |  | finish no earlier than 2014-02-14 | 14/02/14 | Ignacio Alonso, Sebastián Herrera | ܁% |
| 664 | 1.6.3.19.2.1.5.3 | Liquidación de egreso y Bono Anual |  | 27d | 2013-11-26 A | 2014-02-14 |  | 90% | 2.7d | 108.25d |  | finish no earlier than 2014-02-14 | 14/02/14 | Ignacio Alonso, Sebastián Herrera | ܁% |
| 665 | 1.6.3.19.2.1.5.4 | Liquidación mensual |  | 5d | 2013-12-03 A | 2014-02-14 |  | 50% | 2.5d | 108.25d |  | finish no earlier than 2014-02-14 | 14/02/14 | Ignacio Alonso, Sebastián Herrera | ܁% |
| 666 | 1.6.3.19.2.1.6 | Hito: Paralelo frío del cálculo mes 1 finalizdo | milestone | 0d | 2014-02-14 | 2014-02-14 | 661 |  |  | 137.25d |  |  | 14/02/14 |  |  |
| 667 | 1.6.3.19.2.1.7 | Reportes operativos |  | 20d | 2014-01-17 | 2014-02-14 |  |  |  | 137.25d |  | finish no earlier than 2014-02-14 | 14/02/14 | Ignacio Alonso, Sebastián Herrera | ܁% |
| 668 | 1.6.3.19.2.1.8 | Reportes legales e interfaces de nómina |  | 10d | 2014-01-31 | 2014-02-14 |  |  |  | 136.25d | 0d | finish no earlier than 2014-02-14 | 14/02/14 | Ignacio Alonso, Sebastián Herrera | ܁% |
| 669 | 1.6.3.19.2.1.9 | Ajustes al Módulo de Administración de Personal y Organización, Gestión de Nómina |  | 69d | 2013-11-04 A | 2014-02-14 |  | 50% | 34.8d | 137d |  | finish no earlier than 2014-02-14 | 14/02/14 | Gabriela Bustos, Diego Prieto | ܁% |
| 670 | 1.6.3.19.2.1.10 | Proceso contable |  | 12d | 2014-01-02 | 2014-01-17 |  |  |  | 156d | 0d | start no earlier than 2014-01-02 | A definir | Ignacio Alonso, Sebastián Herrera | ܁% |
| 671 | 1.6.3.19.2.1.11 | Reporte operativo contable |  | 1d? | 2014-01-20 | 2014-01-20 | 670 |  |  | 156d |  |  | A definir |  |  |
| 672 | 1.6.3.19.2.1.12 | Actualización del ambiente con el mes correspondiente |  | 2d | 2014-02-17 | 2014-02-18 | 661 |  |  | 108d | 0d | start no earlier than 2014-02-17 | 18/02/14 |  |  |
| 673 | 1.6.3.19.2.1.13 | **Paralelo frío del cálculo y reportes mes 2** |  | 27d | 2014-02-19 | 2014-04-01 | 672 |  |  | 108d | 0d |  | 01/04/14 |  |  |
| 674 | 1.6.3.19.2.1.13.1 | Paralelo frío del cálculo y reportes mes 2 (completo con retroactividad, reportes y contabilidad) |  | 10d | 2014-02-19 | 2014-03-06 |  |  |  | 108d | 0d | start no earlier than 2014-02-19 | 06/03/14 | Ignacio Alonso, Sebastián Herrera | ܁% |
| 675 | 1.6.3.19.2.1.13.2 | Actualización del ambiente a Enero 2014 |  | 7d | 2014-03-07 | 2014-03-17 | 674 |  |  | 108d | 0d |  | 17/03/14 |  | ܁% |
| 676 | 1.6.3.19.2.1.13.3 | Paralelo frío del cálculo y reportes mes 3 (completo con retroactividad, reportes y contabilidad) |  | 10d | 2014-03-18 | 2014-04-01 | 675 |  |  | 108d |  |  | 01/04/14 | Ignacio Alonso, Sebastián Herrera | ܁% |
| 677 | 1.6.3.19.2.1.14 | Hito: Paralelo frío del cálculo y reportes mes 2 finalizado | milestone | 0d | 2014-04-01 | 2014-04-01 | 673 |  |  | 108d |  |  | 01/04/14 |  | ܁% |
| 678 | 1.6.3.19.2.1.15 | Interfaces de integración para Nóminas |  | 1d? | 2014-02-14 | 2014-02-17 | 668 |  |  | 136.25d |  | start no earlier than 2014-02-14 | 17/02/14 | Ignacio Alonso, Sebastián Herrera | ܁% |
| 679 | 1.6.3.19.2.1.16 | Validación Migración Final |  | 18d | 2014-03-05 | 2014-03-31 |  |  |  | 109d |  | start no earlier than 2014-03-03 | 31/03/14 | Ignacio Alonso, Sebastián Herrera | ܁% |
| 680 | 1.6.3.19.2.2 | Hito: Paralelo en frio finalizado | milestone | 0d | 2014-04-01 | 2014-04-01 | 656 |  |  | 108d |  |  | 01/04/14 |  |  |
| 681 | 1.6.3.20 | Hito: Testing Funcional finalizado | milestone | 0d | 2014-04-01 | 2014-04-01 | 653 |  |  | 108d | 0d |  | 01/04/14 |  |  |

Notes:
- 653: Text3: [28]UID=RND[]U'9[@4T.$UNV90^/H=P[9]PUN=60634[9]TUID=1804[12]PUID=5036028
- 654: Text3: [28]UID=RN8W(=/R,/.$&[&'NMZ2S&*@[9]PUN=60634[9]TUID=1805[12]PUID=5036028
- 655: Text3: [28]UID=RN](UH[6H/WD2D7!`^S_BZ>@[9]PUN=60634[9]TUID=1806[12]PUID=5036028
- 656: Text3: [28]UID=RN-3DO`M\M9$6@&=B_$]$$Q`[9]PUN=60634[9]TUID=1807[12]PUID=5036028
- 657: Text3: [28]UID=RNPP?]*R\^DD2HD+:I:>3#2@[9]PUN=60634[9]TUID=2964[12]PUID=5036028
- 658: Text3: [28]UID=RNL>4WXB$>`TBR7S0X+17)(P[9]PUN=60634[9]TUID=2733[12]PUID=5036028
- 659: Text3: [28]UID=RNY$ZIOIS*QDB2SML$_5,AZ`[9]PUN=60634[9]TUID=2747[12]PUID=5036028
- 660: Text3: [28]UID=RNA7]Z1W&ZYDN"4[&X1`11*`[9]PUN=60634[9]TUID=2746[12]PUID=5036028
- 661: Text3: [28]UID=RN#Y6+*T*/PD&O%*71W-U[N0[9]PUN=60634[9]TUID=2749[12]PUID=5036028
- 662: Text3: [28]UID=RN7CF)4)$D:T&8RZ$1B^3JU@[9]PUN=60634[9]TUID=2745[12]PUID=5036028
- 663: Text3: [28]UID=RN+D.CO&W>HD^G;RNOLCW@`P[9]PUN=60634[9]TUID=2744[12]PUID=5036028
- 664: Text3: [28]UID=RN9[49G80DKD2G!4M47TJ^^@[9]PUN=60634[9]TUID=2743[12]PUID=5036028
- 665: Text3: [28]UID=RNF;;37'"&?$2XY%+EGPH>W`[9]PUN=60634[9]TUID=2742[12]PUID=5036028
- 666: Text3: [28]UID=RN^P'J6N9VNTR8/IMU2"!EYP[9]PUN=60634[9]TUID=2755[12]PUID=5036028
- 667: Text3: [28]UID=RN))YO.!Y3S42@1<E+\1Z*.@[9]PUN=60634[9]TUID=2741[12]PUID=5036028
- 668: Text3: [28]UID=RNY!BE$$B`14*Z%R^L,B1O!P[9]PUN=60634[9]TUID=2740[12]PUID=5036028
- 669: Text3: [28]UID=RN&KWXN@=S6TFE^SL&'-+&[0[9]PUN=60634[9]TUID=2865[12]PUID=5036028
- 670: Text3: [28]UID=RNG!%7TF/$<$V6XX8B<&,6TP[9]PUN=60634[9]TUID=2739[12]PUID=5036028
- 671: Text3: [28]UID=RNVV.'UZR^'DN@A\%H:U&3$@[9]PUN=60634[9]TUID=2967[12]PUID=5036028
- 672: Text3: [28]UID=RNUE)HG::K[4"IVND7H"KFF0[9]PUN=60634[9]TUID=2966[12]PUID=5036028
- 673: Text3: [28]UID=RN;YDD;(J7HT.`CVE=#1?N'P[9]PUN=60634[9]TUID=2753[12]PUID=5036028
- 674: Text3: [28]UID=RNT/4W_7/+WD>Y1-CZ0%E=Z0[9]PUN=60634[9]TUID=2738[12]PUID=5036028
- 675: Text3: [28]UID=RNC:/K?VS?Z46A?F.E#)<)SP[9]PUN=60634[9]TUID=2968[12]PUID=5036028
- 676: Text3: [28]UID=RN0UX/Q";2!4JS/+<23U78`0[9]PUN=60634[9]TUID=2737[12]PUID=5036028
- 677: Text3: [28]UID=RN4I)>D[V6W4B]U=Q<U)2&*P[9]PUN=60634[9]TUID=2754[12]PUID=5036028
- 678: Text3: [28]UID=RN?</Q<YY=CDJ7;4*@":>X$`[9]PUN=60634[9]TUID=2735[12]PUID=5036028
- 679: Text3: [28]UID=RNU9>$T80_ITZN&*@5,W_-+`[9]PUN=60634[9]TUID=2752[12]PUID=5036028
- 680: Text3: [28]UID=RNY?OR[H.:V46(?K'CL.YPOP[9]PUN=60634[9]TUID=1815[12]PUID=5036028
- 681: Text3: [28]UID=RN:M,R8F953$^``$L*-"Z\T@[9]PUN=60634[9]TUID=1825[12]PUID=5036028

| ID | WBS | Task | Type | Duration | Start | Finish | Predecessors | Total slack | Free slack | Fin Ajustado | Responsable | Colaboradores |
| --- | --- | --- | --- | --- | --- | --- | --- | --- | --- | --- | --- | --- |
| 682 | 1.6.3.21 | **Migración final de Datos para Nómina** |  | 3d | 2014-04-03 | 2014-04-07 | 681 | 108d |  | 07/04/14 |  |  |
| 683 | 1.6.3.21.1 | Generación archivos de datos migración final |  | 1d | 2014-04-03 | 2014-04-03 |  | 108d | 0d | 03/04/14 | Adriana Espinar, Gabriela Busto | Carlos Peñaloza |
| 684 | 1.6.3.21.2 | Ejecución programas migración hacia Meta4 final |  | 1d | 2014-04-04 | 2014-04-04 | 683 | 108d | 0d | 04/04/14 | Adriana Espinar, Gabriela Busto | Carlos Peñaloza |
| 685 | 1.6.3.21.3 | Validación / Corrección de datos final |  | 1d | 2014-04-07 | 2014-04-07 | 684 | 108d | 0d | 07/04/14 | Adriana Espinar, Gabriela Busto | Carlos Peñaloza |
| 686 | 1.6.3.22 | Hito: Migración final de datos finalizada | milestone | 0d | 2014-04-07 | 2014-04-07 | 685 | 108d | 0d | 07/04/14 |  |  |
| 687 | 1.6.3.23 | **Pasaje a Producción** |  | 7d | 2014-04-08 | 2014-04-16 | 686 | 108d | 0d | 16/04/14 |  |  |
| 688 | 1.6.3.23.1 | Armado de documento de implementación |  | 5d | 2014-04-08 | 2014-04-14 |  | 146d |  | 14/04/14 | Adriana Espinar |  |
| 689 | 1.6.3.23.2 | Implementación (DEBERÍA SER EL 1/4/14) |  | 2d | 2014-04-08 | 2014-04-09 |  | 108d | 0d | 09/04/14 | Alejandro Tarallo |  |
| 690 | 1.6.3.23.3 | Documentación funcional de desarrollo | milestone | 0d | 2014-04-16 | 2014-04-16 | 635 | 144d |  | 16/04/14 | Summant |  |
| 691 | 1.6.3.24 | Hito: Pasaje a Producción finalizado | milestone | 0d | 2014-04-16 | 2014-04-16 | 687 | 144d |  | 16/04/14 |  |  |
| 692 | 1.6.3.25 | **Paralelo en Real** |  | 41d | 2014-04-10 | 2014-06-11 | 689 | 108d | 0d | 11/06/14 |  |  |
| 693 | 1.6.3.25.1 | Estructuras de Cálculos y Pruebas |  | 41d | 2014-04-10 | 2014-06-11 |  | 108d |  | 11/06/14 | Sebastián Herrera, Magdalena Museli | Adriana Espinar |
| 694 | 1.6.3.25.2 | Reportes Legajes |  | 41d | 2014-04-10 | 2014-06-11 |  | 108d |  | 11/06/14 | Sebastián Herrera, Magdalena Museli | Adriana Espinar |
| 695 | 1.6.3.25.3 | Reportes de Gestión |  | 41d | 2014-04-10 | 2014-06-11 |  | 108d |  | 11/06/14 | Sebastián Herrera, Magdalena Museli | Adriana Espinar |
| 696 | 1.6.3.25.4 | **Interfaces** |  | 41d | 2014-04-10 | 2014-06-11 |  | 108d |  | 11/06/14 |  |  |
| 697 | 1.6.3.25.4.1 | Gestión de Información |  | 41d | 2014-04-10 | 2014-06-11 |  | 108d |  | 11/06/14 | Sebastián Herrera, Magdalena Museli | Adriana Espinar |
| 698 | 1.6.3.25.4.2 | s (Haberes) |  | 41d | 2014-04-10 | 2014-06-11 |  | 108d |  | 11/06/14 | Sebastián Herrera, Magdalena Museli | Adriana Espinar |
| 699 | 1.6.3.25.4.3 | Contable |  | 41d | 2014-04-10 | 2014-06-11 |  | 108d |  | 11/06/14 | Sebastián Herrera, Magdalena Museli | Adriana Espinar |
| 700 | 1.6.3.26 | Hito: Paralelo en Real finalizado | milestone | 0d | 2014-06-11 | 2014-06-11 | 692 | 108d |  | 11/06/14 |  |  |
| 701 | 1.6.4 | Hito: Fase 1 Modulo Nomina Finalizado | milestone | 0d | 2014-06-11 | 2014-06-11 | 345 | 108d | 0d | 11/06/14 |  |  |
| 702 | 1.6.5 | Hito: Go Live finalizado | milestone | 0d | 2014-06-11 | 2014-06-11 | 701 | 108d | 0d | 11/06/14 |  |  |
| 703 | 1.6.6 | **Fase 2 - Simulación** |  | 35d? | 2014-06-11 | 2014-08-01 | 702 | 108d | 0d | 01/08/14 |  |  |
| 704 | 1.6.6.1 | Workshop Simulaciones |  | 1d? | 2014-06-12 | 2014-06-12 |  | 141d | 0d | 12/06/14 |  |  |
| 705 | 1.6.6.2 | Análisis de requerimientos de Simulaciones |  | 1d? | 2014-06-13 | 2014-06-13 | 354, 704 | 141d |  | 13/06/14 |  |  |
| 706 | 1.6.6.3 | Hito: Confección de ERS Simulación finalizados | milestone | 0d | 2014-06-11 | 2014-06-11 |  | 143d |  | 11/06/14 | Diego Prieto / Gabriela Bustos |  |
| 707 | 1.6.6.4 | Hito: Aceptación del usuario del ERS Simulación | milestone | 0d | 2014-06-11 | 2014-06-11 |  | 143d |  | 11/06/14 | Sebastián Herrera, Magdalena Museli |  |
| 708 | 1.6.6.5 | Personalización del módulo de simulaciones |  | 25d | 2014-06-12 | 2014-07-18 |  | 108d | 0d | 18/07/14 | TBD |  |
| 709 | 1.6.6.6 | Testing |  | 10d | 2014-07-21 | 2014-08-01 | 708 | 108d |  | 01/08/14 | TBD | Ignacio Alonso |
| 710 | 1.6.6.7 | Proceso de simulación de contabilidad |  | 10d | 2014-06-12 | 2014-06-26 |  | 133d |  | 26/06/14 | Recurso 5 |  |
| 711 | 1.6.7 | Hito: Fase 2 Simulación finalizado | milestone | 0d | 2014-08-01 | 2014-08-01 | 703 | 108d |  | 01/08/14 |  |  |
| 712 | 1.7 | Hito: Módulo Nomina Finalizado | milestone | 0d | 2014-08-01 | 2014-08-01 | 342 | 108d | 0d | 01/08/14 |  |  |

Notes:
- 682: Text3: [28]UID=RNZI$*>W(REDJQG+Q@Y#I]@`[9]PUN=60634[9]TUID=2620[12]PUID=5036028
- 683: Text3: [28]UID=RN.?__B2FJ=$.NIXAZV,N*`0[9]PUN=60634[9]TUID=2624[12]PUID=5036028
- 684: Text3: [28]UID=RN4QV.:*2"UDVOBJN>PC?2B0[9]PUN=60634[9]TUID=2626[12]PUID=5036028
- 685: Text3: [28]UID=RNN>E8#RZW(4Z%_097)AD>ZP[9]PUN=60634[9]TUID=2627[12]PUID=5036028
- 686: Text3: [28]UID=RN0Y^&)84D:$6XT4NU6/1MR0[9]PUN=60634[9]TUID=2628[12]PUID=5036028
- 687: Text3: [28]UID=RN<Q-1".7J5$^3W48ULB21&P[9]PUN=60634[9]TUID=1826[12]PUID=5036028
- 688: Text3: [28]UID=RNHB#)XT7X(D.7IX]\H!MB/@[9]PUN=60634[9]TUID=1827[12]PUID=5036028
- 689: Text3: [28]UID=RN_*5P`-NR4T*%N'7Y?)$4Z0[9]PUN=60634[9]TUID=1829[12]PUID=5036028
- 690: Text3: [28]UID=RNO[#RGF.S'T*3E%VC$:Z$_P[9]PUN=60634[9]TUID=1831[12]PUID=5036028
- 691: Text3: [28]UID=RNX2TUJ"Q.D$ZY<@\SG352RP[9]PUN=60634[9]TUID=2617[12]PUID=5036028
- 692: Text3: [28]UID=RNJ':[X,_=XTR\Z#S;;>RZ$P[9]PUN=60634[9]TUID=1816[12]PUID=5036028
- 693: Text3: [28]UID=RN9K<,]12@U$F)K&HH@+U%G`[9]PUN=60634[9]TUID=1817[12]PUID=5036028
- 694: Text3: [28]UID=RN:LH1W$[#.T>32(=C^CH]_`[9]PUN=60634[9]TUID=1818[12]PUID=5036028
- 695: Text3: [28]UID=RNTG/:(C,Y4$ND&B(/J^2)D0[9]PUN=60634[9]TUID=1819[12]PUID=5036028
- 696: Text3: [28]UID=RNJ#"IV'R1C4R?^V!?$@S_#0[9]PUN=60634[9]TUID=1820[12]PUID=5036028
- 697: Text3: [28]UID=RN43ZA"Q*YO$&Y/K87'L\H'`[9]PUN=60634[9]TUID=1821[12]PUID=5036028
- 698: Text3: [28]UID=RN'Q7`G0<S\$2"'F`WA/(V\P[9]PUN=60634[9]TUID=1822[12]PUID=5036028
- 699: Text3: [28]UID=RNX#U#]"]>LTN48SL)L2,$UP[9]PUN=60634[9]TUID=1823[12]PUID=5036028
- 700: Text3: [28]UID=RN+-=(51`EK4Z*%,#5XHUP]P[9]PUN=60634[9]TUID=1824[12]PUID=5036028
- 701: Text3: [28]UID=RN2.70=".6<T"X5VY=!%:3T0[9]PUN=60634[9]TUID=1832[12]PUID=5036028
- 702: Text3: [28]UID=RNREK?/`LQ7T6$P:TI,WGV7`[9]PUN=60634[9]TUID=2619[12]PUID=5036028
- 703: Text3: [28]UID=RNN+(#P4X1'4*8C#23475@G0[9]PUN=60634[9]TUID=1833[12]PUID=5036028
- 704: Text3: [28]UID=RNBE_OE?V$:DFFLS!?O:4$\@[9]PUN=60634[9]TUID=2311[12]PUID=5036028
- 705: Text3: [28]UID=RN$?L8W4;*MD2OA$PMT:3'YP[9]PUN=60634[9]TUID=2309[12]PUID=5036028
- 706: Text3: [28]UID=RNDFJ4[/]FQT^I)M\K@FT@,`[9]PUN=60634[9]TUID=2312[12]PUID=5036028
- 707: Text3: [28]UID=RN>Q,Q5'ZSXDZ"O.MPO)%Z4P[9]PUN=60634[9]TUID=2313[12]PUID=5036028
- 708: Text3: [28]UID=RN5P5:)E/D$4&A7E&>XEC$Z0[9]PUN=60634[9]TUID=1835[12]PUID=5036028
- 709: Text3: [28]UID=RN?A:VJSIX6DZ'*F%MELKS&@[9]PUN=60634[9]TUID=1836[12]PUID=5036028
- 710: Text3: [28]UID=RN6/CB_SZI)4R9Q>V\NM,W[0[9]PUN=60634[9]TUID=1791[12]PUID=5036028
- 711: Text3: [28]UID=RNFW15Q"\HC$J+]6-S/U!/M`[9]PUN=60634[9]TUID=1837[12]PUID=5036028
- 712: Text3: [28]UID=RNVCD2#\7"2467OCK'G&#1\@[9]PUN=60634[9]TUID=1838[12]PUID=5036028

| ID | WBS | Task | Type | Duration | Start | Finish | Predecessors | Complete | Remaining | Total slack | Free slack | Constraint | Fin Ajustado | Reporte Semanal | Responsable | Colaboradores |
| --- | --- | --- | --- | --- | --- | --- | --- | --- | --- | --- | --- | --- | --- | --- | --- | --- |
| 713 | 1.8 | **Etapa 3 - Autoservicio del Empleado y del Jefe (ESS/MSS)** |  | 564d? | 2012-02-03 A | 2014-06-04 |  | 37% | 355.72d? | 1d | 0d |  | 04/06/14 |  |  |  |
| 714 | 1.8.1 | Hito: Finalizar planificación de ESS/MSS | milestone | 0d | 2013-03-08 A | 2013-03-08 A |  | 100% |  |  |  | start no earlier than 2013-03-08 | A definir | ܁= |  |  |
| 715 | 1.8.2 | **Procesos** |  | 213d | 2013-07-19 A | 2014-06-04 |  | 84% | 33.63d | 1d | 0d |  | 04/06/14 |  |  |  |
| 716 | 1.8.2.1 | Relevamiento del proceso actual (La voz del cliente-Focus group) |  | 27d | 2013-07-19 A | 2013-08-30 A | 717SF | 100% |  |  |  |  | A definir | ܁M | Gustavo Rosemberg | Néstor Vergano |
| 717 | 1.8.2.2 | Entregable Interno - Diagnostico y Mejoras |  | 1d | 2013-08-30 A | 2013-09-02 A | 739SF-2d | 100% |  |  |  |  | A definir | ܁M | Gustavo Rosemberg | Néstor Vergano |
| 718 | 1.8.2.3 | Relevamiento en detalle del proceso de Tiempo de Trabajo en el sistema |  | 16d | 2013-09-24 A | 2013-10-16 A | 740SS | 100% |  |  |  |  | A definir | ܁M | Gustavo Rosemberg | Néstor Vergano |
| 719 | 1.8.2.4 | Relevamiento en detalle del proceso de Puesto de Trabajo en el sistema |  | 26d | 2013-09-23 A | 2013-10-29 A | 741SS | 100% |  |  |  | start no earlier than 2013-09-23 | A definir | ܁M | Gustavo Rosemberg | Néstor Vergano |
| 720 | 1.8.2.5 | Relevamiento en detalle del proceso de Datos Económicos en el sistema |  | 10d | 2013-09-17 A | 2013-09-30 A | 742SS | 100% |  |  |  | start no earlier than 2013-09-17 | A definir | ܁M | Gustavo Rosemberg | Néstor Vergano |
| 721 | 1.8.2.6 | Relevamiento en detalle del proceso de Mi Información en el sistema |  | 8d | 2013-09-16 A | 2013-09-25 A | 743SS | 100% |  |  |  |  | A definir | ܁M | Gustavo Rosemberg | Néstor Vergano |
| 722 | 1.8.2.7 | Hito: Recepción del ERS de Tiempo de Trabajo | milestone | 0d | 2013-10-17 A | 2013-10-17 A | 740, 718 | 100% |  |  |  | start no earlier than 2013-10-17 | A definir | ܁M | Néstor Vergano | Gustavo Rosemberg |
| 723 | 1.8.2.8 | Hito: Recepción del ERS de Puesto de Trabajo | milestone | 0d | 2013-10-29 A | 2013-10-29 A | 719, 741 | 100% |  |  |  |  | A definir | ܁M | Néstor Vergano | Gustavo Rosemberg |
| 724 | 1.8.2.9 | Hito: Recepción del ERS de Datos Económicos | milestone | 0d | 2013-10-04 A | 2013-10-04 A | 720, 742 | 100% |  |  |  | start no earlier than 2013-10-04 | A definir | ܁M | Néstor Vergano | Gustavo Rosemberg |
| 725 | 1.8.2.10 | Hito: Recepción del ERS de Mi Información | milestone | 0d | 2013-09-25 A | 2013-09-25 A | 721, 743 | 100% |  |  |  |  | A definir | ܁M | Néstor Vergano | Gustavo Rosemberg |
| 726 | 1.8.2.11 | Diseño del proceso de Tiempo de Trabajo |  | 1d | 2013-10-21 A | 2013-10-21 A | 718 | 100% |  |  |  | start no earlier than 2013-10-21 | A definir | ܁M | Gustavo Rosemberg | Néstor Vergano |
| 727 | 1.8.2.12 | Diseño del proceso de Puesto de Trabajo |  | 17d | 2013-10-31 A | 2013-11-27 A | 719 | 100% |  |  |  | finish no earlier than 2013-11-27 | A definir | ܁M | Gustavo Rosemberg | Néstor Vergano |
| 728 | 1.8.2.13 | Diseño del proceso de Datos Económicos |  | 5d | 2013-10-01 A | 2013-10-07 A | 720 | 100% |  |  |  |  | A definir | ܁M | Gustavo Rosemberg | Néstor Vergano |
| 729 | 1.8.2.14 | Diseño del proceso de Mi Información |  | 1d | 2013-09-26 A | 2013-09-26 A | 721 | 100% |  |  |  |  | A definir | ܁M | Gustavo Rosemberg | Néstor Vergano |
| 730 | 1.8.2.15 | Hito: Aprobación del diseño de Procesos de Tiempo de Trabajo finalizado | milestone | 0d | 2014-01-10 A | 2014-01-10 A | 726 | 100% |  |  |  | start no earlier than 2014-01-10 | A definir | ܁M | Gustavo Rosemberg | Néstor Vergano |
| 731 | 1.8.2.16 | Hito: Aprobación del diseño de Procesos de Puesto de Trabajo finalizado | milestone | 0d | 2014-01-24 A | 2014-01-24 A | 727FS+2d | 100% |  |  |  | start no earlier than 2014-01-24 | A definir | ܁M | Gustavo Rosemberg | Néstor Vergano |
| 732 | 1.8.2.17 | Hito: Aprobación del diseño de Procesos de Datos Económicos finalizado | milestone | 0d | 2013-11-08 A | 2013-11-08 A | 728 | 100% |  |  |  | start no earlier than 2013-11-08 | A definir | ܁M | Gustavo Rosemberg | Néstor Vergano |
| 733 | 1.8.2.18 | Hito: Aprobación del diseño de Procesos de Mi Información finalizado | milestone | 0d | 2013-11-08 A | 2013-11-08 A | 729 | 100% |  |  |  | start no earlier than 2013-11-08 | A definir | ܁M | Gustavo Rosemberg | Néstor Vergano |
| 734 | 1.8.2.19 | Modelado ARIS para publicar en Claridad |  | 21d | 2014-05-07 | 2014-06-04 | 873SF |  |  | 1d |  | start no earlier than 2014-05-07 | 04/06/14 |  | Gustavo Rosemberg | Néstor Vergano |
| 735 | 1.8.3 | Hito: Procesos y Modelo Aris finalizado | milestone | 0d | 2014-06-04 | 2014-06-04 | 715 |  |  | 1d |  |  | 04/06/14 |  | Gustavo Rosemberg | Néstor Vergano |
| 736 | 1.8.4 | **Análisis y Diseño** |  | 103d? | 2013-08-30 A | 2014-01-31 |  | 98% | 1.64d? | 82d | 0d |  | 31/01/14 |  |  |  |
| 737 | 1.8.4.1 | Hito: Identificación de referentes por áreas de negocios finalizada | milestone | 0d | 2013-08-30 A | 2013-08-30 A |  | 100% |  |  |  | start no earlier than 2013-08-30 | A definir | ܁= | Néstor Vergano | Ignacio Alonso |
| 738 | 1.8.4.2 | Workshop ESS/MSS Estandar |  | 1d | 2013-09-04 A | 2013-09-04 A | 737 | 100% |  |  |  | start no earlier than 2013-09-04 | A definir | ܁= | Summant | Néstor Vergano |
| 739 | 1.8.4.3 | Workshop ESS/MSS Revisión de RHOL |  | 1d | 2013-09-04 A | 2013-09-04 A | 737 | 100% |  |  |  | start no earlier than 2013-09-04 | A definir | ܁= | Summant | Néstor Vergano |
| 740 | 1.8.4.4 | Análisis de requerimientos de Tiempo de Trabajo |  | 16d | 2013-09-24 A | 2013-10-16 A | 739 | 100% |  |  |  | start no earlier than 2013-09-24 | A definir | ܁= | Gabriela Bustos | Néstor Vergano |
| 741 | 1.8.4.5 | Análisis de requerimientos de Puesto de Trabajo |  | 26d | 2013-09-23 A | 2013-10-29 A | 739 | 100% |  |  |  | start no earlier than 2013-09-23 | A definir | ܁= | Gabriela Bustos | Néstor Vergano |
| 742 | 1.8.4.6 | Análisis de requerimientos de Datos Económicos |  | 10d | 2013-09-17 A | 2013-09-30 A | 739 | 100% |  |  |  | start no earlier than 2013-09-17 | A definir | ܁= | Gabriela Bustos | Néstor Vergano |
| 743 | 1.8.4.7 | Análisis de requerimientos de Mi Información |  | 8d | 2013-09-16 A | 2013-09-25 A | 739 | 100% |  |  |  | start no earlier than 2013-09-16 | A definir | ܁= | Gabriela Bustos | Néstor Vergano |
| 744 | 1.8.4.8 | Hito: Documentar el traslado finalizado | milestone | 0d | 2013-10-04 A | 2013-10-04 A | 743 | 100% |  |  |  | start no earlier than 2013-10-04 | A definir | ܁= | Gabriela Bustos | Ignacio Alonso |
| 745 | 1.8.4.9 | Hito: Confección del ERS de Tiempo de Trabajo Finalizado | milestone | 0d | 2013-10-16 A | 2013-10-16 A | 740 | 100% |  |  |  |  | A definir | ܁= | Gabriela Bustos | Néstor Vergano |
| 746 | 1.8.4.10 | Hito: Confección del ERS Puesto de Trabajo Finalizado | milestone | 0d | 2013-10-29 A | 2013-10-29 A | 741 | 100% |  |  |  |  | A definir | ܁= | Gabriela Bustos | Néstor Vergano |
| 747 | 1.8.4.11 | Hito: Confección del ERS Datos Económicos Finalizado | milestone | 0d | 2013-10-04 A | 2013-10-04 A | 742 | 100% |  |  |  |  | A definir | ܁= | Gabriela Bustos | Néstor Vergano |
| 748 | 1.8.4.12 | Hito: Confección del ERS Mi Información Finalizado | milestone | 0d | 2013-09-25 A | 2013-09-25 A | 743 | 100% |  |  |  |  | A definir | ܁= | Gabriela Bustos | Néstor Vergano |
| 749 | 1.8.4.13 | Hito: Aceptación del usuario del ERS de Tiempo de Trabajo | milestone | 0d | 2014-01-31 | 2014-01-31 | 730 |  |  | 82d |  | start no earlier than 2014-01-31 | 31/01/14 | ܁= | Ana Parimbelli | Néstor Vergano |
| 750 | 1.8.4.14 | Hito: Aceptación del usuario del ERS de Puesto de Trabajo | milestone | 0d | 2014-01-31 | 2014-01-31 | 731 |  |  | 82d |  | start no earlier than 2014-01-31 | 31/01/14 | ܁= | Ana Parimbelli | Néstor Vergano |
| 751 | 1.8.4.15 | Hito: Identificar reportes para la 1ra fase | milestone | 0d | 2014-01-10 | 2014-01-10 |  |  |  | 97d |  | start no earlier than 2014-01-10 | A definir |  | Ana Parimbelli | Néstor Vergano |
| 752 | 1.8.4.16 | Hito: Aceptación del usuario del ERS de Datos Económicos | milestone | 0d | 2013-11-08 A | 2013-11-08 A | 732 | 100% |  |  |  |  | A definir | ܁= | Ana Parimbelli | Néstor Vergano |
| 753 | 1.8.4.17 | Hito: Aceptación del usuario del ERS de Mi Información | milestone | 0d | 2013-11-08 A | 2013-11-08 A | 733 | 100% |  |  |  |  | A definir | ܁= | Ana Parimbelli | Néstor Vergano |
| 754 | 1.8.4.18 | Evaluar alcance y esfuerzo de visualización de encuesta de Clima |  | 1d? | 2013-11-08 | 2013-11-08 | 753 |  |  | 136d |  |  | A definir |  | Florencia Bozzini | Néstor Vergano |
| 755 | 1.8.5 | Hito: Análisis y diseño Finalizado | milestone | 0d | 2014-01-31 | 2014-01-31 | 736 |  |  | 82d |  |  | 31/01/14 |  |  |  |

Notes:
- 713: Text3: [28]UID=RNA&B=X=ZVN$NXMN#2X'18#`[9]PUN=60634[9]TUID=1842[12]PUID=5036028
- 714: Text3: [28]UID=RNR/)D@>!!"DV3/B<1I?_&_P[9]PUN=60634[9]TUID=1942[12]PUID=5036028
- 715: Text3: [28]UID=RNY#M<@2/7F4*HTXA$<17J6@[9]PUN=60634[9]TUID=2227[12]PUID=5036028
- 716: Text3: [28]UID=RN-18.T,63FT",9:=`,QW8(@[9]PUN=60634[9]TUID=2228[12]PUID=5036028
- 717: Text3: [28]UID=RN=D(]2XX@S$N^\R[K(=^\E`[9]PUN=60634[9]TUID=2229[12]PUID=5036028
- 718: Text3: [28]UID=RN\RJEP_R@A42@KE>#BB:&>P[9]PUN=60634[9]TUID=2230[12]PUID=5036028
- 719: Text3: [28]UID=RNJKA01G12-$Z_YJ[FE)[8X@[9]PUN=60634[9]TUID=2684[12]PUID=5036028
- 720: Text3: [28]UID=RN\SW</X]+QT.B=CRZ6<%[YP[9]PUN=60634[9]TUID=2683[12]PUID=5036028
- 721: Text3: [28]UID=RNB"4U:-%;"$>B))[+]H@_20[9]PUN=60634[9]TUID=2682[12]PUID=5036028
- 722: Text3: [28]UID=RN+R+'$%-&/4ND,3V$]\[R'0[9]PUN=60634[9]TUID=2593[12]PUID=5036028
- 723: Text3: [28]UID=RN?`1JH!P'ETZ4W-))E?"ZB0[9]PUN=60634[9]TUID=2687[12]PUID=5036028
- 724: Text3: [28]UID=RNU)H[R!?ZOT"P9!\BZ]F<+P[9]PUN=60634[9]TUID=2686[12]PUID=5036028
- 725: Text3: [28]UID=RN%I%@\,B[KD.4M19$A7U-P0[9]PUN=60634[9]TUID=2685[12]PUID=5036028
- 726: Text3: [28]UID=RN?>UT?4Z";$B7)<NR@![5$@[9]PUN=60634[9]TUID=2231[12]PUID=5036028
- 727: Text3: [28]UID=RN?>+$]<E7(TJ?H\[UHXAB`P[9]PUN=60634[9]TUID=2690[12]PUID=5036028
- 728: Text3: [28]UID=RN7XV2L6AKI$>%GU`=AJOQ`P[9]PUN=60634[9]TUID=2689[12]PUID=5036028
- 729: Text3: [28]UID=RN'8M]0VAVPD>EGRI9R=$V;0[9]PUN=60634[9]TUID=2688[12]PUID=5036028
- 730: Text3: [28]UID=RN)[$H[AE`-TF(BVPV.3V?%0[9]PUN=60634[9]TUID=2595[12]PUID=5036028
- 731: Text3: [28]UID=RNHR`E'([!WT>-55'I5[H0[P[9]PUN=60634[9]TUID=2693[12]PUID=5036028
- 732: Text3: [28]UID=RN3U/L<>4H(T&*^\1L*#$QPP[9]PUN=60634[9]TUID=2692[12]PUID=5036028
- 733: Text3: [28]UID=RN/=06UN$\OT:F"!J^8&!7_@[9]PUN=60634[9]TUID=2691[12]PUID=5036028
- 734: Text3: [28]UID=RNJ7A<#(-%OD":45VNT8M;9P[9]PUN=60634[9]TUID=2232[12]PUID=5036028
- 735: Text3: [28]UID=RN8^-%ORU+!T>13VN.<11E!0[9]PUN=60634[9]TUID=2236[12]PUID=5036028
- 736: Text3: [28]UID=RNM8](;[9=ND>Z1`-"!C/@V@[9]PUN=60634[9]TUID=1843[12]PUID=5036028
- 737: Text3: [28]UID=RNV\I.S$Z+KDN&YWU;4?0=F0[9]PUN=60634[9]TUID=2584[12]PUID=5036028
- 738: Text3: [28]UID=RNX2FP=8\XY$2+6MN,@@!:B0[9]PUN=60634[9]TUID=1844[12]PUID=5036028
- 739: Text3: [28]UID=RNA784?@#WRTJ>#7G\D+^H^`[9]PUN=60634[9]TUID=1845[12]PUID=5036028
- 740: Text3: [28]UID=RNT,VVT"#,7D&%+WZE732<5`[9]PUN=60634[9]TUID=1846[12]PUID=5036028
- 741: Text3: [28]UID=RNPUV.61^5<T*\GZD'+5>G!0[9]PUN=60634[9]TUID=2675[12]PUID=5036028
- 742: Text3: [28]UID=RNN-Q[$XZ&:4:J3J_J`Q#I`P[9]PUN=60634[9]TUID=2674[12]PUID=5036028
- 743: Text3: [28]UID=RNXHA0[GU])$6,.EK0?#&N3`[9]PUN=60634[9]TUID=2673[12]PUID=5036028
- 744: Text3: [28]UID=RNNJJRH`.C,D&$"<.NU,9P2`[9]PUN=60634[9]TUID=2671[12]PUID=5036028
- 745: Text3: [28]UID=RN\>0QO-NGUT"'A(60?P^SD`[9]PUN=60634[9]TUID=1847[12]PUID=5036028
- 746: Text3: [28]UID=RNCPGAMB')44J$ZO[]627'M`[9]PUN=60634[9]TUID=2678[12]PUID=5036028
- 747: Text3: [28]UID=RN8;@U;^6I5$B-8I:*8X6G<P[9]PUN=60634[9]TUID=2677[12]PUID=5036028
- 748: Text3: [28]UID=RN(QL!G9A2XTF925'^5#EQEP[9]PUN=60634[9]TUID=2676[12]PUID=5036028
- 749: Text3: [28]UID=RND-.A'H"=L4&"/?HR9,[:/0[9]PUN=60634[9]TUID=1848[12]PUID=5036028
- 750: Text3: [28]UID=RNEU)MB\,S3D2ID8N"#",!G0[9]PUN=60634[9]TUID=2681[12]PUID=5036028
- 751: Text3: [28]UID=RNR$VH+S@L\TF-P1@P\]Q$#`[9]PUN=60634[9]TUID=2965[12]PUID=5036028
- 752: Text3: [28]UID=RN"SE)S_X&^TJ`,-4EQE<#6`[9]PUN=60634[9]TUID=2680[12]PUID=5036028
- 753: Text3: [28]UID=RNQ!`0WZ:V]T&;&5L9N_(#]@[9]PUN=60634[9]TUID=2679[12]PUID=5036028
- 754: Text3: [28]UID=RN759:*GN=W$2#C?@#=.M'10[9]PUN=60634[9]TUID=2672[12]PUID=5036028
- 755: Text3: [28]UID=RNMW=M)8*00D2`\IC=7.`!LP[9]PUN=60634[9]TUID=1849[12]PUID=5036028

| ID | WBS | Task | Type | Duration | Start | Finish | Predecessors | Complete | Remaining | Total slack | Free slack | Constraint | Fin Ajustado | Responsable | Reporte Semanal |
| --- | --- | --- | --- | --- | --- | --- | --- | --- | --- | --- | --- | --- | --- | --- | --- |
| 756 | 1.8.6 | **WorkShop** |  | 31d | 2013-10-09 A | 2013-11-22 A |  | 100% |  |  |  |  | A definir |  |  |
| 757 | 1.8.6.1 | Diagnóstico macro para participación Workshop Selección |  | 12d | 2013-10-09 A | 2013-10-25 A |  | 100% |  |  |  | start no earlier than 2013-10-09 | A definir | Gustavo Rosemberg | ܁Q |
| 758 | 1.8.6.2 | Diagnóstico macro para participación Workshop Desarrollo |  | 9d | 2013-10-28 A | 2013-11-08 A | 757 | 100% |  |  |  |  | A definir | Gustavo Rosemberg | ܁Q |
| 759 | 1.8.6.3 | Diagnóstico macro para participación Workshop Formación |  | 5d | 2013-11-11 A | 2013-11-15 A | 758 | 100% |  |  |  |  | A definir | Gustavo Rosemberg | ܁Q |
| 760 | 1.8.6.4 | Diagnóstico macro para participación Workshop Compensación |  | 5d | 2013-11-18 A | 2013-11-22 A | 759 | 100% |  |  |  |  | A definir | Gustavo Rosemberg | ܁Q |
| 761 | 1.8.7 | Hito: WorkShop finalizados | milestone | 0d | 2013-11-22 A | 2013-11-22 A | 756 | 100% |  |  |  |  | A definir |  |  |
| 762 | 1.8.8 | **Plan de Comunicación - GC** |  | 82.5d | 2013-10-22 A | 2014-02-21 |  | 75% | 20.62d | 66.5d | 0d |  | 21/02/14 |  |  |
| 763 | 1.8.8.1 | Análisis y Entendimiento |  | 10d | 2013-10-22 A | 2014-02-04 | 730, 733, 732, 731 | 75% | 2.5d | 76.25d | 0d |  | 04/02/14 | Florencia Bozzini | ܁N |
| 764 | 1.8.8.2 | Armado de documentación |  | 5d | 2014-02-04 A | 2014-02-11 | 763 | 75% | 1.25d | 72.5d | 0d |  | 11/02/14 | Florencia Bozzini | ܁N |
| 765 | 1.8.8.3 | Validación de documentación |  | 5d | 2014-02-11 A | 2014-02-18 | 764 | 75% | 1.25d | 68.75d | 0d |  | 18/02/14 | Florencia Bozzini | ܁N |
| 766 | 1.8.8.4 | Diseño del Plan de Comunicación |  | 3d | 2014-02-18 A | 2014-02-21 | 765 | 75% | 0.75d | 66.5d | 0d |  | 21/02/14 | Florencia Bozzini | ܁N |
| 767 | 1.8.8.5 | Hito: Validación del Plan de Comunicación finalizada | milestone | 0d | 2014-02-21 | 2014-02-21 | 766 |  |  | 66.5d |  |  | 21/02/14 | Florencia Bozzini | ܁N |
| 768 | 1.8.9 | Hito: Plan de Comunicación finalizado | milestone | 0d | 2014-02-21 | 2014-02-21 | 762 |  |  | 66.5d |  |  | 21/02/14 | Florencia Bozzini |  |
| 769 | 1.8.10 | **Construcción** |  | 504d? | 2012-02-03 A | 2014-02-28 |  | 13% | 436.94d? | 59d | 0d |  | 28/02/14 |  |  |
| 770 | 1.8.10.1 | **Construcción Fase 1** |  | 60d? | 2013-12-03 A | 2014-02-28 |  | 25% | 45d? | 55d | 0d |  | 28/02/14 |  |  |
| 771 | 1.8.10.1.1 | **Módulo: Datos Personales** |  | 59.75d? | 2013-12-03 A | 2014-02-28 |  | 48% | 31.28d? | 44.25d | 0d |  | 28/02/14 |  |  |
| 772 | 1.8.10.1.1.1 | Datos personales |  | 4d | 2013-12-03 A | 2013-12-06 A |  | 100% |  |  |  | start no earlier than 2013-12-03 | A definir | Leandro Lomonaco | ܁> |
| 773 | 1.8.10.1.1.2 | Estado civil |  | 11d | 2014-01-06 A | 2014-01-20 A |  | 100% |  |  |  | start no earlier than 2014-01-06 | A definir | Leandro Lomonaco | ܁> |
| 774 | 1.8.10.1.1.3 | Domicilios |  | 2d | 2013-12-26 A | 2013-12-28 A |  | 100% |  |  |  | finish no earlier than 2013-12-28 | A definir | Leandro Lomonaco | ܁> |
| 775 | 1.8.10.1.1.4 | Obra social - Prepagas |  | 1d | 2013-12-30 A | 2013-12-30 A |  | 100% |  |  |  | start no earlier than 2013-12-29 | A definir | Leandro Lomonaco | ܁> |
| 776 | 1.8.10.1.1.5 | Hobbies/deportes |  | 6d | 2013-12-16 A | 2013-12-23 A |  | 100% |  |  |  | start no earlier than 2013-12-16 | A definir | Leandro Lomonaco | ܁> |
| 777 | 1.8.10.1.1.6 | Familiares |  | 7d | 2014-01-24 A | 2014-02-04 |  | 50% | 3.5d | 62.25d |  | finish no earlier than 2014-02-04 | 04/02/14 | Leandro Lomonaco | ܁> |
| 778 | 1.8.10.1.1.7 | Historial académico |  | 5d | 2014-02-05 | 2014-02-12 |  |  |  | 56.25d |  | finish no earlier than 2014-02-12 | 12/02/14 | Leandro Lomonaco | ܁> |
| 779 | 1.8.10.1.1.8 | Historial profesional |  | 1d | 2014-02-13 | 2014-02-14 |  |  |  | 54.25d |  | finish no earlier than 2014-02-14 | 14/02/14 | Leandro Lomonaco | ܁> |
| 780 | 1.8.10.1.1.9 | Formación complementaria |  | 1d | 2014-02-17 | 2014-02-18 |  |  |  | 52.25d |  | finish no earlier than 2014-02-18 | 18/02/14 | Leandro Lomonaco | ܁> |
| 781 | 1.8.10.1.1.10 | Actividad económica secundaria |  | 3d | 2014-02-19 | 2014-02-24 |  |  |  | 48.25d |  | finish no earlier than 2014-02-24 | 24/02/14 | Leandro Lomonaco | ܁> |
| 782 | 1.8.10.1.1.11 | MSS - Datos personales |  | 3d | 2014-02-25 A | 2014-02-28 A |  | 100% |  |  |  | finish no earlier than 2014-02-28 | 28/02/14 | Leandro Lomonaco | ܁> |
| 783 | 1.8.10.1.1.12 | Validación RH |  | 19d | 2014-02-03 | 2014-02-28 |  |  |  | 44.25d |  | finish no earlier than 2014-02-28 | 28/02/14 | Gabriela Bustos | ܁> |
| 784 | 1.8.10.1.1.13 | Campaña de actualización de datos |  | 1d? | 2014-02-03 | 2014-02-03 |  |  |  | 63d |  | start no earlier than 2014-02-02 | 03/02/14 | TBD | ܁> |
| 785 | 1.8.10.1.2 | Hito: Módulo: Datos Personales finalizado | milestone | 0d | 2014-02-28 | 2014-02-28 | 771 |  |  | 44.25d | 0d |  | 28/02/14 |  |  |

Notes:
- 756: Text3: [28]UID=RNNZFQ#3"+KT2>^B$=X7]V40[9]PUN=60634[9]TUID=2713[12]PUID=5036028
- 757: Text3: [28]UID=RN'9I.QYASF$R,,6"K`.4"20[9]PUN=60634[9]TUID=2719[12]PUID=5036028
- 758: Text3: [28]UID=RNS?TS;L4Q8T"`Q37'-Y7830[9]PUN=60634[9]TUID=2718[12]PUID=5036028
- 759: Text3: [28]UID=RN5P&1GZ2.1T"_(B`K9(AA8P[9]PUN=60634[9]TUID=2717[12]PUID=5036028
- 760: Text3: [28]UID=RN\]\A!`^<3DNKT-NX`1(\B0[9]PUN=60634[9]TUID=2716[12]PUID=5036028
- 761: Text3: [28]UID=RNEZ$#LXZ&54.4+!N[,!U#'0[9]PUN=60634[9]TUID=2715[12]PUID=5036028
- 762: Text3: [28]UID=RN>!2;$Y72`D>OOOCY#5>%8@[9]PUN=60634[9]TUID=2380[12]PUID=5036028
- 763: Text3: [28]UID=RN),C6?^.8L4^(5Y`F*QC;90[9]PUN=60634[9]TUID=2382[12]PUID=5036028
- 764: Text3: [28]UID=RN%S75\!.%[$&W@YG_3*GF.@[9]PUN=60634[9]TUID=2383[12]PUID=5036028
- 765: Text3: [28]UID=RN(&D\NT#C@T2KE[24>!LCI@[9]PUN=60634[9]TUID=2384[12]PUID=5036028
- 766: Text3: [28]UID=RN1R]ORS4NND&G-83I&@>J&@[9]PUN=60634[9]TUID=2385[12]PUID=5036028
- 767: Text3: [28]UID=RNNEIQ1_]784&UR-EFE=M\W0[9]PUN=60634[9]TUID=2386[12]PUID=5036028
- 768: Text3: [28]UID=RNX';5RW6RP$N8]0'3]D4PN0[9]PUN=60634[9]TUID=2381[12]PUID=5036028
- 769: Text3: [28]UID=RN`#O0O7Q?=$J5A(`:43._P@[9]PUN=60634[9]TUID=1850[12]PUID=5036028
- 770: Text3: [28]UID=RNR(=W.F7J@T*ZXJ5,<,D7]P[9]PUN=60634[9]TUID=2866[12]PUID=5036028
- 771: Text3: [28]UID=RN?V?S=0_+$DRH<0:A^\!1]P[9]PUN=60634[9]TUID=2801[12]PUID=5036028
- 772: Text3: [28]UID=RNX\1[">509D&IR4&M[>S,[P[9]PUN=60634[9]TUID=2802[12]PUID=5036028
- 773: Text3: [28]UID=RNQ<Q)8KK^%T:/I;'6`[W^3@[9]PUN=60634[9]TUID=2799[12]PUID=5036028
- 774: Text3: [28]UID=RNV012N"O!1TBE>?-!,QV,P`[9]PUN=60634[9]TUID=2798[12]PUID=5036028
- 775: Text3: [28]UID=RN%7K+)#U.*4B7$?1B(H7QDP[9]PUN=60634[9]TUID=2797[12]PUID=5036028
- 776: Text3: [28]UID=RNU6\R]R(:E4"^E'NX`6!5(@[9]PUN=60634[9]TUID=2796[12]PUID=5036028
- 777: Text3: [28]UID=RNK2X-AC:[5T:/XL4AZ2Y)0P[9]PUN=60634[9]TUID=2795[12]PUID=5036028
- 778: Text3: [28]UID=RN]I"8Y/2)!4J-T*T$]*O/&0[9]PUN=60634[9]TUID=2794[12]PUID=5036028
- 779: Text3: [28]UID=RNR`?_WRML"TRM-RN\1BR:,`[9]PUN=60634[9]TUID=2793[12]PUID=5036028
- 780: Text3: [28]UID=RN,\5S/Y1O%4V!,9713RHN(`[9]PUN=60634[9]TUID=2792[12]PUID=5036028
- 781: Text3: [28]UID=RNI5CAJ0GF%T*(@/SVXS:8\`[9]PUN=60634[9]TUID=2791[12]PUID=5036028
- 782: Text3: [28]UID=RNQ896H1L.:$*VN0M`P8X6L`[9]PUN=60634[9]TUID=2790[12]PUID=5036028
- 783: Text3: [28]UID=RN2]8*(N\&0T&_A7`:!PR9?P[9]PUN=60634[9]TUID=2789[12]PUID=5036028
- 784: Text3: [28]UID=RNP[J&.<%9O4V7!R"/!,FVWP[9]PUN=60634[9]TUID=2788[12]PUID=5036028
- 785: Text3: [28]UID=RNG9.7YO$HX4B^/]/NH*%[OP[9]PUN=60634[9]TUID=2787[12]PUID=5036028

| ID | WBS | Task | Type | Duration | Start | Finish | Predecessors | Complete | Remaining | Total slack | Free slack | Constraint | Fin Ajustado | Responsable | Reporte Semanal |
| --- | --- | --- | --- | --- | --- | --- | --- | --- | --- | --- | --- | --- | --- | --- | --- |
| 786 | 1.8.10.1.3 | **Módulo: Datos Económicos** |  | 40d | 2014-01-06 A | 2014-02-28 |  | 21% | 31.65d | 46d | 0d |  | 28/02/14 |  |  |
| 787 | 1.8.10.1.3.1 | Recibo electrónico |  | 19d | 2014-01-06 A | 2014-01-31 A |  | 100% |  |  |  | finish no earlier than 2014-01-31 | 31/01/14 | Oslvaldo Fernandez | ܁S |
| 788 | 1.8.10.1.3.2 | MSS - Recibos de colaboradores |  | 10d | 2014-02-03 | 2014-02-14 |  |  |  | 56d |  | start no earlier than 2014-02-03 | 14/02/14 | Oslvaldo Fernandez | ܁S |
| 789 | 1.8.10.1.3.3 | Mi detalle de comisiones (Recibo de productividad) |  | 10d | 2014-02-17 | 2014-02-28 |  |  |  | 46d |  | start no earlier than 2014-02-17 | 28/02/14 | Oslvaldo Fernandez | ܁S |
| 790 | 1.8.10.1.3.4 | Acumulado anual |  | 5d | 2014-01-06 | 2014-01-10 |  |  |  | 81d |  | start no earlier than 2014-01-06 | A definir | Martin Piñeiro | ܁S |
| 791 | 1.8.10.1.3.5 | Gestión de Falla de Caja |  | 15d | 2014-01-13 | 2014-01-31 |  |  |  | 66d |  | start no earlier than 2014-01-13 | 31/01/14 | Martin Piñeiro | ܁S |
| 792 | 1.8.10.1.3.6 | Formulario 649 |  | 12d | 2014-02-03 | 2014-02-18 |  |  |  | 54d |  | start no earlier than 2014-02-03 | 18/02/14 | Martin Piñeiro | ܁S |
| 793 | 1.8.10.1.3.7 | Formulario de 572 |  | 20d | 2014-02-03 | 2014-02-28 |  |  |  | 46d |  | start no earlier than 2014-02-03 | 28/02/14 | Gabriela Bustos | ܁S |
| 794 | 1.8.10.1.4 | Hito: Módulo: Datos Económicos finalizado | milestone | 0d | 2014-02-28 | 2014-02-28 | 786 |  |  | 46d | 0d |  | 28/02/14 |  |  |
| 795 | 1.8.10.1.5 | **Módulo: Puesto de Trabajo** |  | 40d? | 2014-01-06 | 2014-02-28 |  |  |  | 55d | 0d |  | 28/02/14 |  |  |
| 796 | 1.8.10.1.5.1 | Puesto mapping |  | 20d | 2014-01-06 | 2014-01-31 |  |  |  | 75d |  | start no earlier than 2014-01-06 | 31/01/14 | Julio Garnica | ܁R |
| 797 | 1.8.10.1.5.2 | Traslados |  | 20d | 2014-02-03 | 2014-02-28 |  |  |  | 55d |  | start no earlier than 2014-02-03 | 28/02/14 | Julio Garnica | ܁R |
| 798 | 1.8.10.1.5.3 | Mi lugar de trabajo |  | 1d? | 2014-02-03 | 2014-02-03 |  |  |  | 74d |  | start no earlier than 2014-02-02 | 03/02/14 |  |  |
| 799 | 1.8.10.1.5.4 | Adaptación a mi puesto |  | 1d? | 2014-02-03 | 2014-02-03 |  |  |  | 74d |  | start no earlier than 2014-02-03 | 03/02/14 |  |  |
| 800 | 1.8.10.1.5.5 | Mis preferencias profesionales |  | 1d? | 2014-02-03 | 2014-02-03 |  |  |  | 74d |  | start no earlier than 2014-02-03 | 03/02/14 |  |  |
| 801 | 1.8.10.1.6 | Hito: Módulo: Puesto de Trabajo finalziado | milestone | 0d | 2014-02-28 | 2014-02-28 | 795 |  |  | 55d | 0d |  | 28/02/14 |  |  |
| 802 | 1.8.10.2 | Hito: Construcción Fase 1 finalizada | milestone | 0d | 2014-02-28 | 2014-02-28 | 770 |  |  | 59d |  |  | 28/02/14 |  |  |
| 803 | 1.8.10.3 | **Construcción Fase 2** |  | 492d | 2012-02-03 | 2014-02-12 |  |  |  | 71d | 0d |  | 12/02/14 |  |  |
| 804 | 1.8.10.3.1 | **Módulo: Mi tiempo de Trabajo** |  | 492d | 2012-02-03 | 2014-02-12 |  |  |  | 63d | 0d |  | 12/02/14 |  |  |
| 814 | 1.8.10.3.1.1 | **Construcción Vacaciones** |  | 36d | 2013-10-17 | 2013-12-09 |  |  |  | 63d | 0d |  | A definir |  |  |
| 815 | 1.8.10.3.1.1.1 | Adecuación Estandar |  | 30d | 2013-10-17 | 2013-11-29 | 745 |  |  | 63d | 0d |  | A definir | Recurso 1 |  |
| 816 | 1.8.10.3.1.1.2 | Reporte Vacaciones |  | 3d | 2013-12-02 | 2013-12-04 | 815 |  |  | 63d | 0d |  | A definir | Recurso 1 |  |
| 817 | 1.8.10.3.1.1.3 | Reporte Saldos de cabecera |  | 3d | 2013-12-05 | 2013-12-09 | 816 |  |  | 63d |  |  | A definir | Recurso 1 |  |
| 818 | 1.8.10.3.1.2 | Hito: Construcción Vacaciones finalizado | milestone | 0d | 2013-12-09 | 2013-12-09 | 814 |  |  | 96d | 0d |  | A definir |  |  |

Notes:
- 786: Text3: [28]UID=RN\L>VIT.M.$&#?7E)7B5F2@[9]PUN=60634[9]TUID=2817[12]PUID=5036028
- 787: Text3: [28]UID=RN^?JN=[@'9T>+W[:(%_4T@0[9]PUN=60634[9]TUID=2816[12]PUID=5036028
- 788: Text3: [28]UID=RNO*=39OEO]$V?Z"`1RDG>L0[9]PUN=60634[9]TUID=2815[12]PUID=5036028
- 789: Text3: [28]UID=RND<W+QKN&.TV-.N91H%,J<P[9]PUN=60634[9]TUID=2814[12]PUID=5036028
- 790: Text3: [28]UID=RNW14R\L^O94V]T$V4')RK8@[9]PUN=60634[9]TUID=2813[12]PUID=5036028
- 791: Text3: [28]UID=RN0D;G^M::?$FI>;41CYV&:@[9]PUN=60634[9]TUID=2812[12]PUID=5036028
- 792: Text3: [28]UID=RNSK7X\M5J-T*7!2Q3AX?L=`[9]PUN=60634[9]TUID=2811[12]PUID=5036028
- 793: Text3: [28]UID=RN"K>JZ_,\%$V2W)G<H>E;TP[9]PUN=60634[9]TUID=2810[12]PUID=5036028
- 794: Text3: [28]UID=RNJQF(X3-`P$R\^'9S"32L,P[9]PUN=60634[9]TUID=2809[12]PUID=5036028
- 795: Text3: [28]UID=RN/OUVH&:@?T".80[T0:`680[9]PUN=60634[9]TUID=2830[12]PUID=5036028
- 796: Text3: [28]UID=RN<,`S1GH1YT&@(ZL:ITIM&P[9]PUN=60634[9]TUID=2829[12]PUID=5036028
- 797: Text3: [28]UID=RN(W?<Z+-`74J]W(D=2(1E>@[9]PUN=60634[9]TUID=2828[12]PUID=5036028
- 798: Text3: [28]UID=RNK?5TKAEO9$:82@B*]PY84P[9]PUN=60634[9]TUID=2827[12]PUID=5036028
- 799: Text3: [28]UID=RNSPGW:L_:[T*=W-AT'Z+&F@[9]PUN=60634[9]TUID=2826[12]PUID=5036028
- 800: Text3: [28]UID=RNFT_+P7CO946D\^-J/+J"SP[9]PUN=60634[9]TUID=2825[12]PUID=5036028
- 801: Text3: [28]UID=RN>C=BLA\`CD*5UBL[H`IRY`[9]PUN=60634[9]TUID=2824[12]PUID=5036028
- 802: Text3: [28]UID=RN7_%]Z\X;?$^)V15I5+,:M@[9]PUN=60634[9]TUID=2867[12]PUID=5036028
- 803: Text3: [28]UID=RN=O#V?"\-\TV$UM>/&S,Z3P[9]PUN=60634[9]TUID=2868[12]PUID=5036028
- 804: Text3: [28]UID=RN7(C+1\>$:T""VKV"`W2U*P[9]PUN=60634[9]TUID=2823[12]PUID=5036028
- 814: Text3: [28]UID=RNT(+V3/N:X$B8I[BAKF-:7@[9]PUN=60634[9]TUID=1851[12]PUID=5036028
- 815: Text3: [28]UID=RNTXH1!VH[$4J#HZ^/,+HK@0[9]PUN=60634[9]TUID=1852[12]PUID=5036028
- 816: Text3: [28]UID=RN0/UM57P&_$:BYWQTHGR8@@[9]PUN=60634[9]TUID=1853[12]PUID=5036028
- 817: Text3: [28]UID=RN9[MNJ1R^<4FH42@(7?C^!P[9]PUN=60634[9]TUID=1854[12]PUID=5036028
- 818: Text3: [28]UID=RN?Z3H&N?-E$.VY"HS`MTNV@[9]PUN=60634[9]TUID=1958[12]PUID=5036028

| ID | WBS | Task | Type | Duration | Start | Finish | Predecessors | Total slack | Free slack | Fin Ajustado | Responsable |
| --- | --- | --- | --- | --- | --- | --- | --- | --- | --- | --- | --- |
| 819 | 1.8.10.3.1.3 | **Construcción Novedades Diarias** |  | 79d | 2012-02-03 | 2012-06-04 |  | 451d | 0d | A definir |  |
| 820 | 1.8.10.3.1.3.1 | Adecuación Estandar (Incidencias) |  | 20d | 2012-02-03 | 2012-03-05 |  | 451d | 0d | A definir | Recurso 2 |
| 821 | 1.8.10.3.1.3.2 | Reporte Parte Diario |  | 3d | 2012-03-06 | 2012-03-08 | 820 | 451d | 0d | A definir | Recurso 2 |
| 822 | 1.8.10.3.1.3.3 | Cambio de Rol (Puesto Mapping) |  | 7d | 2012-03-09 | 2012-03-19 | 821 | 451d | 0d | A definir | Recurso 2 |
| 823 | 1.8.10.3.1.3.4 | Reporte de Interinatos |  | 3d | 2012-03-20 | 2012-03-22 | 822 | 451d | 0d | A definir | Recurso 2 |
| 824 | 1.8.10.3.1.3.5 | Falla de Caja |  | 7d | 2012-03-23 | 2012-04-03 | 823 | 451d | 0d | A definir | Recurso 2 |
| 825 | 1.8.10.3.1.3.6 | Reporte Falla de Caja |  | 3d | 2012-04-04 | 2012-04-10 | 824 | 451d | 0d | A definir | Recurso 2 |
| 826 | 1.8.10.3.1.3.7 | Reporte Resumenes |  | 3d | 2012-04-11 | 2012-04-13 | 825 | 451d | 0d | A definir | Recurso 2 |
| 827 | 1.8.10.3.1.3.8 | Reporte Localizaciones |  | 3d | 2012-04-16 | 2012-04-18 | 826 | 451d | 0d | A definir | Recurso 2 |
| 828 | 1.8.10.3.1.3.9 | Viaticos |  | 7d | 2012-04-19 | 2012-04-27 | 827 | 451d | 0d | A definir | Recurso 2 |
| 829 | 1.8.10.3.1.3.10 | Reporte Viaticos |  | 3d | 2012-05-02 | 2012-05-04 | 828 | 451d | 0d | A definir | Recurso 2 |
| 830 | 1.8.10.3.1.3.11 | Posicionamiento (Mapping ??) |  | 7d | 2012-05-07 | 2012-05-15 | 829 | 451d | 0d | A definir | Recurso 2 |
| 831 | 1.8.10.3.1.3.12 | Guardias ATM |  | 7d | 2012-05-16 | 2012-05-24 | 830 | 451d | 0d | A definir | Recurso 2 |
| 832 | 1.8.10.3.1.3.13 | Reporte de Guardas ATM |  | 3d | 2012-05-28 | 2012-05-30 | 831 | 451d | 0d | A definir | Recurso 2 |
| 833 | 1.8.10.3.1.3.14 | Reporte Remuneraciones |  | 3d | 2012-05-31 | 2012-06-04 | 832 | 451d |  | A definir | Recurso 2 |
| 834 | 1.8.10.3.1.4 | Hito: Construcción Novedades diarias finalizado | milestone | 0d | 2012-06-04 | 2012-06-04 | 819 | 451d | 0d | A definir |  |
| 835 | 1.8.10.3.1.5 | **Construcción Licencias** |  | 43d | 2013-12-10 | 2014-02-12 |  | 63d | 0d | 12/02/14 |  |
| 836 | 1.8.10.3.1.5.1 | Licencias Especiales |  | 20d | 2013-12-10 | 2014-01-10 | 814 | 63d | 0d | A definir | Recurso 1 |
| 837 | 1.8.10.3.1.5.2 | Carga descentralizada de licencias |  | 20d | 2014-01-13 | 2014-02-07 | 836 | 63d | 0d | 07/02/14 | Recurso 1 |
| 838 | 1.8.10.3.1.5.3 | Reporte Licencias Especiales |  | 3d | 2014-02-10 | 2014-02-12 | 837 | 63d |  | 12/02/14 | Recurso 1 |
| 839 | 1.8.10.3.1.6 | Hito: Construcción Licencias finalizado | milestone | 0d | 2014-02-12 | 2014-02-12 | 835 | 63d | 0d | 12/02/14 |  |
| 840 | 1.8.10.3.2 | Hito: Módulo: Mi tiempo de Trabajo finalziado | milestone | 0d | 2014-02-12 | 2014-02-12 | 804 | 71d |  | 12/02/14 |  |
| 841 | 1.8.10.4 | Hito: Construcción Fase 2 finalizada | milestone | 0d | 2014-02-12 | 2014-02-12 | 803 | 71d |  | 12/02/14 |  |
| 842 | 1.8.10.5 | **Fase 6 - Workflow Prestamos** |  | 10d | 2013-10-17 | 2013-10-30 |  | 132d | 0d | A definir |  |
| 843 | 1.8.10.5.1 | Creación Workflow de prestamos |  | 10d | 2013-10-17 | 2013-10-30 | 745 | 132d |  | A definir | TBD |
| 844 | 1.8.10.6 | Hito: Fase 6 - Workflow prestamos finalizado | milestone | 0d | 2013-10-30 | 2013-10-30 | 842 | 132d | 0d | A definir | TBD |

Notes:
- 819: Text3: [28]UID=RNV<;R/[E^E$R"\:1'8\Q`5@[9]PUN=60634[9]TUID=1858[12]PUID=5036028
- 820: Text3: [28]UID=RN%N3R93G<`4^>'Q7D31/7-0[9]PUN=60634[9]TUID=1859[12]PUID=5036028
- 821: Text3: [28]UID=RN$"",,'"&V4612`@B`*J[?0[9]PUN=60634[9]TUID=1860[12]PUID=5036028
- 822: Text3: [28]UID=RNYV_^A@[[G$J3V#^EKR9YX`[9]PUN=60634[9]TUID=1861[12]PUID=5036028
- 823: Text3: [28]UID=RNH*4+NR>_P$Z[,8IBH)A,,`[9]PUN=60634[9]TUID=1862[12]PUID=5036028
- 824: Text3: [28]UID=RN9!2B2`T9F4B9/8+WP23LQ`[9]PUN=60634[9]TUID=1863[12]PUID=5036028
- 825: Text3: [28]UID=RN7OKZ7KBI@$"&#V4]>B-(&@[9]PUN=60634[9]TUID=1864[12]PUID=5036028
- 826: Text3: [28]UID=RNQIZF48\A1D"!RJ4AM(HAA@[9]PUN=60634[9]TUID=1865[12]PUID=5036028
- 827: Text3: [28]UID=RN<"RTOMR>BT>C]-7WF%_G#`[9]PUN=60634[9]TUID=1866[12]PUID=5036028
- 828: Text3: [28]UID=RN`"BIS\@I14^7ACC[S-!.C@[9]PUN=60634[9]TUID=1867[12]PUID=5036028
- 829: Text3: [28]UID=RNGPS)1(Z,U$6WGJRF70T/"P[9]PUN=60634[9]TUID=1868[12]PUID=5036028
- 830: Text3: [28]UID=RNS(&A@F?VAT&[..VB`BNY4`[9]PUN=60634[9]TUID=1869[12]PUID=5036028
- 831: Text3: [28]UID=RNU0_!]-ZPE4^J9W+BA+GGY`[9]PUN=60634[9]TUID=1870[12]PUID=5036028
- 832: Text3: [28]UID=RN[SFY4;AVZ4JDP0.;!DAB<@[9]PUN=60634[9]TUID=1871[12]PUID=5036028
- 833: Text3: [28]UID=RN"5@4Q%R-)$J"M2`X)3UIN`[9]PUN=60634[9]TUID=1872[12]PUID=5036028
- 834: Text3: [28]UID=RN"XX;(0U8I$Z5PMJ[0#8,I`[9]PUN=60634[9]TUID=1960[12]PUID=5036028
- 835: Text3: [28]UID=RN*[R')6^\`4*O)TEJ0(5`R0[9]PUN=60634[9]TUID=1944[12]PUID=5036028
- 836: Text3: [28]UID=RN\JF)34<=&$B7F+GE=^_DK@[9]PUN=60634[9]TUID=1945[12]PUID=5036028
- 837: Text3: [28]UID=RNW(DD$V^4=D.T+C+EMI+[8`[9]PUN=60634[9]TUID=1946[12]PUID=5036028
- 838: Text3: [28]UID=RNPU,LHA"B-DJ-Z!;S%UB0JP[9]PUN=60634[9]TUID=1947[12]PUID=5036028
- 839: Text3: [28]UID=RNS<9YH56)"$BE#-YE54>$[P[9]PUN=60634[9]TUID=1961[12]PUID=5036028
- 840: Text3: [28]UID=RN&=P6XV>-4$2^+B[ZFJ_-+`[9]PUN=60634[9]TUID=2869[12]PUID=5036028
- 841: Text3: [28]UID=RN%7HC4(;9NDB'#]6]LC?LUP[9]PUN=60634[9]TUID=2870[12]PUID=5036028
- 842: Text3: [28]UID=RN_K@//MM:-D.#FT#XH,!',P[9]PUN=60634[9]TUID=1951[12]PUID=5036028
- 843: Text3: [28]UID=RNLEW1M+,2/4B1X0K%P:P9A@[9]PUN=60634[9]TUID=1950[12]PUID=5036028
- 844: Text3: [28]UID=RN1PU_:O[@/$JCO"5K&_!';@[9]PUN=60634[9]TUID=1964[12]PUID=5036028

| ID | WBS | Task | Type | Duration | Start | Finish | Predecessors | Total slack | Free slack | Fin Ajustado | Responsable | Colaboradores |
| --- | --- | --- | --- | --- | --- | --- | --- | --- | --- | --- | --- | --- |
| 845 | 1.8.10.7 | **Fase 7 - Gestión de Contratados** |  | 5d | 2012-02-03 | 2012-02-09 |  | 558d |  | A definir |  |  |
| 846 | 1.8.10.7.1 | Gestión de contratados |  | 5d | 2012-02-03 | 2012-02-09 |  | 558d |  | A definir | Oslvaldo Fernandez | Carlos Peñaloza |
| 847 | 1.8.10.8 | Hito: Fase 7 - Gestón de Contratados finalizado |  | 1d? | 2012-02-03 | 2012-02-03 |  | 562d |  | A definir |  |  |
| 848 | 1.8.11 | Hito: Construcción ESS Finalizado | milestone | 0d | 2014-02-28 | 2014-02-28 | 769 | 59d | 26d | 28/02/14 |  |  |
| 849 | 1.8.12 | **Testing Funcional** |  | 431.75d? | 2012-06-05 | 2014-03-13 |  | 49.25d | 0d | 13/03/14 |  |  |
| 850 | 1.8.12.1 | **Testing Fase 1** |  | 7d? | 2014-02-28 | 2014-03-13 |  | 44.25d | 0d | 13/03/14 |  |  |
| 851 | 1.8.12.1.1 | Testing funcional - Datos personales |  | 7d | 2014-02-28 | 2014-03-13 | 785 | 44.25d | 0d | 13/03/14 | Magdalena Museli |  |
| 852 | 1.8.12.1.2 | Testing funcional - Datos Económicos |  | 5d | 2014-03-05 | 2014-03-11 | 794 | 46d | 0d | 11/03/14 | Sebastián Herrera |  |
| 853 | 1.8.12.1.3 | Testing funcional - Puesto de Trabajo |  | 1d? | 2014-03-05 | 2014-03-05 | 801 | 55d |  | 05/03/14 |  |  |
| 854 | 1.8.12.2 | Testing Fase 1 finalizada | milestone | 0d | 2014-03-13 | 2014-03-13 | 850 | 49.25d |  | 13/03/14 |  |  |
| 855 | 1.8.12.3 | **Testing Fase 2** |  | 418d | 2012-06-05 | 2014-02-19 |  | 63d | 0d | 19/02/14 |  |  |
| 856 | 1.8.12.3.1 | Testing funcional - Vacaciones |  | 10d | 2013-12-10 | 2013-12-23 | 818 | 96d | 0d | A definir | Laura Fernandez |  |
| 857 | 1.8.12.3.2 | Testing funcional - Novedades diarias |  | 20d | 2012-06-05 | 2012-07-04 | 834 | 451d | 0d | A definir | Laura Fernandez, Sebastián Herrera |  |
| 858 | 1.8.12.3.3 | Testing funcional - Licencias |  | 5d | 2014-02-13 | 2014-02-19 | 839 | 63d | 0d | 19/02/14 | Laura Fernandez, Sebastián Herrera |  |
| 859 | 1.8.12.4 | Testing Fase 2 finalizada | milestone | 0d | 2014-02-19 | 2014-02-19 | 855 | 63d |  | 19/02/14 |  |  |
| 860 | 1.8.12.5 | Testing funcional fase 6 - Workflow de prestamos |  | 5d | 2013-10-31 | 2013-11-07 | 844 | 132d | 0d | A definir | Laura Fernandez |  |
| 861 | 1.8.13 | Hito: Testing ESS Finalizado | milestone | 0d | 2014-03-13 | 2014-03-13 | 849 | 49.25d | 0d | 13/03/14 |  |  |
| 862 | 1.8.14 | **Homologación** |  | 421.75d | 2012-07-05 | 2014-03-28 |  | 44.25d | 0d | 28/03/14 |  |  |
| 863 | 1.8.14.1 | Definición de Tracks de prueba |  | 5d | 2014-03-13 | 2014-03-20 | 861 | 49.25d | 0d | 20/03/14 | Sebastian Abad |  |
| 864 | 1.8.14.2 | Producto: Plan de Pruebas | milestone | 0d | 2014-03-20 | 2014-03-20 | 863 | 49.25d | 0d | 20/03/14 | Sebastian Abad |  |
| 865 | 1.8.14.3 | Hito: Casos de prueba definidos | milestone | 0d | 2014-03-20 | 2014-03-20 | 864 | 49.25d | 0d | 20/03/14 | Sebastian Abad |  |
| 866 | 1.8.14.4 | Hito: Revisión casos y datos | milestone | 0d | 2014-03-20 | 2014-03-20 | 865 | 49.25d |  | 20/03/14 | TBD |  |
| 867 | 1.8.14.5 | Homologación fase 1 - Vacaciones |  | 10d | 2013-12-26 | 2014-01-10 | 856 | 96d |  | A definir | Daiana Almeida |  |
| 868 | 1.8.14.6 | Homologación fase 2 - Temas económicos |  | 10d | 2014-03-12 | 2014-03-26 | 852 | 46d |  | 26/03/14 | Daiana Almeida |  |
| 869 | 1.8.14.7 | Homologación fase 3 - Novedades diarias |  | 15d | 2012-07-05 | 2012-07-26 | 857 | 451d |  | A definir | Daiana Almeida |  |
| 870 | 1.8.14.8 | Homologación fase 4 - Licencias |  | 5d | 2014-02-20 | 2014-02-26 | 858 | 63d |  | 26/02/14 | Daiana Almeida |  |
| 871 | 1.8.14.9 | Homologación fase 5 - Datos personales |  | 10d | 2014-03-13 | 2014-03-28 | 851 | 44.25d |  | 28/03/14 | Daiana Almeida |  |
| 872 | 1.8.14.10 | Homologación fase 6 - Workflow de prestamos |  | 5d | 2013-11-08 | 2013-11-14 | 860 | 132d |  | A definir | Daiana Almeida |  |
| 873 | 1.8.15 | Hito: ESS/MSS Homologado | milestone | 0d | 2014-03-28 | 2014-03-28 | 862 | 44.25d | 43.25d | 28/03/14 | Daiana Almeida |  |

Notes:
- 845: Text3: [28]UID=RN+8S2M%@'.T.11:QQ2EDT1@[9]PUN=60634[9]TUID=2604[12]PUID=5036028
- 846: Text3: [28]UID=RN0-F3BL+]]T"<J4(SO3B.(0[9]PUN=60634[9]TUID=2606[12]PUID=5036028
- 847: Text3: [28]UID=RN(4(H3)L&(D^YSK-OY]G%,@[9]PUN=60634[9]TUID=2605[12]PUID=5036028
- 848: Text3: [28]UID=RN<1BYW.+"_4NSX82&EUOWD`[9]PUN=60634[9]TUID=1882[12]PUID=5036028
- 849: Text3: [28]UID=RNTSOSL+H-@D:!@DUTD^<JL@[9]PUN=60634[9]TUID=1883[12]PUID=5036028
- 850: Text3: [28]UID=RNN!;72^A+!4R*;33S]<\V@0[9]PUN=60634[9]TUID=2871[12]PUID=5036028
- 851: Text3: [28]UID=RN$N&!_;Q!>42GDXD+8;_A3P[9]PUN=60634[9]TUID=1953[12]PUID=5036028
- 852: Text3: [28]UID=RNW/\0A[ZPW4B^R>D*_[T0>@[9]PUN=60634[9]TUID=1956[12]PUID=5036028
- 853: Text3: [28]UID=RNQL^[,>(O0$.WW231-.2UK0[9]PUN=60634[9]TUID=2875[12]PUID=5036028
- 854: Text3: [28]UID=RN;UA?V`[(.46:49I8=Z,J?`[9]PUN=60634[9]TUID=2872[12]PUID=5036028
- 855: Text3: [28]UID=RNGSG5`(?J!$&M%A(`TBRUI`[9]PUN=60634[9]TUID=2874[12]PUID=5036028
- 856: Text3: [28]UID=RNQYQD_2UU&T"(9S7EV=4SF`[9]PUN=60634[9]TUID=1957[12]PUID=5036028
- 857: Text3: [28]UID=RNTACY6`3$14NLJP,^`G"U4P[9]PUN=60634[9]TUID=1955[12]PUID=5036028
- 858: Text3: [28]UID=RN$TQ7I6!,E$JO7Z6SL%;`S0[9]PUN=60634[9]TUID=1954[12]PUID=5036028
- 859: Text3: [28]UID=RN.?LF@>\^)$**OY8['IAWT0[9]PUN=60634[9]TUID=2873[12]PUID=5036028
- 860: Text3: [28]UID=RNW\)(3J!*X$R,/[Q[%J!ZN`[9]PUN=60634[9]TUID=1884[12]PUID=5036028
- 861: Text3: [28]UID=RNX>K2+11/%T>+S&=#@=QY@`[9]PUN=60634[9]TUID=1886[12]PUID=5036028
- 862: Text3: [28]UID=RN*[*2^SH&%D6V<B#$:Q$VI`[9]PUN=60634[9]TUID=1887[12]PUID=5036028
- 863: Text3: [28]UID=RNR(`+8&@Y2$2P,#;J>,=*B0[9]PUN=60634[9]TUID=1888[12]PUID=5036028
- 864: Text3: [28]UID=RNO";HZKN`?4F]Y?>N'BUH8@[9]PUN=60634[9]TUID=1889[12]PUID=5036028
- 865: Text3: [28]UID=RNYGO"C*/^ND.(5D2:Y\65%`[9]PUN=60634[9]TUID=1890[12]PUID=5036028
- 866: Text3: [28]UID=RN71R2]<M#DTV7VOO.O>Y6W`[9]PUN=60634[9]TUID=1891[12]PUID=5036028
- 867: Text3: [28]UID=RN`'W-5<<\#D:5TZ[*PD?X:`[9]PUN=60634[9]TUID=1972[12]PUID=5036028
- 868: Text3: [28]UID=RN?[>\1,ZP/T2D(T(7ML2W50[9]PUN=60634[9]TUID=1971[12]PUID=5036028
- 869: Text3: [28]UID=RNI@P/W:>7)4&#P*=$84B^6`[9]PUN=60634[9]TUID=1970[12]PUID=5036028
- 870: Text3: [28]UID=RN-L%G1-T^5DBM5NUBPT"S?@[9]PUN=60634[9]TUID=1969[12]PUID=5036028
- 871: Text3: [28]UID=RN-FH46X002$29'JJQ0P<:"0[9]PUN=60634[9]TUID=1968[12]PUID=5036028
- 872: Text3: [28]UID=RN[YG"PM)D!D6F'@YW!XY7*`[9]PUN=60634[9]TUID=1966[12]PUID=5036028
- 873: Text3: [28]UID=RNH833G-XDG4"TY^)WBD[?;P[9]PUN=60634[9]TUID=1896[12]PUID=5036028

| ID | WBS | Task | Type | Duration | Start | Finish | Predecessors | Complete | Remaining | Total slack | Free slack | Constraint | Fin Ajustado | Responsable | Colaboradores |
| --- | --- | --- | --- | --- | --- | --- | --- | --- | --- | --- | --- | --- | --- | --- | --- |
| 874 | 1.8.16 | **Pasaje a Producción** |  | 21.25d | 2014-03-13 A | 2014-04-15 |  | 33% | 14.17d | 33d |  |  | 15/04/14 |  |  |
| 875 | 1.8.16.1 | Armado de documento de implementación |  | 2d | 2014-03-13 | 2014-03-17 | 862FS-10d |  |  | 52.25d |  |  | 17/03/14 | TBD |  |
| 876 | 1.8.16.2 | Revisión de Plan de Implementación |  | 1d | 2014-04-11 A | 2014-04-11 A | 875 | 100% |  |  |  |  | 11/04/14 | TBD |  |
| 877 | 1.8.16.3 | Implementación |  | 2d | 2014-04-14 | 2014-04-15 | 876 |  |  | 33d |  |  | 15/04/14 | TBD |  |
| 878 | 1.8.16.4 | Documentación funcional de desarrollo |  | 2d | 2014-03-27 A | 2014-03-28 A |  | 100% |  |  |  | start no earlier than 2014-03-27 | 28/03/14 | TBD |  |
| 879 | 1.8.16.5 | Documentación Técnica de desarrollo |  | 2d | 2014-04-14 | 2014-04-15 | 848 |  |  | 33d |  | start no earlier than 2014-04-14 | 15/04/14 | TBD |  |
| 880 | 1.9 | Hito: Modulo Autoservicio del Empleado y del Jefe Finalizado | milestone | 0d | 2014-06-04 | 2014-06-04 | 713 |  |  | 1d | 0d |  | 04/06/14 |  |  |
| 881 | 1.10 | **Etapa 4 - Selección** |  | 197d | 2013-11-19 A | 2014-09-11 |  | 11% | 175.66d | 113d | 0d |  | 11/09/14 |  |  |
| 882 | 1.10.1 | **Procesos** |  | 155d | 2014-01-22 A | 2014-09-10 |  | 22% | 121.25d | 114d | 0d |  | 10/09/14 |  |  |
| 883 | 1.10.1.1 | Relevamiento del proceso actual (La voz del cliente-Focus group) |  | 27d | 2014-01-22 A | 2014-02-28 | 884SF | 50% | 13.5d | 242d |  |  | 28/02/14 | Gustavo Rosemberg | Néstor Vergano |
| 884 | 1.10.1.2 | Entregable Interno - Diagnostico y Mejoras |  | 1d | 2014-02-28 | 2014-02-28 | 892SF-2d |  |  | 241d | 0d | start no earlier than 2014-02-28 | 28/02/14 | Gustavo Rosemberg | Néstor Vergano |
| 885 | 1.10.1.3 | Relevamiento del proceso en el sistema en detalle |  | 8d | 2014-03-05 | 2014-03-14 | 893SS |  |  | 48d | 4d |  | 14/03/14 | Gustavo Rosemberg | Néstor Vergano |
| 886 | 1.10.1.4 | Hito: Recepción del ERS | milestone | 0d | 2014-03-20 | 2014-03-20 | 894, 885 |  |  | 44d | 0d |  | 20/03/14 | Néstor Vergano | Gustavo Rosemberg |
| 887 | 1.10.1.5 | Diseño del proceso |  | 5d | 2014-03-21 | 2014-03-28 | 886 |  |  | 44d | 0d |  | 28/03/14 | Gustavo Rosemberg | Néstor Vergano |
| 888 | 1.10.1.6 | Hito: Aprobación del diseño de Procesos finalizado | milestone | 0d | 2014-03-28 | 2014-03-28 | 887 |  |  | 44d | 0d |  | 28/03/14 |  |  |
| 889 | 1.10.1.7 | Modelado ARIS para publicar en Claridad |  | 21d | 2014-08-12 | 2014-09-10 | 923SF |  |  | 114d |  | start no earlier than 2014-08-12 | 10/09/14 | Gustavo Rosemberg | Néstor Vergano |
| 890 | 1.10.2 | Hito: Procesos y Modelo Aris finalizado | milestone | 0d | 2014-09-10 | 2014-09-10 | 882 |  |  | 114d |  |  | 10/09/14 | Gustavo Rosemberg | Néstor Vergano |
| 891 | 1.10.3 | **Análisis y Diseño** |  | 86d | 2013-11-19 A | 2014-03-28 |  | 20% | 68.8d | 44d |  |  | 28/03/14 |  |  |
| 892 | 1.10.3.1 | Workshop Módulo Selección |  | 3d | 2013-11-19 A | 2013-11-21 A | 861 | 100% |  |  |  |  | A definir | Homero Sanchez/Mariel Flores |  |
| 893 | 1.10.3.2 | Análisis de requerimientos de Módulo Selección de ERS |  | 12d | 2014-03-05 | 2014-03-20 | 892 |  |  | 44d | 0d | start no earlier than 2014-03-05 | 20/03/14 | Gabriela Bustos |  |
| 894 | 1.10.3.3 | Hito: Confección del ERS Finalizado | milestone | 0d | 2014-03-20 | 2014-03-20 | 893 |  |  | 44d | 0d |  | 20/03/14 | Gabriela Bustos |  |
| 895 | 1.10.3.4 | Hito: Aceptación del usuario del ERS | milestone | 0d | 2014-03-28 | 2014-03-28 | 894, 888 |  |  | 44d | 0d |  | 28/03/14 | Araceli Daga |  |
| 896 | 1.10.4 | Hito: Análisis y diseño Finalizado | milestone | 0d | 2014-03-28 | 2014-03-28 | 895 |  |  | 44d | 43d |  | 28/03/14 |  |  |
| 897 | 1.10.5 | **Plan de Comunicación - GDG** |  | 23d | 2014-03-31 | 2014-05-07 |  |  |  | 201d | 0d |  | 07/05/14 |  |  |
| 898 | 1.10.5.1 | Análisis y Entendimiento |  | 10d | 2014-03-31 | 2014-04-14 | 895 |  |  | 201d | 0d |  | 14/04/14 | Florencia Bozzini |  |
| 899 | 1.10.5.2 | Armado de documentación |  | 5d | 2014-04-15 | 2014-04-23 | 898 |  |  | 201d | 0d |  | 23/04/14 | Florencia Bozzini |  |
| 900 | 1.10.5.3 | Validación de documentación |  | 5d | 2014-04-24 | 2014-04-30 | 899 |  |  | 201d | 0d |  | 30/04/14 | Florencia Bozzini |  |
| 901 | 1.10.5.4 | Diseño del Plan de Comunicación |  | 3d | 2014-05-05 | 2014-05-07 | 900 |  |  | 201d | 0d |  | 07/05/14 | Florencia Bozzini |  |
| 902 | 1.10.5.5 | Hito: Validación del Plan de Comunicación finalizada | milestone | 0d | 2014-05-07 | 2014-05-07 | 901 |  |  | 201d |  |  | 07/05/14 | Florencia Bozzini |  |
| 903 | 1.10.6 | Hito: Plan de Comunicación finalizado | milestone | 0d | 2014-05-07 | 2014-05-07 | 897 |  |  | 201d |  |  | 07/05/14 | Florencia Bozzini |  |

Notes:
- 874: Text3: [28]UID=RNY<U\J"^ZU$B]K_U+*(#XR`[9]PUN=60634[9]TUID=1897[12]PUID=5036028
- 875: Text3: [28]UID=RNQ*B3^(/T]$V:TLUX[<92.`[9]PUN=60634[9]TUID=1898[12]PUID=5036028
- 876: Text3: [28]UID=RN^:]A_IG'^4&#J`(EH&8`.`[9]PUN=60634[9]TUID=1899[12]PUID=5036028
- 877: Text3: [28]UID=RNJ7VXV)=!!$"3/;'HIW'&P@[9]PUN=60634[9]TUID=1900[12]PUID=5036028
- 878: Text3: [28]UID=RN,:-'4``2-4^(V>P]8'?81@[9]PUN=60634[9]TUID=1901[12]PUID=5036028
- 879: Text3: [28]UID=RN[(6:*/E:IT>`)-WPG^4G!0[9]PUN=60634[9]TUID=1902[12]PUID=5036028
- 880: Text3: [28]UID=RN(RX8P@B_BDRG(?JLWO7T^`[9]PUN=60634[9]TUID=1903[12]PUID=5036028
- 881: Text3: [28]UID=RN[NGONHY=J4>T3LR%I=Z[Z0[9]PUN=60634[9]TUID=1905[12]PUID=5036028
- 882: Text3: [28]UID=RNEE1&-"&MQ$NAP*=!*O/\\0[9]PUN=60634[9]TUID=2237[12]PUID=5036028
- 883: Text3: [28]UID=RN-0+ZXMW]^4R8:%\K&2,Z\@[9]PUN=60634[9]TUID=2557[12]PUID=5036028
- 884: Text3: [28]UID=RNN:,]AW22`4Z%E52R('R.F0[9]PUN=60634[9]TUID=2558[12]PUID=5036028
- 885: Text3: [28]UID=RND<GV5Q8RS$F6=GU<X677>`[9]PUN=60634[9]TUID=2559[12]PUID=5036028
- 886: Text3: [28]UID=RNB(^;;^Z\Z4NU<#UD"V(C!`[9]PUN=60634[9]TUID=2596[12]PUID=5036028
- 887: Text3: [28]UID=RN*X40HO[2BD>1E$V$\A]C"@[9]PUN=60634[9]TUID=2560[12]PUID=5036028
- 888: Text3: [28]UID=RNG)*0C*U\"$J*U,WJB2NB<`[9]PUN=60634[9]TUID=2597[12]PUID=5036028
- 889: Text3: [28]UID=RN]<F*!1D(W$Z6PWTEB,(6S`[9]PUN=60634[9]TUID=2561[12]PUID=5036028
- 890: Text3: [28]UID=RN0@;=@9=3(DJ]&S;$,/R*NP[9]PUN=60634[9]TUID=2246[12]PUID=5036028
- 891: Text3: [28]UID=RN"4:K^B\3MT:0)0"_C83+QP[9]PUN=60634[9]TUID=1906[12]PUID=5036028
- 892: Text3: [28]UID=RN%EHO9"HWG$:*$#?E(J\D7P[9]PUN=60634[9]TUID=1907[12]PUID=5036028
- 893: Text3: [28]UID=RN\BC,W"39H42;=4C6(ZSN.`[9]PUN=60634[9]TUID=1908[12]PUID=5036028
- 894: Text3: [28]UID=RNY^G;@?I*74.LH'&F2K5*:`[9]PUN=60634[9]TUID=1909[12]PUID=5036028
- 895: Text3: [28]UID=RNZES-!CB-.TVA;0P7J=_8(`[9]PUN=60634[9]TUID=1910[12]PUID=5036028
- 896: Text3: [28]UID=RNB7`]]`2APD.DU4+)+^*V,@[9]PUN=60634[9]TUID=1911[12]PUID=5036028
- 897: Text3: [28]UID=RNN-N4)=IDRDJ$.R&>QOA"C0[9]PUN=60634[9]TUID=2398[12]PUID=5036028
- 898: Text3: [28]UID=RN?MT&,?P<MTRC@9H'9_<Y,P[9]PUN=60634[9]TUID=2399[12]PUID=5036028
- 899: Text3: [28]UID=RNZOXY7E;-24>AECDOA";>^@[9]PUN=60634[9]TUID=2400[12]PUID=5036028
- 900: Text3: [28]UID=RN!0K7#^Y2CDB9+-'@M*@-T@[9]PUN=60634[9]TUID=2401[12]PUID=5036028
- 901: Text3: [28]UID=RNJ?@P*:"[7DJ`X;:9U(&P*`[9]PUN=60634[9]TUID=2402[12]PUID=5036028
- 902: Text3: [28]UID=RN"AL2(B?J"D^X0%&?%+JYZP[9]PUN=60634[9]TUID=2403[12]PUID=5036028
- 903: Text3: [28]UID=RN9*>0=M7^0DN^W&78:69?A`[9]PUN=60634[9]TUID=2404[12]PUID=5036028

| ID | WBS | Task | Type | Duration | Start | Finish | Predecessors | Complete | Remaining | Total slack | Free slack | Constraint | Fin Ajustado | Responsable |
| --- | --- | --- | --- | --- | --- | --- | --- | --- | --- | --- | --- | --- | --- | --- |
| 904 | 1.10.7 | **Construcción** |  | 41d | 2014-06-05 | 2014-08-04 |  |  |  | 1d | 0d |  | 04/08/14 |  |
| 905 | 1.10.7.1 | Ajustes al WF estándar de solicitud de vacante |  | 10d | 2014-06-05 | 2014-06-18 | 896, 880 |  |  | 1d | 0d |  | 18/06/14 | Recurso 1 |
| 906 | 1.10.7.2 | Ajustes el WF de notificación de entrevistas |  | 8d | 2014-06-19 | 2014-07-01 | 905 |  |  | 1d | 0d |  | 01/07/14 | Recurso 1 |
| 907 | 1.10.7.3 | Ajustes el WF de notificación de ofertas |  | 5d | 2014-07-02 | 2014-07-08 | 906 |  |  | 1d | 0d |  | 08/07/14 | Recurso 1 |
| 908 | 1.10.7.4 | Ajustes formatos de cartas |  | 2d | 2014-07-10 | 2014-07-11 | 907 |  |  | 1d | 0d |  | 11/07/14 | Recurso 1 |
| 909 | 1.10.7.5 | Ajustes en logos de los informes estándar del módulo de selección |  | 1d | 2014-07-14 | 2014-07-14 | 908 |  |  | 1d | 0d |  | 14/07/14 | Recurso 1 |
| 910 | 1.10.7.6 | Interfaz con aplicativo de selección |  | 15d | 2014-07-15 | 2014-08-04 | 909 |  |  | 1d |  |  | 04/08/14 | Recurso 1 |
| 911 | 1.10.8 | Hito: Construcción de Modulo de Selección Finalizado | milestone | 0d | 2014-08-04 | 2014-08-04 | 904 |  |  | 1d | 0d |  | 04/08/14 |  |
| 912 | 1.10.9 | **Testing Funcional** |  | 15d | 2014-08-05 | 2014-08-26 |  |  |  | 1d | 0d |  | 26/08/14 |  |
| 913 | 1.10.9.1 | Testing funcional Módulo Selección |  | 10d | 2014-08-05 | 2014-08-19 | 911 |  |  | 1d | 0d |  | 19/08/14 | Araceli Daga |
| 914 | 1.10.9.2 | Ajustes Módulo Selección |  | 5d | 2014-08-20 | 2014-08-26 | 913 |  |  | 1d |  |  | 26/08/14 | Recurso 1 |
| 915 | 1.10.10 | Hito: Testing Módulo Selección Finalizado | milestone | 0d | 2014-08-26 | 2014-08-26 | 912 |  |  | 1d | 0d |  | 26/08/14 |  |
| 916 | 1.10.11 | **Homologación** |  | 55d | 2014-06-23 | 2014-09-09 |  |  |  | 113d | 0d |  | 09/09/14 |  |
| 917 | 1.10.11.1 | Definición de Tracks de prueba |  | 5d | 2014-06-23 | 2014-06-27 |  |  |  | 163d | 0d | start no earlier than 2014-06-20 | 27/06/14 | Sebastián Abad |
| 918 | 1.10.11.2 | Producto: Plan de Pruebas | milestone | 0d | 2014-06-27 | 2014-06-27 | 917 |  |  | 163d | 0d |  | 27/06/14 | Sebastián Abad |
| 919 | 1.10.11.3 | Hito: Casos de prueba definidos | milestone | 0d | 2014-06-27 | 2014-06-27 | 918 |  |  | 163d | 0d |  | 27/06/14 | Sebastián Abad |
| 920 | 1.10.11.4 | Hito: Revisión casos y datos | milestone | 0d | 2014-06-27 | 2014-06-27 | 919 |  |  | 163d | 0d |  | 27/06/14 | Araceli Daga |
| 921 | 1.10.11.5 | Hito: Aceptación de usuario asignados | milestone | 0d | 2014-06-27 | 2014-06-27 | 920 |  |  | 163d |  |  | 27/06/14 | Araceli Daga |
| 922 | 1.10.11.6 | Pruebas del módulo de Selección |  | 10d | 2014-08-27 | 2014-09-09 | 915 |  |  | 113d |  |  | 09/09/14 | Daiana Almeida |
| 923 | 1.10.12 | Hito: Módulo Selección Homologado | milestone | 0d | 2014-09-09 | 2014-09-09 | 916 |  |  | 113d | 0d |  | 09/09/14 |  |
| 924 | 1.10.13 | **Pasaje a Producción** |  | 51d | 2014-07-01 A | 2014-09-11 |  | 33% | 34d | 113d |  |  | 11/09/14 |  |
| 925 | 1.10.13.1 | Armado de documento de implementación |  | 2d | 2014-09-03 | 2014-09-04 | 923FS-5d |  |  | 118d |  |  | 04/09/14 | Carlos Peñaloza |
| 926 | 1.10.13.2 | Revisión de Plan de Implementación |  | 1d | 2014-07-28 A | 2014-07-28 A | 925 | 100% |  |  |  | start no earlier than 2014-07-28 | 28/07/14 |  |
| 927 | 1.10.13.3 | Implementación |  | 2d | 2014-09-10 | 2014-09-11 | 923 |  |  | 113d |  |  | 11/09/14 |  |
| 928 | 1.10.13.4 | Documentación funcional de desarrollo |  | 2d | 2014-07-01 A | 2014-07-02 A |  | 100% |  |  |  | start no earlier than 2014-07-01 | 02/07/14 | Alejandro Tarallo |
| 929 | 1.10.13.5 | Documentación Técnica de desarrollo |  | 2d | 2014-08-06 | 2014-08-07 | 911 |  |  | 137d |  | start no earlier than 2014-08-06 | 07/08/14 |  |
| 930 | 1.11 | Hito: Módulo Selección implementado en Producción | milestone | 0d | 2014-09-11 | 2014-09-11 | 881 |  |  | 113d |  |  | 11/09/14 |  |

Notes:
- 904: Text3: [28]UID=RN/6TV@KUC2TZXF%+@-&!.Q0[9]PUN=60634[9]TUID=1912[12]PUID=5036028
- 905: Text3: [28]UID=RN^\,5!SNOHD:K]^)P6W''BP[9]PUN=60634[9]TUID=1914[12]PUID=5036028
- 906: Text3: [28]UID=RN'4\I=^'[:4FIJVC4L';ZQ0[9]PUN=60634[9]TUID=1915[12]PUID=5036028
- 907: Text3: [28]UID=RN!SV.L.P8V4:"@EE/=$=L<@[9]PUN=60634[9]TUID=1916[12]PUID=5036028
- 908: Text3: [28]UID=RNCL/V%C4XL$.TI2+&_K%YK@[9]PUN=60634[9]TUID=1917[12]PUID=5036028
- 909: Text3: [28]UID=RN&_P-+36DQT^O(Z?GZ8+WDP[9]PUN=60634[9]TUID=1918[12]PUID=5036028
- 910: Text3: [28]UID=RN_&:Y]S?<T4.T33PIO93RU0[9]PUN=60634[9]TUID=1919[12]PUID=5036028
- 911: Text3: [28]UID=RN^APOOC79]$*-WU(,<EGJ_@[9]PUN=60634[9]TUID=1920[12]PUID=5036028
- 912: Text3: [28]UID=RN!M8<1V8JM$>16O6VMYK<JP[9]PUN=60634[9]TUID=1921[12]PUID=5036028
- 913: Text3: [28]UID=RN&3D5`QB#`T:Q+&L0YIF*[P[9]PUN=60634[9]TUID=1922[12]PUID=5036028
- 914: Text3: [28]UID=RN/Q0[!=&X<D*^EI`R4S*'JP[9]PUN=60634[9]TUID=1923[12]PUID=5036028
- 915: Text3: [28]UID=RN*C>6K<@LA$:R]6$/CNN"T@[9]PUN=60634[9]TUID=1924[12]PUID=5036028
- 916: Text3: [28]UID=RNB&=3\?G.4D"6X%K&XP\$RP[9]PUN=60634[9]TUID=1925[12]PUID=5036028
- 917: Text3: [28]UID=RNZTSX3KJTGT*/>S-B[XDN30[9]PUN=60634[9]TUID=1926[12]PUID=5036028
- 918: Text3: [28]UID=RNM/34=V!F[DJ34TM>P3SO3P[9]PUN=60634[9]TUID=1927[12]PUID=5036028
- 919: Text3: [28]UID=RN,K/5;A065T.MQ11@Q'/UI`[9]PUN=60634[9]TUID=1928[12]PUID=5036028
- 920: Text3: [28]UID=RNF(5IS5.JR$BN$K%$3@+$V@[9]PUN=60634[9]TUID=1929[12]PUID=5036028
- 921: Text3: [28]UID=RN]-E-V"%`24B*+C."/C7OO@[9]PUN=60634[9]TUID=1931[12]PUID=5036028
- 922: Text3: [28]UID=RN(B=T5O$C]D>KYH2',^GYV`[9]PUN=60634[9]TUID=1933[12]PUID=5036028
- 923: Text3: [28]UID=RN-3>Y\DAK)4^@YY/!DGII@`[9]PUN=60634[9]TUID=1934[12]PUID=5036028
- 924: Text3: [28]UID=RN/8A(2F6T4$.%I0"(_GE9OP[9]PUN=60634[9]TUID=1935[12]PUID=5036028
- 925: Text3: [28]UID=RNK2UH_*3K*DBB^]DHV%I;#@[9]PUN=60634[9]TUID=1936[12]PUID=5036028
- 926: Text3: [28]UID=RN07!\PX0.KT2FP1.?IOMD.0[9]PUN=60634[9]TUID=1937[12]PUID=5036028
- 927: Text3: [28]UID=RN6+B>0[7;#4"`&"QG[!'W(0[9]PUN=60634[9]TUID=1938[12]PUID=5036028
- 928: Text3: [28]UID=RN#5O.CZ;+`$B$Y]_DG!BFP0[9]PUN=60634[9]TUID=1939[12]PUID=5036028
- 929: Text3: [28]UID=RNZ@OZ/*"0K4N9WD)B"=>-`0[9]PUN=60634[9]TUID=1940[12]PUID=5036028
- 930: Text3: [28]UID=RNL3K(B&@U2T6G91F,67[480[9]PUN=60634[9]TUID=1941[12]PUID=5036028

| ID | WBS | Task | Type | Duration | Start | Finish | Predecessors | Complete | Remaining | Total slack | Free slack | Constraint | Fin Ajustado | Responsable | Colaboradores |
| --- | --- | --- | --- | --- | --- | --- | --- | --- | --- | --- | --- | --- | --- | --- | --- |
| 931 | 1.12 | **Etapa 5 - Formación** |  | 682d | 2012-02-03 A | 2014-11-21 |  | 1% | 673.26d | 63d | 0d |  | 21/11/14 |  |  |
| 932 | 1.12.1 | **Procesos** |  | 88d | 2014-07-15 | 2014-11-17 |  |  |  | 32d | 0d |  | 17/11/14 |  |  |
| 933 | 1.12.1.1 | Relevamiento del proceso actual (La voz del cliente-Focus group) |  | 27d | 2014-07-15 | 2014-08-22 | 934SF |  |  | 128d |  |  | 22/08/14 | Gustavo Rosemberg | Néstor Vergano |
| 934 | 1.12.1.2 | Entregable Interno - Diagnostico y Mejoras |  | 1d | 2014-08-22 | 2014-08-25 | 943SF-2d |  |  | 127d | 0d |  | 25/08/14 | Gustavo Rosemberg | Néstor Vergano |
| 935 | 1.12.1.3 | Relevamiento del proceso en el sistema en detalle |  | 8d | 2014-08-28 | 2014-09-08 | 944SS |  |  | 1d | 0d |  | 08/09/14 | Gustavo Rosemberg | Néstor Vergano |
| 936 | 1.12.1.4 | Hito: Recepción del ERS | milestone | 0d | 2014-09-08 | 2014-09-08 | 945, 935 |  |  | 1d | 0d |  | 08/09/14 | Néstor Vergano | Gustavo Rosemberg |
| 937 | 1.12.1.5 | Diseño del proceso |  | 5d | 2014-09-09 | 2014-09-15 | 936 |  |  | 1d | 0d |  | 15/09/14 | Gustavo Rosemberg | Néstor Vergano |
| 938 | 1.12.1.6 | Hito: Aprobación del diseño de Procesos finalizado | milestone | 0d | 2014-09-15 | 2014-09-15 | 937 |  |  | 1d | 0d |  | 15/09/14 | Gustavo Rosemberg | Néstor Vergano |
| 939 | 1.12.1.7 | Modelado ARIS para publicar en Claridad |  | 21d | 2014-10-20 | 2014-11-17 | 982SF |  |  | 67d |  | start no earlier than 2014-10-20 | 17/11/14 | Gustavo Rosemberg | Néstor Vergano |
| 940 | 1.12.2 | Hito: Procesos y Modelo Aris finalizado | milestone | 0d | 2014-11-17 | 2014-11-17 | 932 |  |  | 67d |  |  | 17/11/14 | Gustavo Rosemberg | Néstor Vergano |
| 941 | 1.12.3 | **Análisis y Diseño** |  | 634d | 2012-02-03 | 2014-09-15 |  |  |  | 111d | 0d |  | 15/09/14 |  |  |
| 942 | 1.12.3.1 | **Workshop** |  | 14d | 2014-08-27 | 2014-09-15 |  |  |  | 1d |  |  | 15/09/14 |  |  |
| 943 | 1.12.3.1.1 | Workshop Módulo Formación |  | 1d | 2014-08-27 | 2014-08-27 | 915 |  |  | 1d | 0d |  | 27/08/14 | Flavia Piatti |  |
| 944 | 1.12.3.1.2 | Análisis de requerimientos de Módulo de Formación de ERS |  | 8d | 2014-08-28 | 2014-09-08 | 943 |  |  | 1d | 0d |  | 08/09/14 | Érica Reynoso |  |
| 945 | 1.12.3.1.3 | Hito: Confección del ERS Finalizado | milestone | 0d | 2014-09-08 | 2014-09-08 | 944 |  |  | 1d | 0d |  | 08/09/14 | TBD |  |
| 946 | 1.12.3.1.4 | Hito: Aceptación del usuario del ERS | milestone | 0d | 2014-09-15 | 2014-09-15 | 945, 938 |  |  | 1d | 0d |  | 15/09/14 | TBD |  |
| 947 | 1.12.3.1.5 | Hito: Reunión de involucramiento con proveedor SABA Learning |  | 1d | 2014-08-28 | 2014-08-28 | 943 |  |  | 123d |  |  | 28/08/14 | SABA, Efrain Pereiro |  |
| 948 | 1.12.3.2 | **Análisis de interfaces** |  | 4d | 2012-02-03 | 2012-02-08 |  |  |  | 741d |  |  | A definir |  |  |
| 949 | 1.12.3.2.1 | Análisis interfaz (efectivos/contratados) con Saba Learning |  | 3d | 2012-02-03 | 2012-02-07 |  |  |  | 741d | 0d |  | A definir | TBD |  |
| 950 | 1.12.3.2.2 | Importación de cursos realizados |  | 1d | 2012-02-08 | 2012-02-08 | 949 |  |  | 741d |  |  | A definir | TBD |  |
| 951 | 1.12.4 | Hito: Análisis y diseño Finalizado | milestone | 0d | 2014-09-15 | 2014-09-15 | 941 |  |  | 111d |  |  | 15/09/14 |  |  |
| 952 | 1.12.5 | **Plan de Comunicación - GDG** |  | 23d | 2014-09-16 | 2014-10-17 |  |  |  | 88d | 0d |  | 17/10/14 |  |  |
| 953 | 1.12.5.1 | Análisis y Entendimiento |  | 10d | 2014-09-16 | 2014-09-29 | 946 |  |  | 88d | 0d |  | 29/09/14 | Florencia Bozzini |  |
| 954 | 1.12.5.2 | Armado de documentación |  | 5d | 2014-09-30 | 2014-10-06 | 953 |  |  | 88d | 0d |  | 06/10/14 | Florencia Bozzini |  |
| 955 | 1.12.5.3 | Validación de documentación |  | 5d | 2014-10-07 | 2014-10-14 | 954 |  |  | 88d | 0d |  | 14/10/14 | Florencia Bozzini |  |
| 956 | 1.12.5.4 | Diseño del Plan de Comunicación |  | 3d | 2014-10-15 | 2014-10-17 | 955 |  |  | 88d | 0d |  | 17/10/14 | Florencia Bozzini |  |
| 957 | 1.12.5.5 | Hito: Validación del Plan de Comunicación finalizada | milestone | 0d | 2014-10-17 | 2014-10-17 | 956 |  |  | 88d |  |  | 17/10/14 | Florencia Bozzini |  |
| 958 | 1.12.6 | Hito: Plan de Comunicación finalizado | milestone | 0d | 2014-10-17 | 2014-10-17 | 952 |  |  | 88d |  |  | 17/10/14 | Florencia Bozzini |  |

Notes:
- 931: Text3: [28]UID=RNIN#C.<F)B$28:)P@TY&]^`[9]PUN=60634[7]TUID=31[12]PUID=5036028
- 932: Text3: [28]UID=RN"H+HS'09'$N+7F=*C`@@S0[9]PUN=60634[9]TUID=2247[12]PUID=5036028
- 933: Text3: [28]UID=RNA1WS1!['S4&NHFHLL153Z@[9]PUN=60634[9]TUID=2563[12]PUID=5036028
- 934: Text3: [28]UID=RN?X0A!\SU!DV=I'6LCV0-?P[9]PUN=60634[9]TUID=2564[12]PUID=5036028
- 935: Text3: [28]UID=RND@&A+]]F44F;=D]$)S2Y]0[9]PUN=60634[9]TUID=2565[12]PUID=5036028
- 936: Text3: [28]UID=RNIPY3EZ(BU4R9UH7BF_0*F`[9]PUN=60634[9]TUID=2598[12]PUID=5036028
- 937: Text3: [28]UID=RN51W?8SB_]4"8^'[=F=R680[9]PUN=60634[9]TUID=2566[12]PUID=5036028
- 938: Text3: [28]UID=RN<7EWPOR.K4"Z#O5ERG&1EP[9]PUN=60634[9]TUID=2599[12]PUID=5036028
- 939: Text3: [28]UID=RN%X]RJZ#[FDV?P<`7PX@S^@[9]PUN=60634[9]TUID=2567[12]PUID=5036028
- 940: Text3: [28]UID=RNTDC#'"`N\4F6.:^0)2":6@[9]PUN=60634[9]TUID=2256[12]PUID=5036028
- 941: Text3: [28]UID=RNC53JTG&W.46-<]"QI16=TP[9]PUN=60634[8]TUID=546[12]PUID=5036028
- 942: Text3: [28]UID=RN?9?QC4%!TDN3>$Y`LKR(T0[9]PUN=60634[8]TUID=574[12]PUID=5036028
- 943: Text3: [28]UID=RN2/UJYV3O`$./"WEV'%*'ZP[9]PUN=60634[8]TUID=579[12]PUID=5036028
- 944: Text3: [28]UID=RNNT8G*G-RR$^-]M48DPE2R@[9]PUN=60634[8]TUID=580[12]PUID=5036028
- 945: Text3: [28]UID=RNZ0I^#3JAT$:/<OOY!,+0P@[9]PUN=60634[8]TUID=581[12]PUID=5036028
- 946: Text3: [28]UID=RNO5'TCXFT,46JN+Z1JOI<YP[9]PUN=60634[8]TUID=582[12]PUID=5036028
- 947: Text3: [28]UID=RN.)J.6RG;<DB+-,57NDCV<P[9]PUN=60634[8]TUID=586[12]PUID=5036028
- 948: Text3: [28]UID=RN=J=YOXS=C4.N2,M8PB]XA`[9]PUN=60634[8]TUID=545[12]PUID=5036028
- 949: Text3: [28]UID=RNE*TSHU4_-$>ON];P:I.%;0[9]PUN=60634[8]TUID=544[12]PUID=5036028
- 950: Text3: [28]UID=RNPI)^:1P*&TRXY()FMT0;Q@[9]PUN=60634[8]TUID=543[12]PUID=5036028
- 951: Text3: [28]UID=RNBQZV!3:71T"H%;]L^1XW&`[9]PUN=60634[8]TUID=541[12]PUID=5036028
- 952: Text3: [28]UID=RN$Z<@;6ZG+D^G1-73Y-?!8`[9]PUN=60634[9]TUID=2405[12]PUID=5036028
- 953: Text3: [28]UID=RNYU_BL?A$W46F$5PP$><`'@[9]PUN=60634[9]TUID=2406[12]PUID=5036028
- 954: Text3: [28]UID=RN'IZ=]#>WWDV).@.6N5AC(`[9]PUN=60634[9]TUID=2407[12]PUID=5036028
- 955: Text3: [28]UID=RN;>V9&/YIFD*:^:P\L_:R_@[9]PUN=60634[9]TUID=2408[12]PUID=5036028
- 956: Text3: [28]UID=RN'`H-#(469T:+_%<WZ9TRM`[9]PUN=60634[9]TUID=2409[12]PUID=5036028
- 957: Text3: [28]UID=RN;\PMYQ=-<DNLQR<1R0JPJ0[9]PUN=60634[9]TUID=2410[12]PUID=5036028
- 958: Text3: [28]UID=RNVWPI5T[1PDFK/MW^UV#=UP[9]PUN=60634[9]TUID=2411[12]PUID=5036028

| ID | WBS | Task | Type | Duration | Start | Finish | Predecessors | Total slack | Free slack | Fin Ajustado | Responsable |
| --- | --- | --- | --- | --- | --- | --- | --- | --- | --- | --- | --- |
| 959 | 1.12.7 | **Construcción** |  | 29d | 2014-09-16 | 2014-10-27 |  | 1d | 0d | 27/10/14 |  |
| 960 | 1.12.7.1 | Habilitación de las opciones de menú del ESS/MSS para consulta de cursos realizados |  | 3d | 2014-09-16 | 2014-09-18 | 334, 946 | 27d |  | 18/09/14 |  |
| 961 | 1.12.7.2 | **Interfaces** |  | 26d | 2014-09-16 | 2014-10-22 |  | 1d |  | 22/10/14 |  |
| 962 | 1.12.7.2.1 | Interfaz (efectivos/contratados) con Saba Learning |  | 10d | 2014-09-16 | 2014-09-29 | 946 | 1d | 0d | 29/09/14 | TBD |
| 963 | 1.12.7.2.2 | Preparación de template para importación |  | 1d | 2014-09-30 | 2014-09-30 | 962 | 1d | 0d | 30/09/14 | TBD |
| 964 | 1.12.7.2.3 | Preparación de datos para importación (SABA) |  | 10d | 2014-10-01 | 2014-10-15 | 963 | 1d | 0d | 15/10/14 | SABA |
| 965 | 1.12.7.2.4 | Importación de cursos realizados |  | 5d | 2014-10-16 | 2014-10-22 | 964 | 1d | 0d | 22/10/14 | TBD |
| 966 | 1.12.7.3 | **Seguridad** |  | 3d | 2014-10-23 | 2014-10-27 |  | 1d |  | 27/10/14 |  |
| 967 | 1.12.7.3.1 | Ajustes en los perfiles de seguridad de los usuarios |  | 3d | 2014-10-23 | 2014-10-27 | 965 | 1d |  | 27/10/14 |  |
| 968 | 1.12.8 | Hito: Adaptación Módulo Formación Finalizado | milestone | 0d | 2014-10-27 | 2014-10-27 | 959 | 1d | 0d | 27/10/14 | TBD |
| 969 | 1.12.9 | **Testing Funcional** |  | 8d | 2014-10-28 | 2014-11-06 |  | 1d | 0d | 06/11/14 |  |
| 970 | 1.12.9.1 | Testing funcional Módulo Formación |  | 5d | 2014-10-28 | 2014-11-03 | 968 | 1d | 0d | 03/11/14 | TBD |
| 971 | 1.12.9.2 | Ajustes Módulo Formación |  | 3d | 2014-11-04 | 2014-11-06 | 970 | 1d |  | 06/11/14 | TBD |
| 972 | 1.12.10 | Hito: Testing Módulo Formación Finalizado | milestone | 0d | 2014-11-06 | 2014-11-06 | 969 | 1d | 0d | 06/11/14 | TBD |
| 973 | 1.12.11 | **Homologación** |  | 6d | 2014-11-07 | 2014-11-14 |  | 63d | 0d | 14/11/14 |  |
| 974 | 1.12.11.1 | Definición de Tracks de prueba |  | 5d | 2014-11-07 | 2014-11-13 | 969 | 63d | 0d | 13/11/14 | TBD |
| 975 | 1.12.11.2 | Producto: Plan de Pruebas | milestone | 0d | 2014-11-13 | 2014-11-13 | 974 | 63d | 0d | 13/11/14 | TBD |
| 976 | 1.12.11.3 | Hito: Casos de prueba definidos | milestone | 0d | 2014-11-13 | 2014-11-13 | 975 | 63d | 0d | 13/11/14 | TBD |
| 977 | 1.12.11.4 | Hito: Revisión casos y datos | milestone | 0d | 2014-11-13 | 2014-11-13 | 976 | 64d |  | 13/11/14 | TBD |
| 978 | 1.12.11.5 | Hito: Ejecución primer proceso batch en integración | milestone | 0d | 2014-11-13 | 2014-11-13 | 976 | 64d |  | 13/11/14 | TBD |
| 979 | 1.12.11.6 | Hito: Aceptación de usuario asignados | milestone | 0d | 2014-11-13 | 2014-11-13 | 976 | 64d |  | 13/11/14 | TBD |
| 980 | 1.12.11.7 | Instalación de los módulos de RRHH en (entorno de QA) |  | 1d | 2014-11-14 | 2014-11-14 | 976 | 63d |  | 14/11/14 | TBD |
| 981 | 1.12.11.8 | Pruebas del módulo de formación |  | 2d | 2014-11-07 | 2014-11-10 | 972 | 67d |  | 10/11/14 | TBD |
| 982 | 1.12.12 | Hito: Módulo Formación Homologado | milestone | 0d | 2014-11-14 | 2014-11-14 | 973 | 63d | 0d | 14/11/14 | TBD |

Notes:
- 959: Text3: [28]UID=RN!_X_IT<_TT6/#=,N=$J(;`[9]PUN=60634[8]TUID=540[12]PUID=5036028
- 960: Text3: [28]UID=RNL?>2J$-ZR4.B$K[F6/V,CP[9]PUN=60634[8]TUID=539[12]PUID=5036028
- 961: Text3: [28]UID=RN^866SX9"<$V:Z+]W!"V^S@[9]PUN=60634[8]TUID=538[12]PUID=5036028
- 962: Text3: [28]UID=RN++\MEIZ2V$><?2.PLK]M3@[9]PUN=60634[8]TUID=537[12]PUID=5036028
- 963: Text3: [28]UID=RNS8BL7UJ8?4^7Q$COZ(QQUP[9]PUN=60634[8]TUID=584[12]PUID=5036028
- 964: Text3: [28]UID=RN54R1FEC;B$B/,4;"/]>?90[9]PUN=60634[8]TUID=587[12]PUID=5036028
- 965: Text3: [28]UID=RNFK!-*V!WS4ZAR6<GMH0SRP[9]PUN=60634[8]TUID=536[12]PUID=5036028
- 966: Text3: [28]UID=RN"WV]2[3DAT&F>T_B3K#W90[9]PUN=60634[8]TUID=687[12]PUID=5036028
- 967: Text3: [28]UID=RN)_$!V/'7@4ZIYLL7H4YE@`[9]PUN=60634[8]TUID=686[12]PUID=5036028
- 968: Text3: [28]UID=RN/FZF\-W.=D2FB_0?`.D>.0[9]PUN=60634[8]TUID=684[12]PUID=5036028
- 969: Text3: [28]UID=RN'N/IW/Y3>T.T&&`AU3U%5@[9]PUN=60634[8]TUID=549[12]PUID=5036028
- 970: Text3: [28]UID=RNW#N-F(ZCUT.&".`"_ZE#10[9]PUN=60634[8]TUID=551[12]PUID=5036028
- 971: Text3: [28]UID=RN=T:Q#O`-@D*^\U<K76ZS40[9]PUN=60634[8]TUID=550[12]PUID=5036028
- 972: Text3: [28]UID=RNUEEG(RX*>T^4>!V5*P+P3@[9]PUN=60634[8]TUID=548[12]PUID=5036028
- 973: Text3: [28]UID=RNSYX1->?KYDB52EB\$M07CP[9]PUN=60634[8]TUID=535[12]PUID=5036028
- 974: Text3: [28]UID=RN"=1!VVXM:D:#X>U#VW\I#`[9]PUN=60634[8]TUID=947[12]PUID=5036028
- 975: Text3: [28]UID=RNF+Z0@EVLPT*;(;AY-E=8&@[9]PUN=60634[8]TUID=948[12]PUID=5036028
- 976: Text3: [28]UID=RND`\[3"(>[D"'D*0]'JF!6P[9]PUN=60634[8]TUID=949[12]PUID=5036028
- 977: Text3: [28]UID=RNY_F_*T8*OT"'J(!+E$8FZ`[9]PUN=60634[8]TUID=950[12]PUID=5036028
- 978: Text3: [28]UID=RNJU';[SMT"D>DP]Q5)N3*C`[9]PUN=60634[8]TUID=951[12]PUID=5036028
- 979: Text3: [28]UID=RN9<PFEC;%B4F4B=K@&+/4V@[9]PUN=60634[8]TUID=952[12]PUID=5036028
- 980: Text3: [28]UID=RNTHH3F[1-T4NC6><8!F?X*@[9]PUN=60634[8]TUID=953[12]PUID=5036028
- 981: Text3: [28]UID=RNPC&GU)\='D.H"%Y7R0E&-0[9]PUN=60634[8]TUID=534[12]PUID=5036028
- 982: Text3: [28]UID=RN\IR&'2(I4T.+8B6:AV8_]0[9]PUN=60634[8]TUID=532[12]PUID=5036028

| ID | WBS | Task | Type | Duration | Start | Finish | Predecessors | Complete | Remaining | Total slack | Free slack | Constraint | Fin Ajustado | Responsable | Colaboradores |
| --- | --- | --- | --- | --- | --- | --- | --- | --- | --- | --- | --- | --- | --- | --- | --- |
| 983 | 1.12.13 | **Pasaje a Producción** |  | 38d | 2014-09-30 A | 2014-11-21 |  | 22% | 29.56d | 63d |  |  | 21/11/14 |  |  |
| 984 | 1.12.13.1 | Armado de documento de implementación |  | 2d | 2014-11-17 | 2014-11-18 | 982 |  |  | 63d | 0d |  | 18/11/14 | TBD |  |
| 985 | 1.12.13.2 | Revisión de Plan de Implementación |  | 1d | 2014-11-19 | 2014-11-19 | 984 |  |  | 63d | 0d |  | 19/11/14 | TBD |  |
| 986 | 1.12.13.3 | Implementación |  | 2d | 2014-11-20 | 2014-11-21 | 985 |  |  | 63d |  |  | 21/11/14 | TBD |  |
| 987 | 1.12.13.4 | Documentación funcional de desarrollo |  | 2d | 2014-09-30 A | 2014-10-01 A | 982 | 100% |  |  |  |  | 01/10/14 | TBD |  |
| 988 | 1.12.13.5 | Documentación Técnica de desarrollo |  | 2d | 2014-10-28 | 2014-10-29 | 968 |  |  | 80d |  |  | 29/10/14 | TBD |  |
| 989 | 1.13 | Hito: Módulo Formación implementado en Producción | milestone | 0d | 2014-11-21 | 2014-11-21 | 931 |  |  | 63d |  |  | 21/11/14 |  |  |
| 990 | 1.14 | **Etapa 6 - Desarrollo** |  | 103d | 2014-09-26 A | 2015-02-23 |  | 10% | 92.7d | 0d |  |  | 23/02/15 |  |  |
| 991 | 1.14.1 | **Procesos** |  | 98d | 2014-09-26 | 2015-02-16 |  |  |  | 5d | 0d |  | 16/02/15 |  |  |
| 992 | 1.14.1.1 | Relevamiento del proceso actual (La voz del cliente-Focus group) |  | 27d | 2014-09-26 | 2014-11-05 | 993SF |  |  | 76d |  | start no earlier than 2014-09-26 | 05/11/14 | Gustavo Rosemberg | Néstor Vergano |
| 993 | 1.14.1.2 | Entregable Interno - Diagnostico y Mejoras |  | 1d | 2014-11-05 | 2014-11-06 | 1002SF-2d |  |  | 75d | 0d | start no earlier than 2014-11-05 | 06/11/14 | Gustavo Rosemberg | Néstor Vergano |
| 994 | 1.14.1.3 | Relevamiento del proceso en el sistema en detalle |  | 8d | 2014-11-11 | 2014-11-20 | 1003SS |  |  | 5d |  |  | 20/11/14 | Gustavo Rosemberg | Néstor Vergano |
| 995 | 1.14.1.4 | Hito: Recepción del ERS | milestone | 0d | 2014-11-28 | 2014-11-28 | 1005, 994 |  |  | 0d |  |  | 28/11/14 | Néstor Vergano | Gustavo Rosemberg |
| 996 | 1.14.1.5 | Diseño del proceso |  | 5d | 2014-12-01 | 2014-12-05 | 995 |  |  | 0d |  |  | 05/12/14 | Gustavo Rosemberg | Néstor Vergano |
| 997 | 1.14.1.6 | Hito: Aprobación del Diseño de Procesos finalizado | milestone | 0d | 2014-12-05 | 2014-12-05 | 996 |  |  | 0d |  |  | 05/12/14 | Gustavo Rosemberg | Néstor Vergano |
| 998 | 1.14.1.7 | Modelado ARIS para publicar en Claridad |  | 21d | 2015-01-19 | 2015-02-16 | 1042SF |  |  | 5d |  | start no earlier than 2015-01-19 | 16/02/15 | Gustavo Rosemberg | Néstor Vergano |
| 999 | 1.14.2 | Hito: Procesos y Modelo Aris finalizado | milestone | 0d | 2015-02-16 | 2015-02-16 | 991 |  |  | 5d |  |  | 16/02/15 | Gustavo Rosemberg | Néstor Vergano |
| 1000 | 1.14.3 | **Análisis y Diseño** |  | 19d | 2014-11-10 | 2014-12-05 |  |  |  | 0d |  |  | 05/12/14 |  |  |
| 1001 | 1.14.3.1 | **Workshop** |  | 19d | 2014-11-10 | 2014-12-05 |  |  |  | 0d |  |  | 05/12/14 |  |  |
| 1002 | 1.14.3.1.1 | Workshop Módulo Planes de Carrera |  | 1d | 2014-11-10 | 2014-11-10 | 972 |  |  | 0d |  | start no earlier than 2014-11-10 | 10/11/14 | Flavia Piatti |  |
| 1003 | 1.14.3.1.2 | Análisis de requerimientos de Módulo de Planes de Carrera de ERS |  | 8d | 2014-11-11 | 2014-11-20 | 1002 |  |  | 0d |  |  | 20/11/14 | Érica Reynoso |  |
| 1004 | 1.14.3.1.3 | Análiisis de reportes de asesores |  | 5d | 2014-11-21 | 2014-11-28 | 1003 |  |  | 0d |  |  | 28/11/14 | Casandra Giuliano |  |
| 1005 | 1.14.3.1.4 | Hito: Confección del ERS Finalizado | milestone | 0d | 2014-11-28 | 2014-11-28 | 1004 |  |  | 0d |  |  | 28/11/14 | Gabriela Bustos |  |
| 1006 | 1.14.3.1.5 | Hito: Aceptación del usuario del ERS | milestone | 0d | 2014-12-05 | 2014-12-05 | 1005, 997 |  |  | 0d |  |  | 05/12/14 | Erica Reynoso/Casandra Giuliano |  |
| 1007 | 1.14.4 | Hito: Análisis y diseño Finalizado | milestone | 0d | 2014-12-05 | 2014-12-05 | 1000 |  |  | 54d |  |  | 05/12/14 |  |  |

Notes:
- 983: Text3: [28]UID=RNQF/Z%5QIC4VU,9-G^:.K@@[9]PUN=60634[8]TUID=559[12]PUID=5036028
- 984: Text3: [28]UID=RN8ULJZ*MHZDVN6.N4.4<910[9]PUN=60634[8]TUID=560[12]PUID=5036028
- 985: Text3: [28]UID=RN[&X/#QF>.T&O'KH[@D;N$P[9]PUN=60634[8]TUID=561[12]PUID=5036028
- 986: Text3: [28]UID=RN;M32G1':%4Z=!!*$&-).:`[9]PUN=60634[8]TUID=562[12]PUID=5036028
- 987: Text3: [28]UID=RN+BDQ%S@)/DN\8.#/>>>SO`[9]PUN=60634[8]TUID=563[12]PUID=5036028
- 988: Text3: [28]UID=RNP4M&U^LZ.TFUH7+C-%W%AP[9]PUN=60634[8]TUID=564[12]PUID=5036028
- 989: Text3: [28]UID=RNV)N"?<FO>DR\2U:2\E15,P[9]PUN=60634[8]TUID=558[12]PUID=5036028
- 990: Text3: [28]UID=RN0=4X=A/5U$&_!92.F"W1^`[9]PUN=60634[7]TUID=33[12]PUID=5036028
- 991: Text3: [28]UID=RN!9UC8#\CO$>N;R@-%V=$(@[9]PUN=60634[9]TUID=2257[12]PUID=5036028
- 992: Text3: [28]UID=RN]BBDM-+6,4*J@*7^X]L3<P[9]PUN=60634[9]TUID=2569[12]PUID=5036028
- 993: Text3: [28]UID=RNU1R,FUZSETN-N@0K3F(G%`[9]PUN=60634[9]TUID=2570[12]PUID=5036028
- 994: Text3: [28]UID=RN,KZ+#VY51$>]W$(U8M)6W0[9]PUN=60634[9]TUID=2571[12]PUID=5036028
- 995: Text3: [28]UID=RN9XZS`+A#!4B^[T8N8*0W%@[9]PUN=60634[9]TUID=2600[12]PUID=5036028
- 996: Text3: [28]UID=RNTD@Z,\5&M$NJS)L1.'D6`@[9]PUN=60634[9]TUID=2572[12]PUID=5036028
- 997: Text3: [28]UID=RNR$`[B$/L!4"&*7]3WA)35P[9]PUN=60634[9]TUID=2601[12]PUID=5036028
- 998: Text3: [28]UID=RN<^]^M9/1BD6)'E$<[UY3-0[9]PUN=60634[9]TUID=2573[12]PUID=5036028
- 999: Text3: [28]UID=RN@.Q[@(KPTDNB*&E!>1:;KP[9]PUN=60634[9]TUID=2266[12]PUID=5036028
- 1000: Text3: [28]UID=RN9^^ZFG"E_D2;(K'&]=?/E@[9]PUN=60634[8]TUID=608[12]PUID=5036028
- 1001: Text3: [28]UID=RN98D>4:/'A4ZL_Y1A"TU%$P[9]PUN=60634[8]TUID=609[12]PUID=5036028
- 1002: Text3: [28]UID=RNBZ>&_[IT6D>;0!+3#&W<<@[9]PUN=60634[8]TUID=610[12]PUID=5036028
- 1003: Text3: [28]UID=RN@7G]D08XED&(7PI6H,W"[P[9]PUN=60634[8]TUID=611[12]PUID=5036028
- 1004: Text3: [28]UID=RN@>T<=R2J(D28.?-]T_L!T0[9]PUN=60634[9]TUID=1975[12]PUID=5036028
- 1005: Text3: [28]UID=RN,\:)?^OH%$F\<=PZ@B,64P[9]PUN=60634[8]TUID=612[12]PUID=5036028
- 1006: Text3: [28]UID=RNIXT74'RC;T:0A+)#-T4B\@[9]PUN=60634[8]TUID=613[12]PUID=5036028
- 1007: Text3: [28]UID=RN`KY5W3\T)$VSXB)MHMWPC0[9]PUN=60634[8]TUID=618[12]PUID=5036028

| ID | WBS | Task | Type | Duration | Start | Finish | Predecessors | Complete | Remaining | Total slack | Free slack | Fin Ajustado | Responsable |
| --- | --- | --- | --- | --- | --- | --- | --- | --- | --- | --- | --- | --- | --- |
| 1008 | 1.14.5 | **Plan de Comunicación - GDG** |  | 23d | 2014-12-09 | 2015-01-09 |  |  |  | 31d | 0d | 09/01/15 |  |
| 1009 | 1.14.5.1 | Análisis y Entendimiento |  | 10d | 2014-12-09 | 2014-12-22 | 1006 |  |  | 31d | 0d | 22/12/14 | Florencia Bozzini |
| 1010 | 1.14.5.2 | Armado de documentación |  | 5d | 2014-12-23 | 2014-12-30 | 1009 |  |  | 31d | 0d | 30/12/14 | Florencia Bozzini |
| 1011 | 1.14.5.3 | Validación de documentación |  | 5d | 2014-12-31 | 2015-01-06 | 1010 |  |  | 31d | 0d | 06/01/15 | Florencia Bozzini |
| 1012 | 1.14.5.4 | Diseño del Plan de Comunicación |  | 3d | 2015-01-07 | 2015-01-09 | 1011 |  |  | 31d | 0d | 09/01/15 | Florencia Bozzini |
| 1013 | 1.14.5.5 | Hito: Validación del Plan de Comunicación finalizada | milestone | 0d | 2015-01-09 | 2015-01-09 | 1012 |  |  | 31d |  | 09/01/15 | Florencia Bozzini |
| 1014 | 1.14.6 | Hito: Plan de Comunicación finalizado | milestone | 0d | 2015-01-09 | 2015-01-09 | 1008 |  |  | 31d |  | 09/01/15 | Florencia Bozzini |
| 1015 | 1.14.7 | **Construcción** |  | 68d | 2014-10-10 A | 2015-01-19 |  | 38% | 41.96d | 0d |  | 19/01/15 |  |
| 1016 | 1.14.7.1 | Adaptación al Estandar |  | 5d | 2014-12-09 | 2014-12-15 | 1006 |  |  | 0d |  | 15/12/14 | Recurso 1 |
| 1017 | 1.14.7.2 | **Personalización de los extractores y de las tablas de infocentros** |  | 9d | 2014-10-10 A | 2014-10-23 A |  | 100% |  |  |  | 23/10/14 |  |
| 1018 | 1.14.7.2.1 | Unidades de organigrama y puestos |  | 3d | 2014-10-10 A | 2014-10-15 A | 1006 | 100% |  |  |  | 15/10/14 | Recurso 1 |
| 1019 | 1.14.7.2.2 | Información de personal |  | 3d | 2014-10-16 A | 2014-10-20 A | 1018 | 100% |  |  |  | 20/10/14 | Recurso 1 |
| 1020 | 1.14.7.2.3 | Movilidad externa |  | 3d | 2014-10-21 A | 2014-10-23 A | 1019 | 100% |  |  |  | 23/10/14 | Recurso 1 |
| 1021 | 1.14.7.3 | **Personalización de analíticas** |  | 9d | 2014-10-24 A | 2014-11-05 A |  | 100% |  |  |  | 05/11/14 |  |
| 1022 | 1.14.7.3.1 | Analítica 1 |  | 3d | 2014-10-24 A | 2014-10-28 A | 1020 | 100% |  |  |  | 28/10/14 | Recurso 1 |
| 1023 | 1.14.7.3.2 | Analítica 2 |  | 3d | 2014-10-29 A | 2014-10-31 A | 1022 | 100% |  |  |  | 31/10/14 | Recurso 1 |
| 1024 | 1.14.7.3.3 | Analítica 3 |  | 3d | 2014-11-03 A | 2014-11-05 A | 1023 | 100% |  |  |  | 05/11/14 | Recurso 1 |
| 1025 | 1.14.7.4 | **Reporte de Asesores** |  | 24d | 2014-12-16 | 2015-01-19 |  |  |  | 0d |  | 19/01/15 |  |
| 1026 | 1.14.7.4.1 | Reporte 1 - Dossier |  | 3d | 2014-12-16 | 2014-12-18 | 1016 |  |  | 0d |  | 18/12/14 | Recurso 1 |
| 1027 | 1.14.7.4.2 | Reporte 2 |  | 3d | 2014-12-19 | 2014-12-23 | 1026 |  |  | 0d |  | 23/12/14 | Recurso 1 |
| 1028 | 1.14.7.4.3 | Reporte 3 |  | 3d | 2014-12-24 | 2014-12-29 | 1027 |  |  | 0d |  | 29/12/14 | Recurso 1 |
| 1029 | 1.14.7.4.4 | Entrevista de Desarrollo |  | 15d | 2014-12-30 | 2015-01-19 | 1028 |  |  | 0d |  | 19/01/15 | Recurso 1 |
| 1030 | 1.14.8 | Hito: Adaptación Módulo Planes de Carrera Finalizado | milestone | 0d | 2015-01-19 | 2015-01-19 | 1015 |  |  | 0d |  | 19/01/15 | TBD |
| 1031 | 1.14.9 | **Testing Funcional** |  | 15d | 2015-01-20 | 2015-02-09 |  |  |  | 0d |  | 09/02/15 |  |
| 1032 | 1.14.9.1 | Testing funcional Módulo Planes de Carrera |  | 10d | 2015-01-20 | 2015-02-02 | 1030 |  |  | 0d |  | 02/02/15 | Erica Reynoso/Casandra Giuliano |
| 1033 | 1.14.9.2 | Ajustes Módulo Planes de Carrera |  | 5d | 2015-02-03 | 2015-02-09 | 1032 |  |  | 0d |  | 09/02/15 | Recurso 1 |
| 1034 | 1.14.10 | Hito: Testing Módulo Planes de Carrera finalizado | milestone | 0d | 2015-02-09 | 2015-02-09 | 1031 |  |  | 0d |  | 09/02/15 |  |

Notes:
- 1008: Text3: [28]UID=RNL-7U^DM\H421DM#O8+%HOP[9]PUN=60634[9]TUID=2412[12]PUID=5036028
- 1009: Text3: [28]UID=RNBV`+<]04G4Z5$6TLC+.1H0[9]PUN=60634[9]TUID=2413[12]PUID=5036028
- 1010: Text3: [28]UID=RNIR`?*M2]RTVH.7SFCT]8R@[9]PUN=60634[9]TUID=2414[12]PUID=5036028
- 1011: Text3: [28]UID=RN($F:DT/!:T&B`'UB:<#<_@[9]PUN=60634[9]TUID=2415[12]PUID=5036028
- 1012: Text3: [28]UID=RN]H8YV_#VA4V(<G4^1Q>LS@[9]PUN=60634[9]TUID=2416[12]PUID=5036028
- 1013: Text3: [28]UID=RNJ4GE]%09'$>E/-?9J!RS4`[9]PUN=60634[9]TUID=2417[12]PUID=5036028
- 1014: Text3: [28]UID=RNYL#O%:PD-DJP?1PY>35O;@[9]PUN=60634[9]TUID=2418[12]PUID=5036028
- 1015: Text3: [28]UID=RN%@?_JJ?[UDV?5#T<N_*?&@[9]PUN=60634[8]TUID=643[12]PUID=5036028
- 1016: Text3: [28]UID=RN/Z8Q;N]JODJH5C(DK$Q2N@[9]PUN=60634[9]TUID=2142[12]PUID=5036028
- 1017: Text3: [28]UID=RN79?-Q$V!MD^J?*HZ.4ATP@[9]PUN=60634[8]TUID=644[12]PUID=5036028
- 1018: Text3: [28]UID=RNBG!\UQ?Q]D**-"&)(P;]B@[9]PUN=60634[8]TUID=645[12]PUID=5036028
- 1019: Text3: [28]UID=RN'O?XI<0;_$^>V=&PGN-1TP[9]PUN=60634[8]TUID=646[12]PUID=5036028
- 1020: Text3: [28]UID=RNH*T:1(X+E$Z_I?.Z@<';WP[9]PUN=60634[8]TUID=647[12]PUID=5036028
- 1021: Text3: [28]UID=RNLVX$W4S<D42\ONCB)"!`A@[9]PUN=60634[8]TUID=648[12]PUID=5036028
- 1022: Text3: [28]UID=RNAIA92[.%K$.ZA(0G]_U(&@[9]PUN=60634[8]TUID=649[12]PUID=5036028
- 1023: Text3: [28]UID=RN$$#U8!=?/$^G9_D:J[VXL@[9]PUN=60634[8]TUID=650[12]PUID=5036028
- 1024: Text3: [28]UID=RNX$V\8[I-[$>V@^#S-+&43`[9]PUN=60634[8]TUID=651[12]PUID=5036028
- 1025: Text3: [28]UID=RNJL><5(+I(D.ZG^H`O0%!4@[9]PUN=60634[9]TUID=1976[12]PUID=5036028
- 1026: Text3: [28]UID=RN"SVJ21_>K4NM!J/E]D<B0@[9]PUN=60634[9]TUID=1977[12]PUID=5036028
- 1027: Text3: [28]UID=RN?%S<PRNHB4^H<I9$[$DVW`[9]PUN=60634[9]TUID=1978[12]PUID=5036028
- 1028: Text3: [28]UID=RNO#%OZG<C"D2\1K\`G-L?\`[9]PUN=60634[9]TUID=1979[12]PUID=5036028
- 1029: Text3: [28]UID=RNIOQY/0<&"DB,:=@?DQ=C&P[9]PUN=60634[9]TUID=1980[12]PUID=5036028
- 1030: Text3: [28]UID=RNE:NP^(V^A4RMHP`AL)]C$`[9]PUN=60634[8]TUID=626[12]PUID=5036028
- 1031: Text3: [28]UID=RNGOH]CLO_UDV&^`V(C')Z)P[9]PUN=60634[8]TUID=627[12]PUID=5036028
- 1032: Text3: [28]UID=RN/LI<.?HQ]D&?3B7JJ-LZH0[9]PUN=60634[8]TUID=628[12]PUID=5036028
- 1033: Text3: [28]UID=RN\6Y#([/0RT&+D?+2.8^V6@[9]PUN=60634[8]TUID=629[12]PUID=5036028
- 1034: Text3: [28]UID=RN\#SH\?RKJ4*_EI;3=%U("P[9]PUN=60634[8]TUID=630[12]PUID=5036028

| ID | WBS | Task | Type | Duration | Start | Finish | Predecessors | Total slack | Free slack | Constraint | Fin Ajustado | Responsable | Colaboradores |
| --- | --- | --- | --- | --- | --- | --- | --- | --- | --- | --- | --- | --- | --- |
| 1035 | 1.14.11 | **Homologación** |  | 10d | 2015-02-03 | 2015-02-16 |  | 0d |  |  | 16/02/15 |  |  |
| 1036 | 1.14.11.1 | Definición de Tracks de prueba |  | 5d | 2015-02-03 | 2015-02-09 | 1032 | 4d | 0d |  | 09/02/15 | Sebastián Abad |  |
| 1037 | 1.14.11.2 | Producto: Plan de Pruebas | milestone | 0d | 2015-02-09 | 2015-02-09 | 1036 | 4d | 0d |  | 09/02/15 | Sebastián Abad |  |
| 1038 | 1.14.11.3 | Hito: Casos de prueba definidos | milestone | 0d | 2015-02-09 | 2015-02-09 | 1037 | 4d | 0d |  | 09/02/15 | Sebastián Abad |  |
| 1039 | 1.14.11.4 | Hito: Revisión casos y datos | milestone | 0d | 2015-02-09 | 2015-02-09 | 1038 | 4d | 0d |  | 09/02/15 | Erica Reynoso/Casandra Giuliano |  |
| 1040 | 1.14.11.5 | Hito: Aceptación de usuario asignados | milestone | 0d | 2015-02-10 | 2015-02-10 | 1039FS+1d | 4d |  |  | 10/02/15 | Erica Reynoso/Casandra Giuliano |  |
| 1041 | 1.14.11.6 | Pruebas del módulo de formación |  | 5d | 2015-02-10 | 2015-02-16 | 1034 | 0d |  |  | 16/02/15 | Daiana Almeida |  |
| 1042 | 1.14.12 | Hito: Módulo Planes de Carrera Homologado | milestone | 0d | 2015-02-16 | 2015-02-16 | 1035 | 0d |  |  | 16/02/15 |  |  |
| 1043 | 1.14.13 | **Pasaje a Producción** |  | 25d | 2015-01-20 | 2015-02-23 |  | 0d |  |  | 23/02/15 |  |  |
| 1044 | 1.14.13.1 | Armado de documento de implementación |  | 2d | 2015-02-17 | 2015-02-18 | 1042 | 0d |  |  | 18/02/15 | TBD |  |
| 1045 | 1.14.13.2 | Revisión de Plan de Implementación |  | 1d | 2015-02-19 | 2015-02-19 | 1044 | 0d |  |  | 19/02/15 | TBD |  |
| 1046 | 1.14.13.3 | Implementación |  | 2d | 2015-02-20 | 2015-02-23 | 1045 | 0d |  |  | 23/02/15 | TBD |  |
| 1047 | 1.14.13.4 | Documentación funcional de desarrollo |  | 2d | 2015-02-17 | 2015-02-18 | 1042 | 3d |  |  | 18/02/15 | TBD |  |
| 1048 | 1.14.13.5 | Documentación Técnica de desarrollo |  | 2d | 2015-01-20 | 2015-01-21 | 1030 | 23d |  |  | 21/01/15 | TBD |  |
| 1049 | 1.15 | Hito: Módulo Desarrollo implementado en Producción | milestone | 0d | 2015-02-23 | 2015-02-23 | 990 | 0d |  |  | 23/02/15 |  |  |
| 1050 | 1.16 | **Etapa 7 - Compensación Salarial** |  | 134d | 2014-04-23 | 2014-11-04 |  | 76d | 0d |  | 04/11/14 |  |  |
| 1051 | 1.16.1 | **Procesos** |  | 134d | 2014-04-23 | 2014-11-04 |  | 76d | 0d |  | 04/11/14 |  |  |
| 1052 | 1.16.1.1 | Relevamiento del proceso actual (La voz del cliente-Focus group) |  | 27d | 2014-04-23 | 2014-06-02 | 1053SF | 183d |  | start no earlier than 2014-04-23 | 02/06/14 | Gustavo Rosemberg | Néstor Vergano |
| 1053 | 1.16.1.2 | Entregable Interno - Diagnostico y Mejoras |  | 1d | 2014-06-02 | 2014-06-03 | 1061SF-2d | 183d | 1d | start no earlier than 2014-06-02 | 03/06/14 | Gustavo Rosemberg | Néstor Vergano |
| 1054 | 1.16.1.3 | Relevamiento del proceso en el sistema en detalle |  | 9d | 2014-06-06 | 2014-06-18 | 1062SS | 110d | 0d |  | 18/06/14 | Gustavo Rosemberg | Néstor Vergano |
| 1055 | 1.16.1.4 | Hito: Recepción del ERS | milestone | 0d | 2014-06-18 | 2014-06-18 | 1063, 1054 | 110d | 0d |  | 18/06/14 | Néstor Vergano | Gustavo Rosemberg |
| 1056 | 1.16.1.5 | Diseño del proceso |  | 5d | 2014-06-19 | 2014-06-26 | 1055 | 110d | 0d |  | 26/06/14 | Gustavo Rosemberg | Néstor Vergano |
| 1057 | 1.16.1.6 | Hito: Aprobación del Diseño de Procesos finalizado | milestone | 0d | 2014-06-26 | 2014-06-26 | 1056 | 110d | 0d |  | 26/06/14 | Gustavo Rosemberg | Néstor Vergano |
| 1058 | 1.16.1.7 | Modelado ARIS para publicar en Claridad |  | 21d | 2014-10-06 | 2014-11-04 | 1082SF | 76d |  | start no earlier than 2014-10-06 | 04/11/14 | Gustavo Rosemberg | Néstor Vergano |
| 1059 | 1.16.2 | Hito: Procesos y Modelo Aris finalizado | milestone | 0d | 2014-11-04 | 2014-11-04 | 1051 | 76d |  |  | 04/11/14 | Gustavo Rosemberg | Néstor Vergano |

Notes:
- 1035: Text3: [28]UID=RN,,@-G#KAP4"Y;J>GX,Z+.@[9]PUN=60634[8]TUID=631[12]PUID=5036028
- 1036: Text3: [28]UID=RN+$``6?OKA42[H[X=FJ6[_P[9]PUN=60634[8]TUID=940[12]PUID=5036028
- 1037: Text3: [28]UID=RN$FX4ME\6HT^VT8M59>))<P[9]PUN=60634[8]TUID=941[12]PUID=5036028
- 1038: Text3: [28]UID=RNWR><KP-T<$.-8C$4,MIKQ`[9]PUN=60634[8]TUID=942[12]PUID=5036028
- 1039: Text3: [28]UID=RNHLQE\&L#,D"^'<IDE/.$?P[9]PUN=60634[8]TUID=943[12]PUID=5036028
- 1040: Text3: [28]UID=RN%&,*(G)A.T^4G&U0NUA^.`[9]PUN=60634[8]TUID=945[12]PUID=5036028
- 1041: Text3: [28]UID=RN=%VNK@=O)$6UA[9DAKPLIP[9]PUN=60634[8]TUID=632[12]PUID=5036028
- 1042: Text3: [28]UID=RN]9Y#)L<N?$B^RJ71V&'O%@[9]PUN=60634[8]TUID=633[12]PUID=5036028
- 1043: Text3: [28]UID=RN.9%KHT8R+4>8UYEK/;-%70[9]PUN=60634[8]TUID=634[12]PUID=5036028
- 1044: Text3: [28]UID=RN?T:>0/SHE$Z@CA7/0G_'AP[9]PUN=60634[8]TUID=635[12]PUID=5036028
- 1045: Text3: [28]UID=RN,GFL\>L`1$^'IOVXXKW@`@[9]PUN=60634[8]TUID=636[12]PUID=5036028
- 1046: Text3: [28]UID=RNQ%&*NPPSO4.@VC%SXH/4=P[9]PUN=60634[8]TUID=637[12]PUID=5036028
- 1047: Text3: [28]UID=RNU3G/Y<%BB$Z$>N].4,G-E`[9]PUN=60634[8]TUID=638[12]PUID=5036028
- 1048: Text3: [28]UID=RN5:@=DJ#W74V<@8*2@)U-I0[9]PUN=60634[8]TUID=639[12]PUID=5036028
- 1049: Text3: [28]UID=RNQ$^+_BJ::T"ME%M='?23M`[9]PUN=60634[8]TUID=640[12]PUID=5036028
- 1050: Text3: [28]UID=RNYYV0XE'DOD28-GTD,YQR<@[9]PUN=60634[9]TUID=1296[12]PUID=5036028
- 1051: Text3: [28]UID=RN1NL*%746XTF9DC2NZ"Q7=P[9]PUN=60634[9]TUID=2267[12]PUID=5036028
- 1052: Text3: [28]UID=RNSQ9">ZHV;DNH`_(?>--@1`[9]PUN=60634[9]TUID=2574[12]PUID=5036028
- 1053: Text3: [28]UID=RN'3V:*(@;JT*(I'Z<^XEO9`[9]PUN=60634[9]TUID=2575[12]PUID=5036028
- 1054: Text3: [28]UID=RN```Z$EV_SD>_"1RX+WGL[0[9]PUN=60634[9]TUID=2576[12]PUID=5036028
- 1055: Text3: [28]UID=RNG$%W9J_?54RF&X;"I@N()0[9]PUN=60634[9]TUID=2602[12]PUID=5036028
- 1056: Text3: [28]UID=RN305Z4$:@ET&PLAU]IR#)QP[9]PUN=60634[9]TUID=2577[12]PUID=5036028
- 1057: Text3: [28]UID=RN<^I/C*\@44"H<134U94*!P[9]PUN=60634[9]TUID=2603[12]PUID=5036028
- 1058: Text3: [28]UID=RNC>&0$KS-_T2@V`)L%,S:&@[9]PUN=60634[9]TUID=2578[12]PUID=5036028
- 1059: Text3: [28]UID=RN?=4](PVR$46%NYC#NX^,)@[9]PUN=60634[9]TUID=2276[12]PUID=5036028

| ID | WBS | Task | Type | Duration | Start | Finish | Predecessors | Total slack | Free slack | Fin Ajustado | Responsable |
| --- | --- | --- | --- | --- | --- | --- | --- | --- | --- | --- | --- |
| 1060 | 1.16.3 | **Análisis y Diseño** |  | 15d | 2014-06-05 | 2014-06-26 |  | 110d |  | 26/06/14 |  |
| 1061 | 1.16.3.1 | Workshop Módulo Compensación |  | 1d | 2014-06-05 | 2014-06-05 | 880 | 110d | 0d | 05/06/14 | TBD |
| 1062 | 1.16.3.2 | Armado de ERS |  | 9d | 2014-06-06 | 2014-06-18 | 1061 | 110d | 0d | 18/06/14 | TBD |
| 1063 | 1.16.3.3 | Hito: Confección del ERS Finalizado | milestone | 0d | 2014-06-18 | 2014-06-18 | 1062 | 110d | 0d | 18/06/14 | TBD |
| 1064 | 1.16.3.4 | Hito: Aceptación del usuario del ERS | milestone | 0d | 2014-06-26 | 2014-06-26 | 1063, 1057 | 110d | 0d | 26/06/14 | TBD |
| 1065 | 1.16.4 | Hito: Análisis y diseño Finalizado | milestone | 0d | 2014-06-26 | 2014-06-26 | 1064 | 110d | 0d | 26/06/14 |  |
| 1066 | 1.16.5 | **Plan de Comunicación - GDG** |  | 23d | 2014-06-27 | 2014-07-30 |  | 143d | 0d | 30/07/14 |  |
| 1067 | 1.16.5.1 | Análisis y Entendimiento |  | 10d | 2014-06-27 | 2014-07-11 | 1064 | 143d | 0d | 11/07/14 | Florencia Bozzini |
| 1068 | 1.16.5.2 | Armado de documentación |  | 5d | 2014-07-14 | 2014-07-18 | 1067 | 143d | 0d | 18/07/14 | Florencia Bozzini |
| 1069 | 1.16.5.3 | Validación de documentación |  | 5d | 2014-07-21 | 2014-07-25 | 1068 | 143d | 0d | 25/07/14 | Florencia Bozzini |
| 1070 | 1.16.5.4 | Diseño del Plan de Comunicación |  | 3d | 2014-07-28 | 2014-07-30 | 1069 | 143d | 0d | 30/07/14 | Florencia Bozzini |
| 1071 | 1.16.5.5 | Hito: Validación del Plan de Comunicación finalizada | milestone | 0d | 2014-07-30 | 2014-07-30 | 1070 | 143d |  | 30/07/14 | Florencia Bozzini |
| 1072 | 1.16.6 | Hito: Plan de Comunicación finalizado | milestone | 0d | 2014-07-30 | 2014-07-30 | 1066 | 143d |  | 30/07/14 | Florencia Bozzini |
| 1073 | 1.16.7 | **Construcción** |  | 23d | 2014-08-04 | 2014-09-04 |  | 108d | 0d | 04/09/14 |  |
| 1074 | 1.16.7.1 | Ajustes al WF estándar de cambios de sueldos |  | 4d | 2014-08-04 | 2014-08-07 | 712 | 108d | 0d | 07/08/14 | Recurso 1 |
| 1075 | 1.16.7.2 | Ajustes al WF estándar de solicitud de beneficios |  | 2d | 2014-08-08 | 2014-08-11 | 1074 | 108d | 0d | 11/08/14 | Recurso 1 |
| 1076 | 1.16.7.3 | Ajustes en logos de los informes estándar |  | 2d | 2014-08-12 | 2014-08-13 | 1075 | 108d | 0d | 13/08/14 | Recurso 1 |
| 1077 | 1.16.7.4 | Personalización de HAY |  | 15d | 2014-08-14 | 2014-09-04 | 1076 | 108d |  | 04/09/14 | Recurso 1 |
| 1078 | 1.16.8 | Hito: Construcción Finalizada | milestone | 0d | 2014-09-04 | 2014-09-04 | 1073 | 108d | 0d | 04/09/14 |  |
| 1079 | 1.16.9 | **Testing Funcional** |  | 8d | 2014-09-05 | 2014-09-16 |  | 108d | 0d | 16/09/14 |  |
| 1080 | 1.16.9.1 | Testing funcional Módulo Formación |  | 5d | 2014-09-05 | 2014-09-11 | 1078 | 108d | 0d | 11/09/14 | Ignacio Alonso |
| 1081 | 1.16.9.2 | Ajustes Módulo Formación |  | 3d | 2014-09-12 | 2014-09-16 | 1080 | 108d |  | 16/09/14 | Recurso 1 |
| 1082 | 1.16.10 | Hito: Testing Módulo Compensación Finalizado | milestone | 0d | 2014-09-16 | 2014-09-16 | 1079 | 108d | 0d | 16/09/14 |  |
| 1083 | 1.16.11 | **Pasaje a Producción** |  | 10d | 2014-09-05 | 2014-09-18 |  | 108d | 0d | 18/09/14 |  |
| 1084 | 1.16.11.1 | Armado de documento de implementación |  | 2d | 2014-09-10 | 2014-09-11 | 1082FS-5d | 113d |  | 11/09/14 | Carlos Peñaloza |
| 1085 | 1.16.11.2 | Implementación |  | 2d | 2014-09-17 | 2014-09-18 | 1082 | 108d |  | 18/09/14 | Alejandro Taralo |
| 1086 | 1.16.11.3 | Documentación Técnica de desarrollo |  | 2d | 2014-09-05 | 2014-09-08 | 1078 | 116d |  | 08/09/14 | TBD |
| 1087 | 1.16.12 | Hito: Módulo Compensación implementado en Producción | milestone | 0d | 2014-09-18 | 2014-09-18 | 1083 | 108d |  | 18/09/14 |  |
| 1088 | 1.17 | Hito: Modulo Compensación Salaria Finalizada | milestone | 0d | 2014-11-04 | 2014-11-04 | 1050 | 76d |  | 04/11/14 |  |

Notes:
- 1060: Text3: [28]UID=RN[0@8C/%.)TRW%*#._8SYV@[9]PUN=60634[9]TUID=2001[12]PUID=5036028
- 1061: Text3: [28]UID=RNH-A"^[65XD*.CT$3=@=D]0[9]PUN=60634[9]TUID=2006[12]PUID=5036028
- 1062: Text3: [28]UID=RN=5'%*4,C?DBT1($](WB2WP[9]PUN=60634[9]TUID=2007[12]PUID=5036028
- 1063: Text3: [28]UID=RN&@A`;ZU&)4:N0)X(#,]"-`[9]PUN=60634[9]TUID=2005[12]PUID=5036028
- 1064: Text3: [28]UID=RN]L2R5S0)$46WO#(2"&2^\P[9]PUN=60634[9]TUID=2004[12]PUID=5036028
- 1065: Text3: [28]UID=RN2>PN0TDU&T:U1NI/TUT:6@[9]PUN=60634[9]TUID=2003[12]PUID=5036028
- 1066: Text3: [28]UID=RNN=Q&3U,R?DF<)8+XOK2$?@[9]PUN=60634[9]TUID=2419[12]PUID=5036028
- 1067: Text3: [28]UID=RNY.5Y,S\H.$Z'9M.<_=KG\0[9]PUN=60634[9]TUID=2420[12]PUID=5036028
- 1068: Text3: [28]UID=RN#,<2D$]NF$>3RU1L@9[U;0[9]PUN=60634[9]TUID=2421[12]PUID=5036028
- 1069: Text3: [28]UID=RNNPO;,@A:0TJP"A@F6E_W\`[9]PUN=60634[9]TUID=2422[12]PUID=5036028
- 1070: Text3: [28]UID=RNJ;5ZN?&?'$:27VCDW5^!EP[9]PUN=60634[9]TUID=2423[12]PUID=5036028
- 1071: Text3: [28]UID=RN,TQ@_DU]G$N`S6`V=]6:.0[9]PUN=60634[9]TUID=2424[12]PUID=5036028
- 1072: Text3: [28]UID=RNL\KDAV)Q4TBGT87%CSE_$P[9]PUN=60634[9]TUID=2425[12]PUID=5036028
- 1073: Text3: [28]UID=RN"V8/"7HY`4"I%]Z\ZQQN'P[9]PUN=60634[9]TUID=1301[12]PUID=5036028
- 1074: Text3: [28]UID=RN(IX:4D6U$TNI?M,YE4^O70[9]PUN=60634[9]TUID=1309[12]PUID=5036028
- 1075: Text3: [28]UID=RNB7HUS8)5[D:+B3T53[;H(P[9]PUN=60634[9]TUID=1310[12]PUID=5036028
- 1076: Text3: [28]UID=RN5P\(1W,O%D2;DQ)C=^.S^`[9]PUN=60634[9]TUID=1311[12]PUID=5036028
- 1077: Text3: [28]UID=RNJ7^-V1"&<$6^IX[TP?REVP[9]PUN=60634[9]TUID=1312[12]PUID=5036028
- 1078: Text3: [28]UID=RNA<ZTD.2KMTJ*E[:S</F*O`[9]PUN=60634[9]TUID=1316[12]PUID=5036028
- 1079: Text3: [28]UID=RN=*8D8<:PLD6*L#!,,)2CA`[9]PUN=60634[9]TUID=1300[12]PUID=5036028
- 1080: Text3: [28]UID=RN1P==`+S*P4."<L4-L4-SAP[9]PUN=60634[9]TUID=1313[12]PUID=5036028
- 1081: Text3: [28]UID=RN9--&YEJ>ATN8#--.0KY)B`[9]PUN=60634[9]TUID=1314[12]PUID=5036028
- 1082: Text3: [28]UID=RNR43GBH>1'4B?R;IT$1R7\0[9]PUN=60634[9]TUID=1315[12]PUID=5036028
- 1083: Text3: [28]UID=RNGV"H;8(CVDJ_+>Q@0R2X>`[9]PUN=60634[9]TUID=1298[12]PUID=5036028
- 1084: Text3: [28]UID=RNG[>VCZDI-TV/T3N0VWZ+5@[9]PUN=60634[9]TUID=1326[12]PUID=5036028
- 1085: Text3: [28]UID=RN:M%7C$X1D4RHC.]`UU'E3@[9]PUN=60634[9]TUID=1328[12]PUID=5036028
- 1086: Text3: [28]UID=RN0EW<3F04B$>YU?K:T%"X0`[9]PUN=60634[9]TUID=1999[12]PUID=5036028
- 1087: Text3: [28]UID=RN@GAGA58I5$"??L'DC:LPZ0[9]PUN=60634[9]TUID=1331[12]PUID=5036028
- 1088: Text3: [28]UID=RN(>&#R.1(+$.(<+[KP$:44@[9]PUN=60634[9]TUID=1305[12]PUID=5036028

| ID | WBS | Task | Type | Duration | Start | Finish | Predecessors | Total slack | Free slack | Constraint | Fin Ajustado | Responsable |
| --- | --- | --- | --- | --- | --- | --- | --- | --- | --- | --- | --- | --- |
| 1089 | 1.18 | **Etapa 8 - ADB** |  | 673d? | 2012-02-03 | 2014-11-10 |  | 72d | 0d |  | 10/11/14 |  |
| 1090 | 1.18.1 | **Procesos** |  | 531.75d | 2012-02-03 | 2014-04-15 |  | 213.25d |  |  | 15/04/14 |  |
| 1091 | 1.18.1.1 | Relevamiento del proceso actual (La voz del cliente-Focus group) |  | 27d | 2013-07-08 | 2013-08-15 | 1092SF | 375d |  | start no earlier than 2013-07-08 | A definir | Gustavo Rosemberg |
| 1092 | 1.18.1.2 | Entregable Interno - Diagnostico y Mejoras |  | 1d | 2013-08-15 | 2013-08-15 |  | 374d | 0d | start no earlier than 2013-08-15 | A definir | Gustavo Rosemberg |
| 1093 | 1.18.1.3 | Relevamiento del proceso en el sistema en detalle |  | 15d | 2012-02-03 | 2012-02-27 |  | 730d |  |  | A definir | Gustavo Rosemberg |
| 1094 | 1.18.1.4 | Entregable del Diseño del proceso |  | 15d | 2012-02-03 | 2012-02-27 |  | 730d |  |  | A definir | Gustavo Rosemberg |
| 1095 | 1.18.1.5 | Modelado ARIS para publicar en Claridad |  | 21d | 2014-03-13 | 2014-04-15 |  | 213.25d |  | start no earlier than 2014-03-13 | 15/04/14 | Gustavo Rosemberg |
| 1096 | 1.18.2 | Hito:Procesos y Modelo Aris finalizado | milestone | 0d | 2012-02-03 | 2012-02-03 |  | 745d |  |  | A definir | Gustavo Rosemberg |
| 1097 | 1.18.3 | **Revisión de funcionalidades de ADB** |  | 1d? | 2012-02-03 | 2012-02-03 |  | 744d |  |  | A definir |  |
| 1098 | 1.18.3.1 | Identificación de oportunidades de implementación |  | 1d? | 2012-02-03 | 2012-02-03 |  | 744d |  |  | A definir |  |
| 1099 | 1.18.4 | Hito: Revisión de funcionalidades de ADB finalizada |  | 1d? | 2012-02-03 | 2012-02-03 |  | 744d |  |  | A definir |  |
| 1100 | 1.18.5 | **Análisis y Diseño** |  | 7d | 2014-06-27 | 2014-07-07 |  | 110d | 0d |  | 07/07/14 |  |
| 1101 | 1.18.5.1 | Workshop funcionalidades ADB |  | 1d | 2014-06-27 | 2014-06-27 | 376, 1065 | 110d | 0d |  | 27/06/14 | TBD |
| 1102 | 1.18.5.2 | Análisis de requerimientos de Módulo Indicadores de Análisis de Personal de ERS |  | 1d | 2014-06-30 | 2014-06-30 | 1101 | 110d | 0d |  | 30/06/14 | TBD |
| 1103 | 1.18.5.3 | Análisis de requerimientos de Módulo Indicadores de análisis del GAP de ERS |  | 1d | 2014-07-01 | 2014-07-01 | 1102 | 110d | 0d |  | 01/07/14 | TBD |
| 1104 | 1.18.5.4 | Análisis de requerimientos de Módulo Análisis salarial de ERS |  | 1d | 2014-07-02 | 2014-07-02 | 1103 | 110d | 0d |  | 02/07/14 | TBD |
| 1105 | 1.18.5.5 | Análisis de requerimientos de Módulo Costes de ERS |  | 1d | 2014-07-03 | 2014-07-03 | 1104 | 110d | 0d |  | 03/07/14 | TBD |
| 1106 | 1.18.5.6 | Análisis de requerimientos de Módulo Resultados de Nómina de ERS |  | 1d | 2014-07-04 | 2014-07-04 | 1105 | 110d | 0d |  | 04/07/14 | TBD |
| 1107 | 1.18.5.7 | Análisis de requerimientos de Módulo Gestión del Talento de ERS |  | 1d | 2014-07-07 | 2014-07-07 | 1106 | 110d | 0d |  | 07/07/14 | TBD |
| 1108 | 1.18.5.8 | Hito: Confección del ERS Finalizado | milestone | 0d | 2014-07-07 | 2014-07-07 | 1107 | 110d | 0d |  | 07/07/14 |  |
| 1109 | 1.18.5.9 | Hito: Aceptación del usuario del ERS | milestone | 0d | 2014-07-07 | 2014-07-07 | 1108 | 110d | 0d |  | 07/07/14 |  |
| 1110 | 1.18.6 | Hito: Análisis y diseño Finalizado | milestone | 0d | 2014-07-07 | 2014-07-07 | 1100 | 110d | 0d |  | 07/07/14 |  |
| 1111 | 1.18.7 | **Plan de Comunicación - GDG** |  | 23d | 2014-07-08 | 2014-08-08 |  | 136d | 0d |  | 08/08/14 |  |
| 1112 | 1.18.7.1 | Análisis y Entendimiento |  | 10d | 2014-07-08 | 2014-07-22 | 1109 | 136d | 0d |  | 22/07/14 | Florencia Bozzini |
| 1113 | 1.18.7.2 | Armado de documentación |  | 5d | 2014-07-23 | 2014-07-29 | 1112 | 136d | 0d |  | 29/07/14 | Florencia Bozzini |
| 1114 | 1.18.7.3 | Validación de documentación |  | 5d | 2014-07-30 | 2014-08-05 | 1113 | 136d | 0d |  | 05/08/14 | Florencia Bozzini |
| 1115 | 1.18.7.4 | Diseño del Plan de Comunicación |  | 3d | 2014-08-06 | 2014-08-08 | 1114 | 136d | 0d |  | 08/08/14 | Florencia Bozzini |
| 1116 | 1.18.7.5 | Hito: Validación del Plan de Comunicación finalizada | milestone | 0d | 2014-08-08 | 2014-08-08 | 1115 | 136d |  |  | 08/08/14 | Florencia Bozzini |
| 1117 | 1.18.8 | Hito: Plan de Comunicación finalizado | milestone | 0d | 2014-08-08 | 2014-08-08 | 1111 | 136d |  |  | 08/08/14 | Florencia Bozzini |

Notes:
- 1089: Text3: [28]UID=RN?DL\B,'P14NET3<&?`HTQ@[9]PUN=60634[9]TUID=2035[12]PUID=5036028
- 1090: Text3: [28]UID=RN,F.#WJ";Y4"_M6?1DU&`'`[9]PUN=60634[9]TUID=2277[12]PUID=5036028
- 1091: Text3: [28]UID=RNK)087$O#!DVQ`_ETQ-KLM0[9]PUN=60634[9]TUID=2579[12]PUID=5036028 / Colaboradores: Néstor Vergano
- 1092: Text3: [28]UID=RN\^D)(R3C2T^SG(,9Q:FR\@[9]PUN=60634[9]TUID=2580[12]PUID=5036028 / Colaboradores: Néstor Vergano
- 1093: Text3: [28]UID=RNPBVU-J<1V4NM7AJO9@PSZ`[9]PUN=60634[9]TUID=2581[12]PUID=5036028 / Colaboradores: Néstor Vergano
- 1094: Text3: [28]UID=RN:&F65QOIW46#*QV<">[7G`[9]PUN=60634[9]TUID=2582[12]PUID=5036028 / Colaboradores: Néstor Vergano
- 1095: Text3: [28]UID=RNQDL8&=P')$6M%@:GTA425@[9]PUN=60634[9]TUID=2583[12]PUID=5036028 / Colaboradores: Néstor Vergano
- 1096: Text3: [28]UID=RNV-9]37]CETFNKVBCD#&<3P[9]PUN=60634[9]TUID=2286[12]PUID=5036028 / Colaboradores: Néstor Vergano
- 1097: Text3: [28]UID=RN#OBCB=$#ZD2)J!L]0-4>M`[9]PUN=60634[9]TUID=2544[12]PUID=5036028
- 1098: Text3: [28]UID=RNOY/N>D(%1T"!_?B#D2\?ZP[9]PUN=60634[9]TUID=2546[12]PUID=5036028
- 1099: Text3: [28]UID=RN$4D$%&*L"T>"*.Y*L]V@7P[9]PUN=60634[9]TUID=2545[12]PUID=5036028
- 1100: Text3: [28]UID=RNV'ZN@!(_V$63$M8C?!MJ?`[9]PUN=60634[9]TUID=2034[12]PUID=5036028
- 1101: Text3: [28]UID=RNT:$X!%2MP$B]&04>3C-N?P[9]PUN=60634[9]TUID=2033[12]PUID=5036028 / Colaboradores: Valeria Venegas; Sebastian Herrera; Ana Parimbelli; Laura Fernández; Casandra Giuliano
- 1102: Text3: [28]UID=RN=P(N'L^')DNDRZ9S6PE?QP[9]PUN=60634[9]TUID=2032[12]PUID=5036028 / Colaboradores: Valeria Venegas; Sebastian Herrera; Ana Parimbelli; Laura Fernández; Casandra Giuliano
- 1103: Text3: [28]UID=RN$NB"[72<-$&4`6=0I,">9@[9]PUN=60634[9]TUID=2064[12]PUID=5036028 / Colaboradores: Valeria Venegas; Sebastian Herrera; Ana Parimbelli; Laura Fernández; Casandra Giuliano
- 1104: Text3: [28]UID=RNGV9:+ME&C4:JZM.@`8,]N0[9]PUN=60634[9]TUID=2063[12]PUID=5036028 / Colaboradores: Valeria Venegas; Sebastian Herrera; Ana Parimbelli; Laura Fernández; Casandra Giuliano
- 1105: Text3: [28]UID=RN8-GCYS`<Y4*8WS_&N`^)M`[9]PUN=60634[9]TUID=2062[12]PUID=5036028 / Colaboradores: Valeria Venegas; Sebastian Herrera; Ana Parimbelli; Laura Fernández; Casandra Giuliano
- 1106: Text3: [28]UID=RN5B41>%`EG4JAF_[?F"<\*P[9]PUN=60634[9]TUID=2061[12]PUID=5036028 / Colaboradores: Valeria Venegas; Sebastian Herrera; Ana Parimbelli; Laura Fernández; Casandra Giuliano
- 1107: Text3: [28]UID=RNX^)L@#SO8TV9KH<@.N4QXP[9]PUN=60634[9]TUID=2065[12]PUID=5036028 / Colaboradores: Valeria Venegas; Sebastian Herrera; Ana Parimbelli; Laura Fernández; Casandra Giuliano
- 1108: Text3: [28]UID=RNP[SLDV$I"D2T#>8F`W@U`@[9]PUN=60634[9]TUID=2031[12]PUID=5036028
- 1109: Text3: [28]UID=RNK8_#)K;FV$N&9]5M8!SV_`[9]PUN=60634[9]TUID=2030[12]PUID=5036028
- 1110: Text3: [28]UID=RN$-SK??2#RD:F:L$U+AN,U0[9]PUN=60634[9]TUID=2029[12]PUID=5036028
- 1111: Text3: [28]UID=RNFP,H#OKZ84:\[&I.9(B<^`[9]PUN=60634[9]TUID=2426[12]PUID=5036028
- 1112: Text3: [28]UID=RN[/^)]:=Y1T:@<KUWJ7((?P[9]PUN=60634[9]TUID=2427[12]PUID=5036028
- 1113: Text3: [28]UID=RNNJJ]V+9HJ$>#=O3F//UF0@[9]PUN=60634[9]TUID=2428[12]PUID=5036028
- 1114: Text3: [28]UID=RNY*&F@$BC=TZW+VS&(O"]6@[9]PUN=60634[9]TUID=2429[12]PUID=5036028
- 1115: Text3: [28]UID=RN*W':>JJ]PDJR`*VQ\=2"Y0[9]PUN=60634[9]TUID=2430[12]PUID=5036028
- 1116: Text3: [28]UID=RN<0^'PG@6,DF%:X%9M[LY30[9]PUN=60634[9]TUID=2431[12]PUID=5036028
- 1117: Text3: [28]UID=RN#?7):WM[U$F`9']^PQER0P[9]PUN=60634[9]TUID=2432[12]PUID=5036028

| ID | WBS | Task | Type | Duration | Start | Finish | Predecessors | Total slack | Free slack | Fin Ajustado | Responsable |
| --- | --- | --- | --- | --- | --- | --- | --- | --- | --- | --- | --- |
| 1118 | 1.18.9 | **Construcción** |  | 87d | 2014-07-08 | 2014-11-10 |  | 72d | 0d | 10/11/14 |  |
| 1119 | 1.18.9.1 | **Construcción Módulo Indicadores de Análisis de Personal** |  | 8d | 2014-07-08 | 2014-07-18 |  | 110d | 0d | 18/07/14 |  |
| 1120 | 1.18.9.1.1 | Cuadre de Plantilla para la Organización |  | 2d | 2014-07-08 | 2014-07-10 | 1110 | 110d | 0d | 10/07/14 | TBD |
| 1121 | 1.18.9.1.2 | Cuadre de plantilla por tipo de empleado |  | 2d | 2014-07-11 | 2014-07-14 | 1120 | 110d | 0d | 14/07/14 | TBD |
| 1122 | 1.18.9.1.3 | Ratios de rotación |  | 2d | 2014-07-15 | 2014-07-16 | 1121 | 110d | 0d | 16/07/14 | TBD |
| 1123 | 1.18.9.1.4 | Ratios de rotación por meses |  | 2d | 2014-07-17 | 2014-07-18 | 1122 | 110d |  | 18/07/14 | TBD |
| 1124 | 1.18.9.2 | Hito: Construcción de Modulo Indicadores de Análisis de Personal Finalizado | milestone | 0d | 2014-07-18 | 2014-07-18 | 1119 | 110d | 0d | 18/07/14 |  |
| 1125 | 1.18.9.3 | **Construcción Módulo Indicadores de análisis del GAP** |  | 14d | 2014-07-21 | 2014-08-07 |  | 110d | 0d | 07/08/14 |  |
| 1126 | 1.18.9.3.1 | GAP a su puesto y puesto planificado |  | 2d | 2014-07-21 | 2014-07-22 | 1124 | 110d | 0d | 22/07/14 | TBD |
| 1127 | 1.18.9.3.2 | Detalle del GAP |  | 2d | 2014-07-23 | 2014-07-24 | 1126 | 110d | 0d | 24/07/14 | TBD |
| 1128 | 1.18.9.3.3 | GAP de Empleados que tienen preferencias a otros puestos |  | 2d | 2014-07-25 | 2014-07-28 | 1127 | 110d | 0d | 28/07/14 | TBD |
| 1129 | 1.18.9.3.4 | GAP a un puesto dado |  | 2d | 2014-07-29 | 2014-07-30 | 1128 | 110d | 0d | 30/07/14 | TBD |
| 1130 | 1.18.9.3.5 | GAP de mis empleados vs su Puesto |  | 2d | 2014-07-31 | 2014-08-01 | 1129 | 110d | 0d | 01/08/14 | TBD |
| 1131 | 1.18.9.3.6 | Simulación del nuevo GAP tras la formación |  | 2d | 2014-08-04 | 2014-08-05 | 1130 | 110d | 0d | 05/08/14 | TBD |
| 1132 | 1.18.9.3.7 | GAP a puestos superiores más adecuados |  | 2d | 2014-08-06 | 2014-08-07 | 1131 | 110d |  | 07/08/14 | TBD |
| 1133 | 1.18.9.4 | Hito: Construcción de Modulo Indicadores de análisis del GAP | milestone | 0d | 2014-08-07 | 2014-08-07 | 1125 | 110d | 0d | 07/08/14 |  |
| 1134 | 1.18.9.5 | **Construcción Módulo Análisis salarial** |  | 6d | 2014-08-08 | 2014-08-15 |  | 110d | 0d | 15/08/14 |  |
| 1135 | 1.18.9.5.1 | Situación Salarial por Estructura |  | 2d | 2014-08-08 | 2014-08-11 | 1133 | 110d | 0d | 11/08/14 | TBD |
| 1136 | 1.18.9.5.2 | Desviación Salarial Respecto a Competitividad Externa |  | 2d | 2014-08-12 | 2014-08-13 | 1135 | 110d | 0d | 13/08/14 | TBD |
| 1137 | 1.18.9.5.3 | Análisis Salarial por Nivel de Puesto |  | 2d | 2014-08-14 | 2014-08-15 | 1136 | 110d |  | 15/08/14 | TBD |
| 1138 | 1.18.9.6 | Hito: Construcción de Modulo Análisis salarial | milestone | 0d | 2014-08-15 | 2014-08-15 | 1134 | 110d | 0d | 15/08/14 |  |
| 1139 | 1.18.9.7 | **Construcción Módulo Costes** |  | 12d | 2014-08-19 | 2014-09-03 |  | 110d | 0d | 03/09/14 |  |
| 1140 | 1.18.9.7.1 | Desglose de Costes por tipo |  | 2d | 2014-08-19 | 2014-08-20 | 1138 | 110d | 0d | 20/08/14 | TBD |
| 1141 | 1.18.9.7.2 | Costes de Formación por Sesión de Formación |  | 2d | 2014-08-21 | 2014-08-22 | 1140 | 110d | 0d | 22/08/14 | TBD |
| 1142 | 1.18.9.7.3 | Desglose Costes de Formación en Acciones Formativas |  | 2d | 2014-08-25 | 2014-08-26 | 1141 | 110d | 0d | 26/08/14 | TBD |
| 1143 | 1.18.9.7.4 | Desglose de Costes Salariales |  | 2d | 2014-08-27 | 2014-08-28 | 1142 | 110d | 0d | 28/08/14 | TBD |
| 1144 | 1.18.9.7.5 | Desglose Mensual de Costes Salariales |  | 2d | 2014-08-29 | 2014-09-01 | 1143 | 110d | 0d | 01/09/14 | TBD |
| 1145 | 1.18.9.7.6 | Control de Costes |  | 2d | 2014-09-02 | 2014-09-03 | 1144 | 110d |  | 03/09/14 | TBD |
| 1146 | 1.18.9.8 | Hito: Construcción de Modulo Costes | milestone | 0d | 2014-09-03 | 2014-09-03 | 1139 | 110d | 0d | 03/09/14 |  |

Notes:
- 1118: Text3: [28]UID=RN@`<'!!1/J$V??)M\C1<45@[9]PUN=60634[9]TUID=2046[12]PUID=5036028
- 1119: Text3: [28]UID=RN\=U9F#4W#TN7IY6W]Z8OFP[9]PUN=60634[9]TUID=2073[12]PUID=5036028
- 1120: Text3: [28]UID=RN%G(8>Q[*A4J6Y,:`*U$GA@[9]PUN=60634[9]TUID=2045[12]PUID=5036028
- 1121: Text3: [28]UID=RN6""A3WKJED._>)>K.NFK:P[9]PUN=60634[9]TUID=2044[12]PUID=5036028
- 1122: Text3: [28]UID=RN\3Q6^^-!OD^DNN#3C*J?%0[9]PUN=60634[9]TUID=2043[12]PUID=5036028
- 1123: Text3: [28]UID=RN*;L#4%NFL4N,Q51ZCFNR>`[9]PUN=60634[9]TUID=2042[12]PUID=5036028
- 1124: Text3: [28]UID=RN;-0K7U($)$2$)M=&FKQFX`[9]PUN=60634[9]TUID=2083[12]PUID=5036028
- 1125: Text3: [28]UID=RN>$9C\W*ZG4:'`"=ZV%@9,@[9]PUN=60634[9]TUID=2105[12]PUID=5036028
- 1126: Text3: [28]UID=RN*7@8*LAE.4ZH*3F3QRS1K@[9]PUN=60634[9]TUID=2104[12]PUID=5036028
- 1127: Text3: [28]UID=RN>"GN('%3'D2%`V<<I?,J`@[9]PUN=60634[9]TUID=2103[12]PUID=5036028
- 1128: Text3: [28]UID=RNZ+N-Y56**T>QESAJ00"I4`[9]PUN=60634[9]TUID=2102[12]PUID=5036028
- 1129: Text3: [28]UID=RNGB.-/2-;!4&FF4ML7TID40[9]PUN=60634[9]TUID=2101[12]PUID=5036028
- 1130: Text3: [28]UID=RNB^"RY!J2?T"18:A.>0>$!`[9]PUN=60634[9]TUID=2108[12]PUID=5036028
- 1131: Text3: [28]UID=RN^C:)*[8E#4R^&DA[,CCM!P[9]PUN=60634[9]TUID=2107[12]PUID=5036028
- 1132: Text3: [28]UID=RNXUD.!=`B"D63F;5S/E,>WP[9]PUN=60634[9]TUID=2106[12]PUID=5036028
- 1133: Text3: [28]UID=RN_"X9P;]`DTR*GS*3-8UB`P[9]PUN=60634[9]TUID=2100[12]PUID=5036028
- 1134: Text3: [28]UID=RNW:!$V(3I!46]4Q%PC)O<>P[9]PUN=60634[9]TUID=2099[12]PUID=5036028
- 1135: Text3: [28]UID=RNFESMJA6JFT&C%>WEEF(6U@[9]PUN=60634[9]TUID=2098[12]PUID=5036028
- 1136: Text3: [28]UID=RN89Z:7;J9`4.8;ARE8+S=Q@[9]PUN=60634[9]TUID=2097[12]PUID=5036028
- 1137: Text3: [28]UID=RN<=3S@DH4%T"K32YDD,P]>@[9]PUN=60634[9]TUID=2096[12]PUID=5036028
- 1138: Text3: [28]UID=RN3\/;L*/$U4JL87&F/+O<.@[9]PUN=60634[9]TUID=2094[12]PUID=5036028
- 1139: Text3: [28]UID=RNMY4BYC%A:DJW4-."V43!Z@[9]PUN=60634[9]TUID=2114[12]PUID=5036028
- 1140: Text3: [28]UID=RN4XIZ7+!30$N$&460GV@HHP[9]PUN=60634[9]TUID=2113[12]PUID=5036028
- 1141: Text3: [28]UID=RND8N/*77R?DB2FT3.HT/6&@[9]PUN=60634[9]TUID=2112[12]PUID=5036028
- 1142: Text3: [28]UID=RN<[KNP%(N=$&Q:*]YT+$6#0[9]PUN=60634[9]TUID=2111[12]PUID=5036028
- 1143: Text3: [28]UID=RNLAF6:J"H<$J6+H#DY0!KQP[9]PUN=60634[9]TUID=2110[12]PUID=5036028
- 1144: Text3: [28]UID=RN-U2ZR.M(1T.P-(]3`6V_0@[9]PUN=60634[9]TUID=2109[12]PUID=5036028
- 1145: Text3: [28]UID=RN#U#X,T&H+4"8B7<593'9*`[9]PUN=60634[9]TUID=2093[12]PUID=5036028
- 1146: Text3: [28]UID=RN4LI'ZA:_CT>M32E(8SP2QP[9]PUN=60634[9]TUID=2091[12]PUID=5036028

| ID | WBS | Task | Type | Duration | Start | Finish | Predecessors | Total slack | Free slack | Fin Ajustado | Responsable |
| --- | --- | --- | --- | --- | --- | --- | --- | --- | --- | --- | --- |
| 1147 | 1.18.9.9 | **Construcción Módulo Resultados de nómina** |  | 2d | 2014-09-04 | 2014-09-05 |  | 110d | 0d | 05/09/14 |  |
| 1148 | 1.18.9.9.1 | Análisis global de costes de personal |  | 2d | 2014-09-04 | 2014-09-05 | 1146 | 110d |  | 05/09/14 | TBD |
| 1149 | 1.18.9.10 | Hito: Construcción de Modulo Resultados de nómina | milestone | 0d | 2014-09-05 | 2014-09-05 | 1147 | 110d | 0d | 05/09/14 |  |
| 1150 | 1.18.9.11 | **Construcción Módulo Gestión del talento** |  | 4d | 2014-09-08 | 2014-09-11 |  | 110d | 0d | 11/09/14 |  |
| 1151 | 1.18.9.11.1 | Vacantes en mi organización |  | 2d | 2014-09-08 | 2014-09-09 | 1149 | 110d | 0d | 09/09/14 | TBD |
| 1152 | 1.18.9.11.2 | Gestión del talento |  | 2d | 2014-09-10 | 2014-09-11 | 1151 | 110d |  | 11/09/14 | TBD |
| 1153 | 1.18.9.12 | Hito: Construcción de Modulo Gestión del talento | milestone | 0d | 2014-09-11 | 2014-09-11 | 1150 | 110d | 0d | 11/09/14 |  |
| 1154 | 1.18.9.13 | **Seguridad** |  | 3d | 2014-11-06 | 2014-11-10 |  | 72d |  | 10/11/14 |  |
| 1155 | 1.18.9.13.1 | Ajustes en los perfiles de seguridad de los usuarios con acceso total |  | 3d | 2014-11-06 | 2014-11-10 | 1024 | 72d |  | 10/11/14 | Recurso 1 |
| 1156 | 1.18.10 | Hito: Construcción de Modulo ADB Finalizado | milestone | 0d | 2014-11-10 | 2014-11-10 | 1118 | 72d |  | 10/11/14 |  |
| 1157 | 1.18.11 | **Testing Funcional** |  | 40d | 2014-07-21 | 2014-09-15 |  | 110d | 0d | 15/09/14 |  |
| 1158 | 1.18.11.1 | Testing funcional Módulo Indicadores de Análisis de Personal |  | 2d | 2014-07-21 | 2014-07-22 | 1124 | 148d |  | 22/07/14 | Sebastián Abad |
| 1159 | 1.18.11.2 | Testing funcional Módulo Indicadores de análisis del GAP |  | 2d | 2014-08-08 | 2014-08-11 | 1133 | 134d |  | 11/08/14 | Sebastián Abad |
| 1160 | 1.18.11.3 | Testing funcional Módulo Análisis salarial |  | 2d | 2014-08-19 | 2014-08-20 | 1138 | 128d |  | 20/08/14 | Sebastián Abad |
| 1161 | 1.18.11.4 | Testing funcional Módulo Costes |  | 2d | 2014-09-04 | 2014-09-05 | 1146 | 116d |  | 05/09/14 | Sebastián Abad |
| 1162 | 1.18.11.5 | Testing funcional Módulo Resultados de Nómina |  | 2d | 2014-09-08 | 2014-09-09 | 1149 | 114d |  | 09/09/14 | Sebastián Abad |
| 1163 | 1.18.11.6 | Testing funcional Módulo Gestión del Talento |  | 2d | 2014-09-12 | 2014-09-15 | 1153 | 110d |  | 15/09/14 | Sebastián Abad |
| 1164 | 1.18.12 | Hito: Testing Módulo ADB Finalizado | milestone | 0d | 2014-09-15 | 2014-09-15 | 1157 | 110d | 0d | 15/09/14 |  |
| 1165 | 1.18.13 | **Homologación** |  | 7d | 2014-07-08 | 2014-07-17 |  | 150d | 0d | 17/07/14 |  |
| 1166 | 1.18.13.1 | Definición de Tracks de prueba |  | 2d | 2014-07-08 | 2014-07-10 | 1110 | 150d | 0d | 10/07/14 |  |
| 1167 | 1.18.13.2 | Producto: Plan de Pruebas | milestone | 0d | 2014-07-10 | 2014-07-10 | 1166 | 150d | 0d | 10/07/14 |  |
| 1168 | 1.18.13.3 | Hito: Casos de prueba definidos | milestone | 0d | 2014-07-10 | 2014-07-10 | 1167 | 155d |  | 10/07/14 |  |
| 1169 | 1.18.13.4 | Hito: Revisión casos y datos | milestone | 0d | 2014-07-10 | 2014-07-10 | 1167 | 155d |  | 10/07/14 |  |
| 1170 | 1.18.13.5 | Hito: Aceptación de usuario asignados | milestone | 0d | 2014-07-10 | 2014-07-10 | 1167 | 150d | 0d | 10/07/14 |  |
| 1171 | 1.18.13.6 | Pruebas del módulo de Selección |  | 5d | 2014-07-11 | 2014-07-17 | 1170 | 150d |  | 17/07/14 |  |
| 1172 | 1.18.14 | Hito: Módulo Selección Homologado | milestone | 0d | 2014-07-17 | 2014-07-17 | 1165 | 150d | 0d | 17/07/14 |  |

Notes:
- 1147: Text3: [28]UID=RNM&49>H^C<T2RI<%.R*E,70[9]PUN=60634[9]TUID=2120[12]PUID=5036028
- 1148: Text3: [28]UID=RN=O:@FVXV-$"_!]GT?MTW60[9]PUN=60634[9]TUID=2119[12]PUID=5036028
- 1149: Text3: [28]UID=RN#;V;XP4C6$*ZIZ:H'XAO_@[9]PUN=60634[9]TUID=2116[12]PUID=5036028
- 1150: Text3: [28]UID=RN9XG426%7+DR)]RO)(M,S+@[9]PUN=60634[9]TUID=2122[12]PUID=5036028
- 1151: Text3: [28]UID=RNY*EX4(#"M$6"I9>7C4:(!0[9]PUN=60634[9]TUID=2121[12]PUID=5036028
- 1152: Text3: [28]UID=RNY25/VOJ^QT*4/;9^JE.GN@[9]PUN=60634[9]TUID=2115[12]PUID=5036028
- 1153: Text3: [28]UID=RN0EM9H6TMD$&VR2/&ZG]<B0[9]PUN=60634[9]TUID=2090[12]PUID=5036028
- 1154: Text3: [28]UID=RN=;R3I,W3D4.7H_[^"1EFS0[9]PUN=60634[9]TUID=2139[12]PUID=5036028
- 1155: Text3: [28]UID=RN!U_4],[`U$6.MK-\V!/KG`[9]PUN=60634[9]TUID=2140[12]PUID=5036028
- 1156: Text3: [28]UID=RNZM(7V'*2!T^94O;ZRFA!FP[9]PUN=60634[9]TUID=2039[12]PUID=5036028
- 1157: Text3: [28]UID=RN=_^R\X!6E428S@?C/295\`[9]PUN=60634[9]TUID=2072[12]PUID=5036028
- 1158: Text3: [28]UID=RN.A>0L*6!4D:7.'^S4!61,@[9]PUN=60634[9]TUID=2071[12]PUID=5036028 / Colaboradores: Valeria Venegas; Sebastian Herrera; Ana Parimbelli; Laura Fernández; Casandra Giuliano
- 1159: Text3: [28]UID=RN@A-M^8C!WD&VPRGC:[^T"P[9]PUN=60634[9]TUID=2128[12]PUID=5036028 / Colaboradores: Valeria Venegas; Sebastian Herrera; Ana Parimbelli; Laura Fernández; Casandra Giuliano
- 1160: Text3: [28]UID=RNT758?;@#NTB'IQS:#5MP#0[9]PUN=60634[9]TUID=2127[12]PUID=5036028 / Colaboradores: Valeria Venegas; Sebastian Herrera; Ana Parimbelli; Laura Fernández; Casandra Giuliano
- 1161: Text3: [28]UID=RN7(/2!1E[24ZVHPNZ37&]20[9]PUN=60634[9]TUID=2126[12]PUID=5036028 / Colaboradores: Valeria Venegas; Sebastian Herrera; Ana Parimbelli; Laura Fernández; Casandra Giuliano
- 1162: Text3: [28]UID=RN5JU/D%*;Z4",VV)$,Y[3N@[9]PUN=60634[9]TUID=2125[12]PUID=5036028 / Colaboradores: Valeria Venegas; Sebastian Herrera; Ana Parimbelli; Laura Fernández; Casandra Giuliano
- 1163: Text3: [28]UID=RNA5!;45)_MDREPD[HM\YCD`[9]PUN=60634[9]TUID=2124[12]PUID=5036028 / Colaboradores: Valeria Venegas; Sebastian Herrera; Ana Parimbelli; Laura Fernández; Casandra Giuliano
- 1164: Text3: [28]UID=RN]K[\7W'NU$:G#@%TGH8NL@[9]PUN=60634[9]TUID=2069[12]PUID=5036028
- 1165: Text3: [28]UID=RNI7*4/J#U#DB%QP`)<PU@`0[9]PUN=60634[9]TUID=2068[12]PUID=5036028
- 1166: Text3: [28]UID=RNT4.V1-E;^$.PPN"Y[>JV?P[9]PUN=60634[9]TUID=2067[12]PUID=5036028
- 1167: Text3: [28]UID=RND?7+#(&]HT"@QBEMJZF6L`[9]PUN=60634[9]TUID=2066[12]PUID=5036028
- 1168: Text3: [28]UID=RN@-XE-VC)A46'/?9(*`.EC@[9]PUN=60634[9]TUID=2055[12]PUID=5036028
- 1169: Text3: [28]UID=RN!%)6MO&`@$*E,_/\B0+>;`[9]PUN=60634[9]TUID=2054[12]PUID=5036028
- 1170: Text3: [28]UID=RN$"F(FI-0^TV='!,ZZ&LM;P[9]PUN=60634[9]TUID=2053[12]PUID=5036028
- 1171: Text3: [28]UID=RN,!!BC*7YAD*/S/C5'XOIN@[9]PUN=60634[9]TUID=2052[12]PUID=5036028
- 1172: Text3: [28]UID=RNY&H1`_@H_4&Q"G1'_G*6'P[9]PUN=60634[9]TUID=2051[12]PUID=5036028

| ID | WBS | Task | Type | Duration | Start | Finish | Predecessors | Complete | Remaining | Total slack | Free slack | Constraint | Fin Ajustado | Responsable | Reporte Semanal |
| --- | --- | --- | --- | --- | --- | --- | --- | --- | --- | --- | --- | --- | --- | --- | --- |
| 1173 | 1.18.15 | **Pasaje a Producción** |  | 42d | 2014-07-18 | 2014-09-16 |  |  |  | 110d | 0d |  | 16/09/14 |  |  |
| 1174 | 1.18.15.1 | Implementación |  | 2d | 2014-07-18 | 2014-07-21 | 1172 |  |  | 150d |  |  | 21/07/14 |  |  |
| 1175 | 1.18.15.2 | Documentación Técnica de desarrollo |  | 1d | 2014-09-16 | 2014-09-16 | 1164 |  |  | 110d |  |  | 16/09/14 |  |  |
| 1176 | 1.18.16 | Hito: Módulo ADB implementado en Producción | milestone | 0d | 2014-09-16 | 2014-09-16 | 1173 |  |  | 110d |  |  | 16/09/14 |  |  |
| 1177 | 1.19 | Hito: Modulo ADB Finalizado | milestone | 0d | 2014-11-10 | 2014-11-10 | 1089 |  |  | 72d |  |  | 10/11/14 |  |  |
| 1178 | 1.20 | **Capacitación** |  | 239.75d? | 2012-02-03 | 2013-01-28 |  |  |  | 505.25d |  |  | A definir |  |  |
| 1179 | 1.20.1 | **Estrategia de Capacitación** |  | 196.75d? | 2012-02-03 | 2012-11-22 |  |  |  | 548.25d |  |  | A definir |  |  |
| 1180 | 1.20.1.1 | Elaborar estrategia de capacitación |  | 22.75d? | 2012-10-01 | 2012-11-01 |  |  |  | 548.25d | 0d | finish no earlier than 2012-11-01 | A definir | TBD |  |
| 1181 | 1.20.1.2 | Validar Estrategia de capacitación |  | 15d | 2012-11-01 | 2012-11-22 | 1180 |  |  | 548.25d |  |  | A definir | TBD |  |
| 1182 | 1.20.1.3 | Hito: Estrategia de Capacitación validada | milestone | 0d | 2012-02-03 | 2012-02-03 |  |  |  | 745d |  |  | A definir | TBD |  |
| 1183 | 1.20.2 | **Plan de capacitación** |  | 32.75d? | 2012-12-10 | 2013-01-28 |  |  |  | 505.25d |  |  | A definir |  |  |
| 1184 | 1.20.2.1 | Hito: entrega de pantallas | milestone | 0d | 2012-12-10 | 2012-12-10 |  |  |  | 518d | 0d | start no earlier than 2012-12-10 | A definir | TBD |  |
| 1185 | 1.20.2.2 | Diseño de materiales: Contenido |  | 30d | 2012-12-11 | 2013-01-24 |  |  |  | 507d |  | start no earlier than 2012-12-11 | A definir | TBD |  |
| 1186 | 1.20.2.3 | Diseño de materiales: Desarrollo E-learnining |  | 20d | 2012-12-10 | 2013-01-09 | 1184 |  |  | 518d |  |  | A definir | TBD |  |
| 1187 | 1.20.2.4 | Validación de materiales |  | 7d | 2013-01-02 | 2013-01-10 |  |  |  | 517d |  | start no earlier than 2013-01-02 | A definir | TBD |  |
| 1188 | 1.20.2.5 | Ejecución capacitación piloto |  | 2d | 2012-12-13 | 2012-12-14 |  |  |  | 533d |  | start no earlier than 2012-12-13 | A definir | TBD |  |
| 1189 | 1.20.2.6 | Ejecución reuniones de trabajo |  | 4.75d? | 2013-01-21 | 2013-01-25 |  |  |  | 506.25d |  | finish no earlier than 2013-01-25 | A definir | TBD |  |
| 1190 | 1.20.2.7 | Ejecución capacitación on line |  | 9.75d? | 2013-01-14 | 2013-01-25 |  |  |  | 505.25d | 0d | finish no earlier than 2013-01-25 | A definir | TBD |  |
| 1191 | 1.20.2.8 | Resultados de las capacitaciones |  | 1d | 2013-01-25 | 2013-01-28 | 1190 |  |  | 505.25d | 0d |  | A definir | TBD |  |
| 1192 | 1.20.2.9 | Hito: capacitaciones finalizadas | milestone | 0d | 2013-01-28 | 2013-01-28 | 1191 |  |  | 505.25d |  |  | A definir | TBD |  |
| 1193 | 1.21 | **Gestión del Cambio** |  | 434d | 2012-02-03 A | 2013-11-15 |  | 97% | 13.48d | 311d |  |  | A definir |  |  |
| 1194 | 1.21.1 | **Team Bulding** |  | 381d | 2012-02-03 A | 2013-08-30 A |  | 100% |  |  |  |  | A definir |  |  |
| 1195 | 1.21.1.1 | Hito: Reunion con Jackie Lanusse-Objetivo de la actividad y tipos de actividades | milestone | 0d | 2013-05-31 A | 2013-05-31 A |  | 100% |  |  |  | start no earlier than 2013-05-31 | A definir | Florencia Bozzini | ܁E |
| 1196 | 1.21.1.2 | Validar el presupuesto con la lider del proyecto |  | 5d | 2013-06-03 A | 2013-06-07 A |  | 100% |  |  |  | start no earlier than 2013-06-03 | A definir | Florencia Bozzini | ܁E |
| 1197 | 1.21.1.3 | Armado de participantes de Team Building |  | 3d | 2013-06-03 A | 2013-06-05 A |  | 100% |  |  |  | start no earlier than 2013-06-03 | A definir | Florencia Bozzini | ܁E |
| 1198 | 1.21.1.4 | Validación de participantes de TB con lide |  | 2d | 2013-06-06 A | 2013-06-07 A | 1197 | 100% |  |  |  |  | A definir | Florencia Bozzini | ܁E |
| 1199 | 1.21.1.5 | Hito: Reserva de lugar para la actividad de team buildin | milestone | 0d | 2013-06-10 A | 2013-06-10 A |  | 100% |  |  |  | start no earlier than 2013-06-10 | A definir | Florencia Bozzini | ܁E |
| 1200 | 1.21.1.6 | Hito: Envio de comunicación de refuerzo de rol A Agentes de cambio | milestone | 0d | 2013-06-19 A | 2013-06-19 A |  | 100% |  |  |  | start no earlier than 2013-06-19 | A definir | Florencia Bozzini | ܁E |
| 1201 | 1.21.1.7 | Envio de invitacione | milestone | 0d | 2013-06-19 A | 2013-06-19 A |  | 100% |  |  |  | start no earlier than 2013-06-19 | A definir | Florencia Bozzini | ܁E |
| 1202 | 1.21.1.8 | Recordatorio de activida | milestone | 0d | 2013-07-02 A | 2013-07-02 A |  | 100% |  |  |  | start no earlier than 2013-07-02 | A definir | Florencia Bozzini | ܁E |
| 1203 | 1.21.1.9 | Logisitca de Team Building |  | 1d | 2012-02-03 A | 2012-02-03 A |  | 100% |  |  |  |  | A definir | Florencia Bozzini | ܁E |
| 1204 | 1.21.1.10 | Hito: Team Building- Nueva identidad | milestone | 0d | 2013-07-05 A | 2013-07-05 A |  | 100% |  |  |  | start no earlier than 2013-07-05 | A definir | Florencia Bozzini | ܁E |
| 1205 | 1.21.1.11 | Agendar validación de nombre de team buildin | milestone | 0d | 2013-07-22 A | 2013-07-22 A |  | 100% |  |  |  | start no earlier than 2013-07-22 | A definir | Florencia Bozzini | ܁E |
| 1206 | 1.21.1.12 | Validación de nombre de team buildin |  | 8d | 2013-08-13 A | 2013-08-23 A |  | 100% |  |  |  | start no earlier than 2013-07-08 | A definir | Florencia Bozzini | ܁E |
| 1207 | 1.21.1.13 | Comunicar al proyecto y a todos los participantes del proyecto la nueva identidad del proyecto |  | 5d | 2013-08-26 A | 2013-08-30 A | 1206 | 100% |  |  |  | start no earlier than 2013-08-26 | A definir | Florencia Bozzini | ܁E |
| 1208 | 1.21.2 | Hito: Team Bulding finalizado | milestone | 0d | 2013-08-30 A | 2013-08-30 A | 1194 | 100% |  |  |  |  | A definir |  |  |

Notes:
- 1173: Text3: [28]UID=RN-XWS\\H$"DRP3&\1)A8F]`[9]PUN=60634[9]TUID=2050[12]PUID=5036028
- 1174: Text3: [28]UID=RN)UZ0=*EWHT>HER]]3@2MK0[9]PUN=60634[9]TUID=2047[12]PUID=5036028
- 1175: Text3: [28]UID=RN%8[S"#`?A$*F!W<+<`;]"P[9]PUN=60634[9]TUID=2037[12]PUID=5036028
- 1176: Text3: [28]UID=RN#S9D(!/I/T>QQ^S*NR8+&0[9]PUN=60634[9]TUID=2036[12]PUID=5036028
- 1177: Text3: [28]UID=RN-4&I8X:\"4Z`9(E)5\;52P[9]PUN=60634[9]TUID=2026[12]PUID=5036028
- 1178: Text3: [28]UID=RN6L/]Y7MVT$B="/2+0`CI6`[9]PUN=60634[8]TUID=982[12]PUID=5036028
- 1179: Text3: [28]UID=RNG:]?ML2I:$:4!XJ7NG!?I`[9]PUN=60634[8]TUID=983[12]PUID=5036028
- 1180: Text3: [28]UID=RNN7M`@M>S'4FV(JZ'-<(W`P[9]PUN=60634[8]TUID=984[12]PUID=5036028
- 1181: Text3: [28]UID=RN"SZ.#@/H*4N7Z5?^A^^0I@[9]PUN=60634[8]TUID=985[12]PUID=5036028
- 1182: Text3: [28]UID=RNG8]]+#29FTN[XC>==`EX*`[9]PUN=60634[8]TUID=986[12]PUID=5036028
- 1183: Text3: [28]UID=RNV[N5!@"S?$^"`VJHGG_O%0[9]PUN=60634[8]TUID=987[12]PUID=5036028
- 1184: Text3: [28]UID=RN&"BB3IV55T.M*3LN';4PI`[9]PUN=60634[8]TUID=988[12]PUID=5036028
- 1185: Text3: [28]UID=RNEYX^AY2!X4>(?7&.M(^XEP[9]PUN=60634[8]TUID=989[12]PUID=5036028
- 1186: Text3: [28]UID=RNQ?TOV=&CH$6RGE-M!#PCA@[9]PUN=60634[8]TUID=990[12]PUID=5036028
- 1187: Text3: [28]UID=RNBNC$8)G<)$B2KU!\UP?8.P[9]PUN=60634[8]TUID=991[12]PUID=5036028
- 1188: Text3: [28]UID=RN%^``F?Y6]TF4T:S^;3ZQ\`[9]PUN=60634[8]TUID=992[12]PUID=5036028
- 1189: Text3: [28]UID=RN8+R/N"I(]$RY`6]7F;R/S@[9]PUN=60634[8]TUID=993[12]PUID=5036028
- 1190: Text3: [28]UID=RNG@4;HWPM*T.VH`D`L\BM)0[9]PUN=60634[8]TUID=994[12]PUID=5036028
- 1191: Text3: [28]UID=RN"H<GCS(&BD&AA="(CH!1\0[9]PUN=60634[8]TUID=995[12]PUID=5036028
- 1192: Text3: [28]UID=RN_`)9WK7V64FI/G<%%Z9$/@[9]PUN=60634[8]TUID=996[12]PUID=5036028
- 1193: Text3: [28]UID=RNMC]8/SW>@46EV9Q@YA*)J0[9]PUN=60634[9]TUID=2134[12]PUID=5036028
- 1194: Text3: [28]UID=RNNZMIT9UGE$FW''44.NPK]0[9]PUN=60634[9]TUID=2479[12]PUID=5036028
- 1195: Text3: [28]UID=RN#5M]WC%ZN4V<10"\Q'^&?@[9]PUN=60634[9]TUID=2503[12]PUID=5036028
- 1196: Text3: [28]UID=RN7-)("L'`+4>MM;-B?:<]QP[9]PUN=60634[9]TUID=2502[12]PUID=5036028
- 1197: Text3: [28]UID=RN@ICF^U*FKT230S`Z9B;1T`[9]PUN=60634[9]TUID=2501[12]PUID=5036028
- 1198: Text3: [28]UID=RNL2*X0;G-^T&2LS-%*K';9P[9]PUN=60634[9]TUID=2500[12]PUID=5036028
- 1199: Text3: [28]UID=RN6AN&,>[9ZDBG_5S7F.<=Q@[9]PUN=60634[9]TUID=2499[12]PUID=5036028
- 1200: Text3: [28]UID=RN^*-H3Z%Q1$V4^Y<C0?78*@[9]PUN=60634[9]TUID=2498[12]PUID=5036028
- 1201: Text3: [28]UID=RN\1B]3,C[GT.96R8B&'!$/P[9]PUN=60634[9]TUID=2497[12]PUID=5036028
- 1202: Text3: [28]UID=RN#AAV]65+/$RM,5-YF[<\#P[9]PUN=60634[9]TUID=2496[12]PUID=5036028
- 1203: Text3: [28]UID=RND4=?;F;^2T>7!G6!W!-T9P[9]PUN=60634[9]TUID=2495[12]PUID=5036028
- 1204: Text3: [28]UID=RNPI[U)Q(X5DV<6>"[[\)@90[9]PUN=60634[9]TUID=2494[12]PUID=5036028
- 1205: Text3: [28]UID=RN@X3A7RR!@$*.0U%E93]%`P[9]PUN=60634[9]TUID=2493[12]PUID=5036028
- 1206: Text3: [28]UID=RN=)Q>,QXQNT"`_IS(=[=*(`[9]PUN=60634[9]TUID=2492[12]PUID=5036028
- 1207: Text3: [28]UID=RNHX/(+O@<Q$.Q+3`JS.F+:0[9]PUN=60634[9]TUID=2491[12]PUID=5036028
- 1208: Text3: [28]UID=RNV1]!Y0,M%4^9[A/`)"\S$0[9]PUN=60634[9]TUID=2480[12]PUID=5036028

| ID | WBS | Task | Type | Duration | Start | Finish | Predecessors | Complete | Remaining | Total slack | Free slack | Constraint | Fin Ajustado | Responsable | Reporte Semanal |
| --- | --- | --- | --- | --- | --- | --- | --- | --- | --- | --- | --- | --- | --- | --- | --- |
| 1209 | 1.21.3 | **Acciones de Comunicación en General** |  | 29d | 2013-07-22 A | 2013-08-30 A |  | 100% |  |  |  |  | A definir |  |  |
| 1210 | 1.21.3.1 | Armado de una casilla de correo con el nombre del proyecto para identidad del proyecto y comunicacione |  | 5d | 2013-08-26 A | 2013-08-30 A | 1206 | 100% |  |  |  | start no earlier than 2013-08-26 | A definir | Florencia Bozzini | ܁E |
| 1211 | 1.21.3.2 | Envio de comunicación de refuerzo de Rol |  | 5d | 2013-07-22 A | 2013-07-26 A |  | 100% |  |  |  | start no earlier than 2013-07-22 | A definir | Florencia Bozzini |  |
| 1212 | 1.21.4 | Acciones de Comunicación en General finalizada | milestone | 0d | 2013-08-30 A | 2013-08-30 A | 1209 | 100% |  |  |  |  | A definir |  |  |
| 1213 | 1.21.5 | **Newsletter** |  | 87d | 2013-07-15 A | 2013-11-15 |  | 75% | 21.75d | 311d | 0d |  | A definir |  |  |
| 1214 | 1.21.5.1 | Mailing de comunicación al equipo de proyecto y agentes de cambio comunicando el proximo lanzamiento del modulo de autoevaluacion |  | 5d | 2013-07-15 A | 2013-07-19 A |  | 100% |  |  |  | start no earlier than 2013-07-15 | A definir | Florencia Bozzini |  |
| 1215 | 1.21.5.2 | Mailing de comunicación al equipo de proyecto y agentes de cambio por avances del proyecto |  | 5d | 2013-09-02 A | 2013-09-06 A |  | 100% |  |  |  | start no earlier than 2013-09-02 | A definir | Florencia Bozzini |  |
| 1216 | 1.21.5.3 | Mailing de comunicación al equipo de proyecto y agentes cambio por avances del proyect |  | 5d | 2013-11-11 A | 2013-11-15 A |  | 100% |  |  |  | start no earlier than 2013-11-10 | A definir | Florencia Bozzini |  |
| 1217 | 1.21.5.4 | Mailing de comunicación al equipo de proyecto y agentes cambio por avances del proyect |  | 5d | 2013-10-30 | 2013-11-05 |  |  |  | 318d |  | start no earlier than 2013-10-30 | A definir | Florencia Bozzini |  |
| 1218 | 1.21.6 | Hito: Newsletter finalizado | milestone | 0d | 2013-11-15 | 2013-11-15 | 1213 |  |  | 311d |  |  | A definir |  |  |
| 1219 | 1.21.7 | **Relevamiento General** |  | 50d | 2013-03-26 A | 2013-06-10 A |  | 100% |  |  |  |  | A definir |  |  |
| 1220 | 1.21.7.1 | Encuentro de analisis de impactos con Nestor Vergano |  | 1d | 2013-03-26 A | 2013-03-26 A |  | 100% |  |  |  | start no earlier than 2013-03-26 | A definir | Florencia Bozzini |  |
| 1221 | 1.21.7.2 | Encuentro de analisis de impactos con Alfredo Gonzalez |  | 1d | 2013-04-25 A | 2013-04-25 A |  | 100% |  |  |  | start no earlier than 2013-04-25 | A definir | Florencia Bozzini |  |
| 1222 | 1.21.7.3 | Encuentro de analisis de impactos con Alfredo Gonzalez |  | 1d | 2013-05-07 A | 2013-05-07 A |  | 100% |  |  |  | start no earlier than 2013-05-07 | A definir | Florencia Bozzini |  |
| 1223 | 1.21.7.4 | Encuentro de analisis de impactos con ERD (Guadalupe |  | 1d | 2013-05-08 A | 2013-05-08 A |  | 100% |  |  |  | start no earlier than 2013-05-08 | A definir | Florencia Bozzini |  |
| 1224 | 1.21.7.5 | Encuentro de analisis de impactos con ERD (Guadalupe |  | 1d | 2013-05-16 A | 2013-05-16 A |  | 100% |  |  |  | start no earlier than 2013-05-16 | A definir | Florencia Bozzini |  |
| 1225 | 1.21.7.6 | Encuentro de analisis de impactos con ERD (Guadalupe |  | 1d | 2013-05-30 A | 2013-05-30 A |  | 100% |  |  |  | start no earlier than 2013-05-30 | A definir | Florencia Bozzini |  |
| 1226 | 1.21.7.7 | Encuentro de analisis de impactos con EGG (Abigail/Natalia |  | 1d | 2013-06-04 A | 2013-06-04 A |  | 100% |  |  |  | start no earlier than 2013-06-04 | A definir | Florencia Bozzini |  |
| 1227 | 1.21.7.8 | Encuentro de analisis de impactos con EGG (Abigail/Natalia |  | 1d | 2013-06-05 A | 2013-06-05 A |  | 100% |  |  |  | start no earlier than 2013-06-05 | A definir | Florencia Bozzini |  |
| 1228 | 1.21.7.9 | Encuentro de analisis de impactos con EGG (Abigail/Natalia |  | 1d | 2013-06-10 A | 2013-06-10 A |  | 100% |  |  |  | start no earlier than 2013-06-10 | A definir | Florencia Bozzini |  |
| 1229 | 1.21.8 | Hito: Relevamiento General finalizado | milestone | 0d | 2012-02-03 A | 2012-02-03 A |  | 100% |  |  |  |  | A definir |  |  |
| 1230 | 1.21.9 | Análisis de Impacto |  | 50d | 2013-03-18 A | 2013-05-31 A |  | 100% |  |  |  | start no earlier than 2013-03-18 | A definir | Florencia Bozzini |  |
| 1231 | 1.21.10 | Organización de Kick Off |  | 18d | 2013-03-18 A | 2013-04-16 A |  | 100% |  |  |  | start no earlier than 2013-03-18 | A definir | Florencia Bozzini | ܁E |
| 1232 | 1.21.11 | Plan de Comunicación |  | 30d | 2013-04-15 A | 2013-05-27 A |  | 100% |  |  |  |  | A definir | Florencia Bozzini |  |

Notes:
- 1209: Text3: [28]UID=RN)KF-Y)OY/DBYWQ8$(K6U+@[9]PUN=60634[9]TUID=2504[12]PUID=5036028
- 1210: Text3: [28]UID=RN2CBEQV'`"4B*V<&1:J-LJP[9]PUN=60634[9]TUID=2507[12]PUID=5036028
- 1211: Text3: [28]UID=RN^&1&IN#EUT^:=N)).K.((0[9]PUN=60634[9]TUID=2506[12]PUID=5036028
- 1212: Text3: [28]UID=RNH#9*/GX>(4R#([>0\W8CRP[9]PUN=60634[9]TUID=2505[12]PUID=5036028
- 1213: Text3: [28]UID=RN@IY3V4.HND>Y/%5CP<W8RP[9]PUN=60634[9]TUID=2508[12]PUID=5036028
- 1214: Text3: [28]UID=RNO;.&:KS@.4F"40EQ]CA_<@[9]PUN=60634[9]TUID=2513[12]PUID=5036028
- 1215: Text3: [28]UID=RN:?*4??KEO$:J=-<;M3!$0@[9]PUN=60634[9]TUID=2512[12]PUID=5036028
- 1216: Text3: [28]UID=RN0R;4+V./"$&L6:R$XR</#@[9]PUN=60634[9]TUID=2511[12]PUID=5036028
- 1217: Text3: [28]UID=RNJQO9%9=01TJG<ANTXN(-FP[9]PUN=60634[9]TUID=2510[12]PUID=5036028
- 1218: Text3: [28]UID=RNW*K&_R@)-$F11@X:XKQ[T@[9]PUN=60634[9]TUID=2509[12]PUID=5036028
- 1219: Text3: [28]UID=RNF.<AV@*73$&>8X@Q$[3K+`[9]PUN=60634[9]TUID=2514[12]PUID=5036028
- 1220: Text3: [28]UID=RNWZ'9#TC),$"`EJR@3197L`[9]PUN=60634[9]TUID=2525[12]PUID=5036028
- 1221: Text3: [28]UID=RNZU4X26\"BD"T<"5>OL![]`[9]PUN=60634[9]TUID=2524[12]PUID=5036028
- 1222: Text3: [28]UID=RN32GQM0(@D$:X4OQO^2W"O`[9]PUN=60634[9]TUID=2523[12]PUID=5036028
- 1223: Text3: [28]UID=RN(A[?3"REF$"F(9V)/%5*OP[9]PUN=60634[9]TUID=2522[12]PUID=5036028
- 1224: Text3: [28]UID=RN`?UZW:8&A4*I0DCP%WM0-@[9]PUN=60634[9]TUID=2521[12]PUID=5036028
- 1225: Text3: [28]UID=RN;C.QGWT<YD"MN+?*CZ`Y<`[9]PUN=60634[9]TUID=2520[12]PUID=5036028
- 1226: Text3: [28]UID=RNFELH)O);]DRSB!E'AW.%'0[9]PUN=60634[9]TUID=2519[12]PUID=5036028
- 1227: Text3: [28]UID=RNC'6@;N_+8TVS0TG'M^>IG@[9]PUN=60634[9]TUID=2518[12]PUID=5036028
- 1228: Text3: [28]UID=RN-.0\D1F@_T*8<]H1,N]1M@[9]PUN=60634[9]TUID=2517[12]PUID=5036028
- 1229: Text3: [28]UID=RN^^4C_'Q1-4>E6I3>"9"OMP[9]PUN=60634[9]TUID=2515[12]PUID=5036028
- 1230: Text3: [28]UID=RNVV4Y8],*X$6MU_(5%T!-R0[9]PUN=60634[9]TUID=2135[12]PUID=5036028
- 1231: Text3: [28]UID=RN;/<W*T8)/$R[2=9?9#B9QP[9]PUN=60634[9]TUID=2136[12]PUID=5036028
- 1232: Text3: [28]UID=RNVC)*?6TCADV(J\!6:NO)$@[9]PUN=60634[9]TUID=2155[12]PUID=5036028

| ID | WBS | Task | Type | Duration | Start | Finish | Total slack | Constraint | Fin Ajustado | Responsable |
| --- | --- | --- | --- | --- | --- | --- | --- | --- | --- | --- |
| 1233 | 1.22 | **Seguridad** |  | 0d | 2013-12-20 | 2013-12-20 | 288d |  | A definir |  |
| 1234 | 1.22.1 | Hito: Definición de Alcance | milestone | 0d | 2013-12-20 | 2013-12-20 | 288d | start no earlier than 2013-12-20 | A definir | Néstor Vergano |

Notes:
- 1233: Text3: [28]UID=RNC[UN@4?GWDFK;#"3V<DE[`[9]PUN=60634[9]TUID=2960[12]PUID=5036028
- 1234: Text3: [28]UID=RN>(+O0.^%?T>D,X?[M=(/00[9]PUN=60634[9]TUID=2961[12]PUID=5036028
